# Gantt Proyecto de Plaificacion v1.0

How a schedule from MS Project changed from version to version. A marks actual dates.

## Version 1 (saved 2016-07-12, file Gantt Proyecto de Plaificacion v1.0.mpp)

| ID | WBS | Task | Duration | Start | Finish | Predecessors | Total float | Constraint |
| --- | --- | --- | --- | --- | --- | --- | --- | --- |
| 1 |  | Reunion Introduccion Antofagasta | 1h | 2016-07-11 | 2016-07-11 |  | 0d | start no earlier than 2016-07-11 |
| 2 |  | Reunion Avances N°2 | 30min | 2016-07-14 | 2016-07-14 |  | 0.28d | start no earlier than 2016-07-14 |
| 3 |  | Definiciones Alcances y Compromisos | 1d? | 2016-07-07 | 2016-07-07 |  | 19.66d |  |
| 4 | 4 | **Definicion Capacidades de Recursos** | 8.29d? | 2016-07-07 | 2016-07-18 |  | 4.37d |  |
| 5 |  | Recepcion Capacidades Trabajadores CCP | 2.06d | 2016-07-07 | 2016-07-11 |  | 5.96d | finish no earlier than 2016-07-11 |
| 6 |  | Recepcion Capacidades Trabajadores Stgo | 4.19d | 2016-07-07 | 2016-07-12 |  | 4.84d | start no earlier than 2016-07-07 |
| 7 |  | Recepcion Capacidades Trabajadores Afta | 2d | 2016-07-11 | 2016-07-13 | 1 | 4.37d |  |
| 8 |  | Analisis de Capacidades Trabajadores | 2.63d? | 2016-07-13 | 2016-07-15 | 7, 6, 5 | 4.37d | start no earlier than 2016-07-13 |
| 9 |  | Pre definicion de Centros de Trabajo | 1d? | 2016-07-15 | 2016-07-18 | 8 | 4.37d |  |
| 11 | 5 | **Definicion de Maestros de Reparacion** | 12.66d? | 2016-07-07 | 2016-07-22 |  | 0d |  |
| 12 | 5.1 | **Definicion y Ordenamiento de Modelos de Componentes** | 5.66d? | 2016-07-07 | 2016-07-14 |  | 0d |  |
| 13 |  | Estadistica Rotacion de Componentes STGO | 2d? | 2016-07-07 | 2016-07-08 |  | 2.66d | start no earlier than 2016-07-07 |
| 14 |  | Estadistica Rotacion de Componentes CCP | 2d | 2016-07-07 | 2016-07-11 |  | 1.66d | start no earlier than 2016-07-07 |
| 15 |  | Estadistica Rotacion de Componentes ANF | 2d | 2016-07-11 | 2016-07-13 | 1 | 0d |  |
| 16 |  | Definicion de componentes Muestra Por Area | 1d? | 2016-07-13 | 2016-07-14 | 15, 14, 13 | 0d |  |
| 17 | 5.2 | **Diseño Listado de Tareas** | 6d? | 2016-07-14 | 2016-07-21 |  | 0d |  |
| 18 |  | Listado Inicial de Tareas - Reductores Paralelos | 1d? | 2016-07-14 | 2016-07-15 | 16 | 0d |  |
| 19 |  | Listado Inicial de Tareas - Reductores Planetarios | 1d? | 2016-07-15 | 2016-07-18 | 18 | 0d |  |
| 20 |  | Listado Inicial de Tareas - Transmisiones | 1d? | 2016-07-18 | 2016-07-19 | 19 | 0d |  |
| 21 |  | Listado Inicial de Tareas - Cilindros | 1d? | 2016-07-14 | 2016-07-15 | 16 | 2d |  |
| 22 |  | Listado Inicial de Tareas - Bombas | 1d? | 2016-07-14 | 2016-07-15 | 16 | 2d |  |
| 23 |  | Listado Inicial de Tareas - Compresores | 1d? | 2016-07-14 | 2016-07-15 | 16 | 2d |  |
| 24 |  | Listado Inicial de Tareas - Motores | 1d? | 2016-07-14 | 2016-07-15 | 16 | 2d |  |
| 25 |  | Listado Inicial de Tareas - Torno | 1d? | 2016-07-14 | 2016-07-15 | 16 | 2d |  |
| 26 |  | Listado Inicial de Tareas - Soldadura | 1d? | 2016-07-14 | 2016-07-15 | 16 | 2d |  |
| 27 |  | Analisis y consolidacion tipos de Tareas | 1d? | 2016-07-19 | 2016-07-20 | 26, 25, 24, 22, 21, 20, 23 | 0d |  |
| 28 | 5.2.11 | **Definicion Tipos de Tareas** | 2d? | 2016-07-20 | 2016-07-21 |  | 0d |  |
| 29 |  | analisis tipo tareas - AFTA | 1d? | 2016-07-20 | 2016-07-21 | 27 | 0d |  |
| 30 |  | analisis tipo tareas - CCP | 1d? | 2016-07-20 | 2016-07-21 | 27 | 0d |  |
| 31 |  | analisis tipo tareas - STGO | 1d? | 2016-07-20 | 2016-07-21 | 27 | 0d |  |
| 32 |  | Consolidacion listado Tipos de Tareas | 1d? | 2016-07-21 | 2016-07-21 | 31, 30, 29 | 0d |  |
| 33 | 5.3 | **Diseño Listado de Repuestos** | 2d? | 2016-07-14 | 2016-07-18 |  | 4d |  |
| 34 |  | Listado Inicial de Repuestos - Reductores Paralelos | 1d? | 2016-07-14 | 2016-07-15 | 16 | 4d |  |
| 35 |  | Listado Inicial de Repuestos - Reductores Planetarios | 1d? | 2016-07-14 | 2016-07-15 | 16 | 4d |  |
| 36 |  | Listado Inicial de Repuestos - Transmisiones | 1d? | 2016-07-14 | 2016-07-15 | 16 | 4d |  |
| 37 |  | Listado Inicial de Repuestos - Cilindros | 1d? | 2016-07-14 | 2016-07-15 | 16 | 4d |  |
| 38 |  | Listado Inicial de Repuestos - Bombas | 1d? | 2016-07-14 | 2016-07-15 | 16 | 4d |  |
| 39 |  | Listado Inicial de Repuestos - Compresores | 1d? | 2016-07-14 | 2016-07-15 | 16 | 4d |  |
| 40 |  | Listado Inicial de Repuestos - Motores | 1d? | 2016-07-14 | 2016-07-15 | 16 | 4d |  |
| 41 |  | Listado Inicial de Repuestos - Torno | 1d? | 2016-07-14 | 2016-07-15 | 16 | 4d |  |
| 42 |  | Listado Inicial de Repuestos - Soldadura | 1d? | 2016-07-14 | 2016-07-15 | 16 | 4d |  |
| 43 |  | Analisis y consolidacion tipos de Repuestos y Manuales de Parte | 1d? | 2016-07-15 | 2016-07-18 | 34, 35, 36, 37, 38, 39, 40, 41, 42 | 4d |  |
| 44 |  | Diseño Tipos de Reparacion | 1d? | 2016-07-21 | 2016-07-22 | 43, 32 | 0d |  |
| 45 | 6 | **Centros De Trabajo** | 1d? | 2016-07-22 | 2016-07-25 |  | 0d |  |
| 46 |  | Revision estructura Centros de Trabajo | 1d? | 2016-07-22 | 2016-07-25 | 9, 44 | 0d |  |
| 47 |  | Revision y Re diseño Hojas de Ruta | 1d? | 2016-07-25 | 2016-07-26 | 46 | 0d |  |
| 48 |  | Diseño Detalle de Evaluacion | 1d? | 2016-07-26 | 2016-07-27 | 47 | 0d |  |
| 49 |  | Revision y Rediseño Detalle de Reparacion | 1d? | 2016-07-27 | 2016-07-28 | 48 | 0d |  |
| 50 | 10 | **Recepcion de Componentes** | 20.66d? | 2016-07-07 | 2016-08-03 |  | 0d |  |
| 51 |  | Revision Tipos de Componente | 1d? | 2016-07-28 | 2016-07-29 | 49 | 0d |  |
| 52 |  | Diseño de Pre Recepcion | 1d? | 2016-07-29 | 2016-08-01 | 51 | 0d |  |
| 53 |  | Analisis de Agendamientos | 1d? | 2016-08-01 | 2016-08-02 | 52 | 0d |  |
| 54 |  | Revisiones Con Sucursales | 1d? | 2016-08-02 | 2016-08-03 | 53 | 0d |  |
| 55 | 10.5 | **Revision Y Modificacion Recepcion de Componentes** | 1d? | 2016-07-07 | 2016-07-07 |  | 19.66d |  |
| 56 |  | Revision Criterios de Recepcion | 1d? | 2016-07-07 | 2016-07-07 |  | 19.66d |  |
| 57 |  | Diseño de Checklist de Recepcion | 1d? | 2016-07-07 | 2016-07-07 |  | 19.66d |  |
| 58 |  | Analisis de pantalla de Recepcion | 1d? | 2016-07-07 | 2016-07-07 |  | 19.66d |  |
| 59 | 11 | **Revision Proceso de Compras** | 2d? | 2016-07-07 | 2016-07-08 |  | 18.66d |  |
| 60 |  | Levantamiento de Requerimientos Adquisiciones | 1d? | 2016-07-07 | 2016-07-07 |  | 18.66d |  |
| 61 |  | Levantamiento Requerimientos Stgo | 1d? | 2016-07-07 | 2016-07-07 |  | 18.66d |  |
| 62 |  | Levantamiento Requerimientos Afta | 1d? | 2016-07-07 | 2016-07-07 |  | 18.66d |  |
| 63 |  | Levantamiento Requerimientos CCP | 1d? | 2016-07-07 | 2016-07-07 |  | 18.66d |  |
| 64 |  | Definiciones linea critica | 1d? | 2016-07-07 | 2016-07-08 | 60, 61, 62, 63 | 18.66d |  |

## Version 2 (saved 2016-07-28, file Gantt Proyecto de Planificacion v1.1.mpp)

Note of the change: nueva version

Last finish 2016-08-03 → 2016-08-23 (+20d).

Added:

| ID | Task | Duration | Start | Finish | Predecessors | Constraint |
| --- | --- | --- | --- | --- | --- | --- |
| 64 | Analisis sistemas de planificacion otras Empresas | 1d? | 2016-07-29 | 2016-07-29 |  | start no earlier than 2016-07-29 |
| 66 | **requerimiento de especificaciones Tecnicas** | 17.38d | 2016-07-29 | 2016-08-23 |  |  |
| 67 | Capacidades Sistema Comercial | 2w | 2016-08-04 | 2016-08-18 |  | start no earlier than 2016-08-04 |
| 68 | Requerimientos mejoras | 2w | 2016-08-04 | 2016-08-18 |  | start no earlier than 2016-08-04 |
| 69 | **Analisis software externos** | 13d | 2016-07-29 | 2016-08-17 |  |  |
| 70 | Revision proveedores | 4d | 2016-07-29 | 2016-08-03 |  | start no earlier than 2016-07-29 |
| 71 | envío de requerimientos | 1d | 2016-08-03 | 2016-08-04 | 70 |  |
| 72 | recepcion de propuestas | 5d | 2016-08-04 | 2016-08-11 | 71 |  |
| 73 | analisis de propuestas | 3d | 2016-08-11 | 2016-08-17 | 72 |  |
| 74 | Analisis de alternativas | 3d | 2016-08-18 | 2016-08-23 | 67, 68, 73 |  |
| 75 | presentacion de alternativas | 1h | 2016-08-23 | 2016-08-23 | 74 |  |

Changed:

| ID | Task | Start | Finish | Duration | Total float | Other |
| --- | --- | --- | --- | --- | --- | --- |
| 2 | Reunion Avances N°2 | 2016-07-14 → 2016-07-15 (+1d) | 2016-07-14 → 2016-07-15 (+1d) |  | 0.28d → 27.88d | constraint start no earlier than 2016-07-14 → start no earlier than 2016-07-15 |
| 4 | **Definicion Capacidades de Recursos** | 2016-07-07 → 2016-07-11 (+4d) | 2016-07-18 → 2016-07-20 (+2d) | 8.29d? → 8.16d? | 4.37d → 16.37d |  |
| 5 | Recepcion Capacidades Trabajadores CCP | 2016-07-07 → 2016-07-11 (+4d) | 2016-07-11 → 2016-07-14 (+3d) | 2.06d → 4.25d | 5.96d → 16.65d | constraint finish no earlier than 2016-07-11 → start no earlier than 2016-07-11 |
| 6 | Recepcion Capacidades Trabajadores Stgo | 2016-07-07 → 2016-07-11 (+4d) | 2016-07-12 → 2016-07-14 (+2d) |  | 4.84d → 16.65d | constraint start no earlier than 2016-07-07 → finish no earlier than 2016-07-14 |
| 7 | Recepcion Capacidades Trabajadores Afta |  | 2016-07-13 → 2016-07-15 (+2d) | 2d → 4d | 4.37d → 16.37d | constraint none → start no earlier than 2016-07-11 |
| 8 | Analisis de Capacidades Trabajadores | 2016-07-13 → 2016-07-15 (+2d) | 2016-07-15 → 2016-07-19 (+4d) |  | 4.37d → 16.37d |  |
| 9 | Pre definicion de Centros de Trabajo | 2016-07-15 → 2016-07-19 (+4d) | 2016-07-18 → 2016-07-20 (+2d) |  | 4.37d → 16.37d |  |
| 10 | **Definicion de Maestros de Reparacion** |  | 2016-07-22 → 2016-08-11 (+20d) | 12.66d? → 26.66d? |  |  |
| 32 | **Diseño Listado de Repuestos** |  | 2016-07-18 → 2016-08-10 (+23d) | 2d? → 20d | 4d → 0d |  |
| 33 | Listado Inicial de Repuestos - Reductores Paralelos |  | 2016-07-15 → 2016-08-05 (+21d) | 1d? → 17d | 4d → 0d |  |
| 34 | Listado Inicial de Repuestos - Reductores Planetarios |  | 2016-07-15 → 2016-08-05 (+21d) | 1d? → 17d | 4d → 0d |  |
| 35 | Listado Inicial de Repuestos - Transmisiones |  | 2016-07-15 → 2016-08-05 (+21d) | 1d? → 17d | 4d → 0d |  |
| 36 | Listado Inicial de Repuestos - Cilindros |  | 2016-07-15 → 2016-08-05 (+21d) | 1d? → 17d | 4d → 0d |  |
| 37 | Listado Inicial de Repuestos - Bombas |  | 2016-07-15 → 2016-08-05 (+21d) | 1d? → 17d | 4d → 0d |  |
| 38 | Listado Inicial de Repuestos - Compresores |  | 2016-07-15 → 2016-08-05 (+21d) | 1d? → 17d | 4d → 0d |  |
| 39 | Listado Inicial de Repuestos - Motores |  | 2016-07-15 → 2016-08-05 (+21d) | 1d? → 17d | 4d → 0d |  |
| 40 | Listado Inicial de Repuestos - Torno |  | 2016-07-15 → 2016-08-05 (+21d) | 1d? → 17d | 4d → 0d |  |
| 41 | Listado Inicial de Repuestos - Soldadura |  | 2016-07-15 → 2016-08-05 (+21d) | 1d? → 17d | 4d → 0d |  |
| 42 | Analisis y consolidacion tipos de Repuestos y Manuales de Parte | 2016-07-15 → 2016-08-05 (+21d) | 2016-07-18 → 2016-08-10 (+23d) | 1d? → 3d | 4d → 0d |  |
| 43 | Diseño Tipos de Reparacion | 2016-07-21 → 2016-08-10 (+20d) | 2016-07-22 → 2016-08-11 (+20d) |  |  |  |
| 44 | **Centros De Trabajo** | 2016-07-22 → 2016-08-11 (+20d) | 2016-07-25 → 2016-08-12 (+18d) |  |  |  |
| 45 | Revision estructura Centros de Trabajo | 2016-07-22 → 2016-08-11 (+20d) | 2016-07-25 → 2016-08-12 (+18d) |  |  |  |
| 46 | Revision y Re diseño Hojas de Ruta | 2016-07-25 → 2016-08-12 (+18d) | 2016-07-26 → 2016-08-12 (+17d) |  |  |  |
| 47 | Diseño Detalle de Evaluacion | 2016-07-26 → 2016-08-12 (+17d) | 2016-07-27 → 2016-08-16 (+20d) |  |  |  |
| 48 | Revision y Rediseño Detalle de Reparacion | 2016-07-27 → 2016-08-16 (+20d) | 2016-07-28 → 2016-08-17 (+20d) |  |  |  |
| 49 | **Recepcion de Componentes** |  | 2016-08-03 → 2016-08-23 (+20d) | 20.66d? → 34.66d? |  |  |
| 50 | Revision Tipos de Componente | 2016-07-28 → 2016-08-17 (+20d) | 2016-07-29 → 2016-08-18 (+20d) |  |  |  |
| 51 | Diseño de Pre Recepcion | 2016-07-29 → 2016-08-18 (+20d) | 2016-08-01 → 2016-08-19 (+18d) |  |  |  |
| 52 | Analisis de Agendamientos | 2016-08-01 → 2016-08-19 (+18d) | 2016-08-02 → 2016-08-22 (+20d) |  |  |  |
| 53 | Revisiones Con Sucursales | 2016-08-02 → 2016-08-22 (+20d) | 2016-08-03 → 2016-08-23 (+20d) |  |  |  |

## Version 3 (saved 2016-08-04, file Gantt Proyecto de Planificacion v1.1.mpp)

Last finish 2016-08-23 → 2016-08-26 (+3d).

Changed:

| ID | Task | Start | Finish | Duration | Total float | Other |
| --- | --- | --- | --- | --- | --- | --- |
| 65 | **requerimiento de especificaciones Tecnicas** | 2016-07-29 → 2016-08-04 (+6d) | 2016-08-23 → 2016-08-26 (+3d) | 17.38d → 16.12d | 0.28d → 0d |  |
| 68 | **Analisis software externos** | 2016-07-29 → 2016-08-04 (+6d) | 2016-08-17 → 2016-08-23 (+6d) |  | 1.53d → 0d |  |
| 69 | Revision proveedores | 2016-07-29 → 2016-08-04 (+6d) | 2016-08-03 → 2016-08-09 (+6d) |  | 1.53d → 0d | constraint start no earlier than 2016-07-29 → start no earlier than 2016-08-04 |
| 70 | envío de requerimientos | 2016-08-03 → 2016-08-09 (+6d) | 2016-08-04 → 2016-08-10 (+6d) |  | 1.53d → 0d |  |
| 71 | recepcion de propuestas | 2016-08-04 → 2016-08-10 (+6d) | 2016-08-11 → 2016-08-18 (+7d) |  | 1.53d → 0d |  |
| 72 | analisis de propuestas | 2016-08-11 → 2016-08-18 (+7d) | 2016-08-17 → 2016-08-23 (+6d) |  | 1.53d → 0d |  |
| 73 | Analisis de alternativas | 2016-08-18 → 2016-08-23 (+5d) | 2016-08-23 → 2016-08-26 (+3d) |  | 0.28d → 0d |  |
| 74 | presentacion de alternativas | 2016-08-23 → 2016-08-26 (+3d) | 2016-08-23 → 2016-08-26 (+3d) |  | 0.28d → 0d |  |

## Version 4 (saved 2016-08-04, file Gantt Proyecto de Planificacion v1.2.mpp)

Note of the change: gantt Triste

Last finish 2016-08-26 → 2016-12-02 (+98d). Complete tasks 0 → 7.

Added:

| ID | Task | Duration | Start | Finish | Predecessors | Constraint |
| --- | --- | --- | --- | --- | --- | --- |
| 63 | **implantacion Hojas de Ruta** | 10d | 2016-07-07 | 2016-07-20 |  |  |
| 64 | **implementacion Areas** | 10d | 2016-07-07 | 2016-07-20 |  |  |
| 65 | Transmisiones | 2w | 2016-07-07 | 2016-07-20 |  |  |
| 66 | Reductores | 2w | 2016-07-07 | 2016-07-20 |  |  |
| 67 | Compresores | 2w | 2016-07-07 | 2016-07-20 |  |  |
| 68 | Bombas | 2w | 2016-07-07 | 2016-07-20 |  |  |
| 69 | Equipos y Agmin | 2w | 2016-07-07 | 2016-07-20 |  |  |
| 70 | Cilindros | 2w | 2016-07-07 | 2016-07-20 |  |  |
| 71 | Fabricacion y Recuperacion | 2w | 2016-07-07 | 2016-07-20 |  |  |
| 72 | motores | 2w | 2016-07-07 | 2016-07-20 |  |  |
| 83 | **Informe de Requerimiento y Propuesta de Solucion** | 87d | 2016-08-04 | 2016-12-02 |  |  |
| 84 | Recepcion de componentes | 3d | 2016-08-04 | 2016-08-08 |  | start no earlier than 2016-08-04 |
| 85 | Evaluacion de Trabajo | 1mo | 2016-08-08 | 2016-09-05 | 84 |  |
| 86 | Presupuestos | 4d | 2016-09-05 | 2016-09-09 | 85 |  |
| 87 | Aprobacion de Presupuesto | 5d | 2016-09-09 | 2016-09-16 | 86 |  |
| 88 | Proceso Compras | 2w | 2016-09-16 | 2016-09-30 | 87 |  |
| 89 | Reparacion | 1mo | 2016-09-30 | 2016-10-28 | 88 |  |
| 90 | liberacion | 3d | 2016-10-28 | 2016-11-04 | 89 |  |
| 91 | despacho | 2d | 2016-11-04 | 2016-11-08 | 90 |  |
| 92 | Simulaciones | 1mo | 2016-11-08 | 2016-12-02 | 91 |  |

Removed: 13 Estadistica Rotacion de Componentes CCP; 14 Estadistica Rotacion de Componentes ANF

Changed:

| ID | Task | Start | Finish | Duration | Complete | Total float | Predecessors | Other |
| --- | --- | --- | --- | --- | --- | --- | --- | --- |
| 1 | Reunion Introduccion Antofagasta | 2016-07-11 A | 2016-07-11 A |  | 0% → 100% | 2.72d → none |  |  |
| 2 | Reunion Avances N°2 | 2016-07-15 A | 2016-07-15 A |  | 0% → 100% | 27.88d → none |  |  |
| 3 | Definiciones Alcances y Compromisos | 2016-07-07 A |  |  | 0% → 90% | 33.66d → 107.25d |  |  |
| 4 | **Definicion Capacidades de Recursos** | 2016-07-11 A |  |  | 0% → 86% | 19.09d → 14.11d |  |  |
| 5 | Recepcion Capacidades Trabajadores CCP | 2016-07-11 A | 2016-07-14 A |  | 0% → 100% | 16.65d → none |  |  |
| 6 | Recepcion Capacidades Trabajadores Stgo | 2016-07-11 A | 2016-07-14 A |  | 0% → 100% | 16.65d → none |  |  |
| 7 | Recepcion Capacidades Trabajadores Afta | 2016-07-11 A |  |  | 0% → 90% | 16.37d → 1.84d |  |  |
| 8 | Analisis de Capacidades Trabajadores | 2016-07-15 A |  |  | 0% → 70% | 16.37d → 14.11d |  |  |
| 10 | **Definicion de Maestros de Reparacion** | 2016-07-07 A | 2016-08-11 → 2016-08-08 (-3d) | 26.66d? → 24d? | 0% → 3% | 2.72d → 84.25d |  |  |
| 11 | **Definicion y Ordenamiento de Modelos de Componente** | 2016-07-07 A | 2016-07-14 → 2016-07-11 (-3d) | 5.66d? → 3d? | 0% → 27% | 2.72d → 0.4d |  | was named Definicion y Ordenamiento de Modelos de Componentes |
| 12 | Estadistica Rotacion de Componentes | 2016-07-07 A |  |  | 0% → 40% | 2.66d → 0.4d |  | was named Estadistica Rotacion de Componentes STGO |
| 13 | Definicion de componentes Muestra Por Area | 2016-07-13 → 2016-07-08 (-5d) | 2016-07-14 → 2016-07-11 (-3d) |  |  | 2.72d → 0.4d | Estadistica Rotacion de Componentes ANF, Estadistica Rotacion de Componentes CCP, 12 → 12 |  |
| 14 | **Diseño Listado de Tareas** | 2016-07-14 → 2016-07-11 A (-3d) | 2016-07-21 → 2016-07-19 (-2d) |  | 0% → 35% | 16.72d → 99.25d |  |  |
| 15 | Listado Inicial de Tareas - Reductores Paralelos | 2016-07-14 → 2016-07-11 A (-3d) | 2016-07-15 → 2016-07-12 (-3d) |  | 0% → 40% | 14d → 104.25d |  |  |
| 16 | Listado Inicial de Tareas - Reductores Planetarios | 2016-07-15 → 2016-07-12 A (-3d) | 2016-07-18 → 2016-07-13 A (-5d) |  | 0% → 100% | 14d → none |  |  |
| 17 | Listado Inicial de Tareas - Transmisiones | 2016-07-18 → 2016-07-13 A (-5d) | 2016-07-19 → 2016-07-14 A (-5d) |  | 0% → 100% | 14d → none |  |  |
| 18 | Listado Inicial de Tareas - Cilindros | 2016-07-14 → 2016-07-11 A (-3d) | 2016-07-15 → 2016-07-12 (-3d) |  | 0% → 60% | 16d → 2.5d |  |  |
| 19 | Listado Inicial de Tareas - Bombas | 2016-07-14 → 2016-07-11 A (-3d) | 2016-07-15 → 2016-07-12 (-3d) |  | 0% → 40% | 16d → 2.5d |  |  |
| 20 | Listado Inicial de Tareas - Compresores | 2016-07-14 → 2016-07-11 A (-3d) | 2016-07-15 → 2016-07-12 A (-3d) |  | 0% → 100% | 16d → none |  |  |
| 21 | Listado Inicial de Tareas - Motores | 2016-07-14 → 2016-07-11 (-3d) | 2016-07-15 → 2016-07-12 (-3d) |  |  | 16d → 2.5d |  |  |
| 22 | Listado Inicial de Tareas - Torno | 2016-07-14 → 2016-07-11 (-3d) | 2016-07-15 → 2016-07-12 (-3d) |  |  | 16d → 2.5d |  |  |
| 23 | Listado Inicial de Tareas - Soldadura | 2016-07-14 → 2016-07-11 (-3d) | 2016-07-15 → 2016-07-12 (-3d) |  |  | 16d → 2.5d |  |  |
| 24 | Analisis y consolidacion tipos de Tareas | 2016-07-19 → 2016-07-14 (-5d) | 2016-07-20 → 2016-07-15 (-5d) |  |  | 14d → 0.5d |  |  |
| 25 | **Definicion Tipos de Tareas** | 2016-07-20 → 2016-07-15 A (-5d) | 2016-07-21 → 2016-07-19 (-2d) |  | 0% → 13% | 16.72d → 14.4d |  |  |
| 26 | analisis tipo tareas - AFTA | 2016-07-20 → 2016-07-15 A (-5d) | 2016-07-21 → 2016-07-18 (-3d) |  | 0% → 50% | 14d → 14.4d |  |  |
| 27 | analisis tipo tareas - CCP | 2016-07-20 → 2016-07-15 (-5d) | 2016-07-21 → 2016-07-18 (-3d) |  |  | 14d → 14.4d |  |  |
| 28 | analisis tipo tareas - STGO | 2016-07-20 → 2016-07-15 (-5d) | 2016-07-21 → 2016-07-18 (-3d) |  |  | 14d → 14.4d |  |  |
| 29 | Consolidacion listado Tipos de Tareas | 2016-07-21 → 2016-07-18 (-3d) | 2016-07-21 → 2016-07-19 (-2d) |  |  | 14d → 14.4d |  |  |
| 30 | **Diseño Listado de Repuestos** | 2016-07-14 → 2016-07-11 (-3d) | 2016-08-10 → 2016-08-05 (-5d) |  |  | 2.72d → 0.4d |  |  |
| 31 | Listado Inicial de Repuestos - Reductores Paralelos | 2016-07-14 → 2016-07-11 (-3d) | 2016-08-05 → 2016-08-02 (-3d) |  |  | 2.72d → 0.4d |  |  |
| 32 | Listado Inicial de Repuestos - Reductores Planetarios | 2016-07-14 → 2016-07-11 (-3d) | 2016-08-05 → 2016-08-02 (-3d) |  |  | 2.72d → 0.4d |  |  |
| 33 | Listado Inicial de Repuestos - Transmisiones | 2016-07-14 → 2016-07-11 (-3d) | 2016-08-05 → 2016-08-02 (-3d) |  |  | 2.72d → 0.4d |  |  |
| 34 | Listado Inicial de Repuestos - Cilindros | 2016-07-14 → 2016-07-11 (-3d) | 2016-08-05 → 2016-08-02 (-3d) |  |  | 2.72d → 0.4d |  |  |
| 35 | Listado Inicial de Repuestos - Bombas | 2016-07-14 → 2016-07-11 (-3d) | 2016-08-05 → 2016-08-02 (-3d) |  |  | 2.72d → 0.4d |  |  |
| 36 | Listado Inicial de Repuestos - Compresores | 2016-07-14 → 2016-07-11 (-3d) | 2016-08-05 → 2016-08-02 (-3d) |  |  | 2.72d → 0.4d |  |  |
| 37 | Listado Inicial de Repuestos - Motores | 2016-07-14 → 2016-07-11 (-3d) | 2016-08-05 → 2016-08-02 (-3d) |  |  | 2.72d → 0.4d |  |  |
| 38 | Listado Inicial de Repuestos - Torno | 2016-07-14 → 2016-07-11 (-3d) | 2016-08-05 → 2016-08-02 (-3d) |  |  | 2.72d → 0.4d |  |  |
| 39 | Listado Inicial de Repuestos - Soldadura | 2016-07-14 → 2016-07-11 (-3d) | 2016-08-05 → 2016-08-02 (-3d) |  |  | 2.72d → 0.4d |  |  |
| 40 | Analisis y consolidacion tipos de Repuestos y Manuales de Parte | 2016-08-05 → 2016-08-02 (-3d) | 2016-08-10 → 2016-08-05 (-5d) |  |  | 2.72d → 0.4d |  |  |
| 41 | Diseño Tipos de Reparacion | 2016-08-10 → 2016-08-05 (-5d) | 2016-08-11 → 2016-08-08 (-3d) |  |  | 2.72d → 0.4d |  |  |
| 42 | **Centros De Trabajo** | 2016-08-11 → 2016-08-08 A (-3d) | 2016-08-12 → 2016-08-09 (-3d) |  | 0% → 40% | 2.72d → 0.1d |  |  |
| 43 | Revision estructura Centros de Trabajo | 2016-08-11 → 2016-08-08 A (-3d) | 2016-08-12 → 2016-08-09 (-3d) |  | 0% → 40% | 2.72d → 0.1d |  |  |
| 44 | Revision y Re diseño Hojas de Ruta | 2016-08-12 → 2016-08-09 A (-3d) | 2016-08-12 → 2016-08-10 (-2d) |  | 0% → 10% | 2.72d → 76.25d |  |  |
| 45 | Diseño Detalle de Evaluacion | 2016-08-12 → 2016-08-10 (-2d) | 2016-08-16 → 2016-08-11 (-5d) |  |  | 2.72d → 76.25d |  |  |
| 46 | Revision y Rediseño Detalle de Reparacion | 2016-08-16 → 2016-08-11 (-5d) | 2016-08-17 → 2016-08-12 (-5d) |  |  | 2.72d → 76.25d |  |  |
| 47 | **Recepcion de Componentes** |  | 2016-08-23 → 2016-08-19 (-4d) | 34.66d? → 32d? |  | 2.72d → 76.25d |  |  |
| 48 | Revision Tipos de Componente | 2016-08-17 → 2016-08-12 (-5d) | 2016-08-18 → 2016-08-16 (-2d) |  |  | 2.72d → 76.25d |  |  |
| 49 | Diseño de Pre Recepcion | 2016-08-18 → 2016-08-16 (-2d) | 2016-08-19 → 2016-08-17 (-2d) |  |  | 2.72d → 76.25d |  |  |
| 50 | Analisis de Agendamientos | 2016-08-19 → 2016-08-17 (-2d) | 2016-08-22 → 2016-08-18 (-4d) |  |  | 2.72d → 76.25d |  |  |
| 51 | Revisiones Con Sucursales | 2016-08-22 → 2016-08-18 (-4d) | 2016-08-23 → 2016-08-19 (-4d) |  |  | 2.72d → 76.25d |  |  |
| 73 | **requerimiento de especificaciones Tecnicas** | 2016-08-04 → 2016-07-29 A (-6d) | 2016-08-26 → 2016-08-23 (-3d) | 16.12d → 17.38d | 0% → 3% | 0d → 73.88d |  |  |
| 75 | Requerimientos mejoras | 2016-08-04 A |  |  | 0% → 10% | 0.28d → 73.88d |  |  |
| 76 | **Analisis software externos** | 2016-08-04 → 2016-07-29 (-6d) | 2016-08-23 → 2016-08-17 (-6d) |  |  | 0d → 75.12d |  |  |
| 77 | Revision proveedores | 2016-08-04 → 2016-07-29 (-6d) | 2016-08-09 → 2016-08-03 (-6d) |  |  | 0d → 75.12d |  | constraint start no earlier than 2016-08-04 → start no earlier than 2016-07-29 |
| 78 | envío de requerimientos | 2016-08-09 → 2016-08-03 (-6d) | 2016-08-10 → 2016-08-04 (-6d) |  |  | 0d → 75.12d |  |  |
| 79 | recepcion de propuestas | 2016-08-10 → 2016-08-04 (-6d) | 2016-08-18 → 2016-08-11 (-7d) |  |  | 0d → 75.12d |  |  |
| 80 | analisis de propuestas | 2016-08-18 → 2016-08-11 (-7d) | 2016-08-23 → 2016-08-17 (-6d) |  |  | 0d → 75.12d |  |  |
| 81 | Analisis de alternativas | 2016-08-23 → 2016-08-18 (-5d) | 2016-08-26 → 2016-08-23 (-3d) |  |  | 0d → 73.88d |  |  |
| 82 | presentacion de alternativas | 2016-08-26 → 2016-08-23 (-3d) | 2016-08-26 → 2016-08-23 (-3d) |  |  | 0d → 73.88d |  |  |

## Version 5 (saved 2016-08-04, file Gantt Proyecto de Planificacion v1.2.mpp)

Last finish stays 2016-12-02.

Changed:

| ID | Task | Start | Complete |
| --- | --- | --- | --- |
| 63 | **implantacion Hojas de Ruta** | 2016-07-07 A | 0% → 3% |
| 64 | **implementacion Areas** | 2016-07-07 A | 0% → 3% |
| 65 | Transmisiones | 2016-07-07 A | 0% → 20% |

## Version 6 (saved 2016-08-10, file Gantt Proyecto de Planificacion v1.2.mpp)

Last finish stays 2016-12-02. Complete tasks 7 → 4.

Added:

| ID | Task | Duration | Start | Finish | Predecessors | Constraint |
| --- | --- | --- | --- | --- | --- | --- |
| 73 | Analisis de Datos iniciales de H:R | 3d | 2016-08-12 | 2016-08-18 | 65, 66, 67, 68, 69, 70, 71, 72 |  |
| 74 | Seguimientos Hojas de Ruta | 2w | 2016-08-18 | 2016-08-31 | 73 |  |
| 75 | Implementacion y Seguimiento Cargos de hh, según H.R | 1mo | 2016-08-31 | 2016-09-28 | 74 |  |
| 76 | Analisis Foda de tipos de Software | 4d | 2016-08-09 | 2016-08-12 |  | start no earlier than 2016-08-09 |

Changed:

| ID | Task | Start | Finish | Duration | Complete | Total float | Other |
| --- | --- | --- | --- | --- | --- | --- | --- |
| 4 | **Definicion Capacidades de Recursos** |  | 2016-07-20 → 2016-07-21 (+1d) | 8.16d? → 9.16d? | 86% → 81% | 14.11d → 16.71d |  |
| 9 | Pre definicion de Centros de Trabajo |  | 2016-07-20 → 2016-07-21 (+1d) | 1d? → 2d |  | 14.11d → 16.71d |  |
| 10 | **Definicion de Maestros de Reparacion** |  | 2016-08-08 → 2016-09-20 (+43d) | 24d? → 54.56d? | 3% → 8% | 84.25d → -13d |  |
| 11 | **Definicion y Ordenamiento de Modelos de Componente** |  | 2016-07-11 → 2016-08-16 (+36d) | 3d? → 29.56d? | 27% → 59% | 0.4d → 0d |  |
| 12 | Estadistica Rotacion de Componentes |  | 2016-07-08 → 2016-08-12 (+35d) | 2d? → 28.56d? | 40% → 60% | 0.4d → 0.2d | constraint start no earlier than 2016-07-07 → finish no earlier than 2016-08-12 |
| 13 | Definicion de componentes Muestra Por Area | 2016-07-08 → 2016-08-12 A (+35d) | 2016-07-11 → 2016-08-16 (+36d) |  | 0% → 20% | 0.4d → -26.56d |  |
| 14 | **Diseño Listado de Tareas** | 2016-07-11 A → 2016-08-16 A (+36d) | 2016-07-19 → 2016-09-02 (+45d) | 6d? → 14d | 35% → 2% | 99.25d → -2d |  |
| 15 | Listado Inicial de Tareas - Reductores Paralelos | 2016-07-11 A → 2016-08-16 (+36d) | 2016-07-12 → 2016-08-18 (+37d) | 1d? → 2d | 40% → 0% | 104.25d → -20.56d | constraint none → start no earlier than 2016-07-22 |
| 16 | Listado Inicial de Tareas - Reductores Planetarios | 2016-07-12 A → 2016-08-18 (+37d) | 2016-07-13 A → 2016-08-23 (+41d) | 1d? → 3d | 100% → 0% | none → -20.56d |  |
| 17 | Listado Inicial de Tareas - Transmisiones | 2016-07-13 A → 2016-08-23 (+41d) | 2016-07-14 A → 2016-08-24 (+41d) | 1d? → 1d | 100% → 0% | none → -20.56d |  |
| 18 | Listado Inicial de Tareas - Cilindros | 2016-07-11 A → 2016-08-16 (+36d) | 2016-07-12 → 2016-08-19 (+38d) | 1d? → 3d | 60% → 0% | 2.5d → -17.56d |  |
| 19 | Listado Inicial de Tareas - Bombas | 2016-07-11 A → 2016-08-16 (+36d) | 2016-07-12 → 2016-08-19 (+38d) | 1d? → 3d | 40% → 0% | 2.5d → -17.56d |  |
| 20 | Listado Inicial de Tareas - Compresores | 2016-07-11 A → 2016-08-16 (+36d) | 2016-07-12 A → 2016-08-17 (+36d) | 1d? → 1d | 100% → 0% | none → -15.56d |  |
| 21 | Listado Inicial de Tareas - Motores | 2016-07-11 → 2016-08-16 (+36d) | 2016-07-12 → 2016-08-17 (+36d) | 1d? → 1d |  | 2.5d → -15.56d |  |
| 22 | Listado Inicial de Tareas - Torno | 2016-07-11 → 2016-08-16 (+36d) | 2016-07-12 → 2016-08-19 (+38d) | 1d? → 3d |  | 2.5d → -17.56d |  |
| 23 | Listado Inicial de Tareas - Soldadura | 2016-07-11 → 2016-08-16 (+36d) | 2016-07-12 → 2016-08-19 (+38d) | 1d? → 3d |  | 2.5d → -17.56d |  |
| 24 | Analisis y consolidacion tipos de Tareas | 2016-07-14 → 2016-08-24 (+41d) | 2016-07-15 → 2016-08-31 (+47d) | 1d? → 5d |  | 0.5d → -20.56d |  |
| 25 | **Definicion Tipos de Tareas** | 2016-07-15 A → 2016-08-31 A (+47d) | 2016-07-19 → 2016-09-02 (+45d) | 2d? → 3d | 13% → 10% | 14.4d → -2d |  |
| 26 | analisis tipo tareas - AFTA | 2016-07-15 A → 2016-08-31 A (+47d) | 2016-07-18 → 2016-09-01 (+45d) | 1d? → 1d |  | 14.4d → 0d |  |
| 27 | analisis tipo tareas - CCP | 2016-07-15 → 2016-08-31 (+47d) | 2016-07-18 → 2016-09-01 (+45d) | 1d? → 1d |  | 14.4d → -20.56d |  |
| 28 | analisis tipo tareas - STGO | 2016-07-15 → 2016-08-31 (+47d) | 2016-07-18 → 2016-09-01 (+45d) | 1d? → 1d |  | 14.4d → -20.56d |  |
| 29 | Consolidacion listado Tipos de Tareas | 2016-07-18 → 2016-09-01 (+45d) | 2016-07-19 → 2016-09-02 (+45d) | 1d? → 2d |  | 14.4d → -20.56d |  |
| 30 | **Diseño Listado de Repuestos** | 2016-07-11 → 2016-08-16 (+36d) | 2016-08-05 → 2016-09-12 (+38d) |  |  | 0.4d → -26.56d |  |
| 31 | Listado Inicial de Repuestos - Reductores Paralelos | 2016-07-11 → 2016-08-16 (+36d) | 2016-08-02 → 2016-09-07 (+36d) |  |  | 0.4d → -26.56d |  |
| 32 | Listado Inicial de Repuestos - Reductores Planetarios | 2016-07-11 → 2016-08-16 (+36d) | 2016-08-02 → 2016-09-07 (+36d) |  |  | 0.4d → -26.56d |  |
| 33 | Listado Inicial de Repuestos - Transmisiones | 2016-07-11 → 2016-08-16 (+36d) | 2016-08-02 → 2016-09-07 (+36d) |  |  | 0.4d → -26.56d |  |
| 34 | Listado Inicial de Repuestos - Cilindros | 2016-07-11 → 2016-08-16 (+36d) | 2016-08-02 → 2016-09-07 (+36d) |  |  | 0.4d → -26.56d |  |
| 35 | Listado Inicial de Repuestos - Bombas | 2016-07-11 → 2016-08-16 (+36d) | 2016-08-02 → 2016-09-07 (+36d) |  |  | 0.4d → -26.56d |  |
| 36 | Listado Inicial de Repuestos - Compresores | 2016-07-11 → 2016-08-16 (+36d) | 2016-08-02 → 2016-09-07 (+36d) |  |  | 0.4d → -26.56d |  |
| 37 | Listado Inicial de Repuestos - Motores | 2016-07-11 → 2016-08-16 (+36d) | 2016-08-02 → 2016-09-07 (+36d) |  |  | 0.4d → -26.56d |  |
| 38 | Listado Inicial de Repuestos - Torno | 2016-07-11 → 2016-08-16 (+36d) | 2016-08-02 → 2016-09-07 (+36d) |  |  | 0.4d → -26.56d |  |
| 39 | Listado Inicial de Repuestos - Soldadura | 2016-07-11 → 2016-08-16 (+36d) | 2016-08-02 → 2016-09-07 (+36d) |  |  | 0.4d → -26.56d |  |
| 40 | Analisis y consolidacion tipos de Repuestos y Manuales de Parte | 2016-08-02 → 2016-09-07 (+36d) | 2016-08-05 → 2016-09-12 (+38d) |  |  | 0.4d → -26.56d |  |
| 41 | Diseño Tipos de Reparacion | 2016-08-05 → 2016-09-12 (+38d) | 2016-08-08 → 2016-09-20 (+43d) | 1d? → 5d |  | 0.4d → -26.56d |  |
| 42 | **Centros De Trabajo** |  | 2016-08-09 → 2016-09-21 (+43d) | 1d? → 32.16d | 40% → 20% | 0.1d → -26.56d |  |
| 43 | Revision estructura Centros de Trabajo |  | 2016-08-09 → 2016-09-21 (+43d) | 1d? → 2d | 40% → 20% | 0.1d → -26.56d |  |
| 44 | Revision y Re diseño Hojas de Ruta |  | 2016-08-10 → 2016-09-22 (+43d) |  |  | 76.25d → 45.19d |  |
| 45 | Diseño Detalle de Evaluacion | 2016-08-10 → 2016-09-22 (+43d) | 2016-08-11 → 2016-09-23 (+43d) |  |  | 76.25d → 45.19d |  |
| 46 | Revision y Rediseño Detalle de Reparacion | 2016-08-11 → 2016-09-23 (+43d) | 2016-08-12 → 2016-09-26 (+45d) |  |  | 76.25d → 45.19d |  |
| 47 | **Recepcion de Componentes** |  | 2016-08-19 → 2016-09-30 (+42d) | 32d? → 63.06d? |  | 76.25d → 45.19d |  |
| 48 | Revision Tipos de Componente | 2016-08-12 → 2016-09-26 (+45d) | 2016-08-16 → 2016-09-27 (+42d) |  |  | 76.25d → 45.19d |  |
| 49 | Diseño de Pre Recepcion | 2016-08-16 → 2016-09-27 (+42d) | 2016-08-17 → 2016-09-28 (+42d) |  |  | 76.25d → 45.19d |  |
| 50 | Analisis de Agendamientos | 2016-08-17 → 2016-09-28 (+42d) | 2016-08-18 → 2016-09-29 (+42d) |  |  | 76.25d → 45.19d |  |
| 51 | Revisiones Con Sucursales | 2016-08-18 → 2016-09-29 (+42d) | 2016-08-19 → 2016-09-30 (+42d) |  |  | 76.25d → 45.19d |  |
| 63 | **implantacion Hojas de Ruta** | 2016-07-07 A → 2016-08-01 (+25d) | 2016-07-20 → 2016-09-28 (+70d) | 10d → 43d | 3% → 0% | 98.25d → 47.19d |  |
| 64 | **implementacion Areas** | 2016-07-07 A → 2016-08-01 (+25d) | 2016-07-20 → 2016-08-12 (+23d) |  | 3% → 0% | 98.25d → 47.19d |  |
| 65 | Transmisiones | 2016-07-07 A → 2016-08-01 (+25d) | 2016-07-20 → 2016-08-12 (+23d) |  | 20% → 0% | 98.25d → 47.19d | constraint none → start no earlier than 2016-08-01 |
| 66 | Reductores | 2016-07-07 → 2016-08-01 (+25d) | 2016-07-20 → 2016-08-12 (+23d) |  |  | 98.25d → 47.19d | constraint none → start no earlier than 2016-08-01 |
| 67 | Compresores | 2016-07-07 → 2016-08-01 (+25d) | 2016-07-20 → 2016-08-12 (+23d) |  |  | 98.25d → 47.19d | constraint none → start no earlier than 2016-08-01 |
| 68 | Bombas | 2016-07-07 → 2016-08-01 (+25d) | 2016-07-20 → 2016-08-12 (+23d) |  |  | 98.25d → 47.19d | constraint none → start no earlier than 2016-08-01 |
| 69 | Equipos y Agmin | 2016-07-07 → 2016-08-01 (+25d) | 2016-07-20 → 2016-08-12 (+23d) |  |  | 98.25d → 47.19d | constraint none → start no earlier than 2016-08-01 |
| 70 | Cilindros | 2016-07-07 → 2016-08-01 (+25d) | 2016-07-20 → 2016-08-12 (+23d) |  |  | 98.25d → 47.19d | constraint none → start no earlier than 2016-08-01 |
| 71 | Fabricacion y Recuperacion | 2016-07-07 → 2016-08-01 (+25d) | 2016-07-20 → 2016-08-12 (+23d) |  |  | 98.25d → 47.19d | constraint none → start no earlier than 2016-08-01 |
| 72 | motores | 2016-07-07 → 2016-08-01 (+25d) | 2016-07-20 → 2016-08-12 (+23d) |  |  | 98.25d → 47.19d | constraint none → start no earlier than 2016-08-01 |
