# Gantt Proyecto de Plaificacion v1.0

How a schedule from MS Project changed from version to version. A marks actual dates.

## Version 1 (saved 2016-08-10)

| ID | WBS | Task | Duration | Start | Finish | Predecessors | Complete | Total float | Constraint |
| --- | --- | --- | --- | --- | --- | --- | --- | --- | --- |
| 1 |  | Reunion Introduccion Antofagasta | 1h | 2016-07-11 A | 2016-07-11 A |  | 100% |  | start no earlier than 2016-07-11 |
| 2 |  | Reunion Avances N°2 | 30min | 2016-07-15 A | 2016-07-15 A |  | 100% |  | start no earlier than 2016-07-15 |
| 3 |  | Definiciones Alcances y Compromisos | 1d? | 2016-07-07 A | 2016-07-07 |  | 90% | 86d |  |
| 4 | 4 | **Definicion Capacidades de Recursos** | 8.16d? | 2016-07-11 A | 2016-07-20 |  | 86% | 14.11d |  |
| 5 |  | Recepcion Capacidades Trabajadores CCP | 4.25d | 2016-07-11 A | 2016-07-14 A |  | 100% |  | start no earlier than 2016-07-11 |
| 6 |  | Recepcion Capacidades Trabajadores Stgo | 4.19d | 2016-07-11 A | 2016-07-14 A |  | 100% |  | finish no earlier than 2016-07-14 |
| 7 |  | Recepcion Capacidades Trabajadores Afta | 4d | 2016-07-11 A | 2016-07-15 | 1 | 90% | 1.84d | start no earlier than 2016-07-11 |
| 8 |  | Analisis de Capacidades Trabajadores | 2.63d? | 2016-07-15 A | 2016-07-19 | 7, 6, 5 | 70% | 14.11d | start no earlier than 2016-07-13 |
| 9 |  | Pre definicion de Centros de Trabajo | 1d? | 2016-07-19 | 2016-07-20 | 8 |  | 14.11d |  |
| 10 | 5 | **Definicion de Maestros de Reparacion** | 24d? | 2016-07-07 A | 2016-08-08 |  | 3% | 63d |  |
| 11 | 5.1 | **Definicion y Ordenamiento de Modelos de Componente** | 3d? | 2016-07-07 A | 2016-07-11 |  | 27% | 0.4d |  |
| 12 |  | Estadistica Rotacion de Componentes | 2d? | 2016-07-07 A | 2016-07-08 |  | 40% | 0.4d | start no earlier than 2016-07-07 |
| 13 |  | Definicion de componentes Muestra Por Area | 1d? | 2016-07-08 | 2016-07-11 | 12 |  | 0.4d |  |
| 14 | 5.2 | **Diseño Listado de Tareas** | 6d? | 2016-07-11 A | 2016-07-19 |  | 35% | 78d |  |
| 15 |  | Listado Inicial de Tareas - Reductores Paralelos | 1d? | 2016-07-11 A | 2016-07-12 | 13 | 40% | 83d |  |
| 16 |  | Listado Inicial de Tareas - Reductores Planetarios | 1d? | 2016-07-12 A | 2016-07-13 A | 15 | 100% |  |  |
| 17 |  | Listado Inicial de Tareas - Transmisiones | 1d? | 2016-07-13 A | 2016-07-14 A | 16 | 100% |  |  |
| 18 |  | Listado Inicial de Tareas - Cilindros | 1d? | 2016-07-11 A | 2016-07-12 | 13 | 60% | 2.5d |  |
| 19 |  | Listado Inicial de Tareas - Bombas | 1d? | 2016-07-11 A | 2016-07-12 | 13 | 40% | 2.5d |  |
| 20 |  | Listado Inicial de Tareas - Compresores | 1d? | 2016-07-11 A | 2016-07-12 A | 13 | 100% |  |  |
| 21 |  | Listado Inicial de Tareas - Motores | 1d? | 2016-07-11 | 2016-07-12 | 13 |  | 2.5d |  |
| 22 |  | Listado Inicial de Tareas - Torno | 1d? | 2016-07-11 | 2016-07-12 | 13 |  | 2.5d |  |
| 23 |  | Listado Inicial de Tareas - Soldadura | 1d? | 2016-07-11 | 2016-07-12 | 13 |  | 2.5d |  |
| 24 |  | Analisis y consolidacion tipos de Tareas | 1d? | 2016-07-14 | 2016-07-15 | 23, 22, 21, 19, 18, 17, 20 |  | 0.5d |  |
| 25 | 5.2.11 | **Definicion Tipos de Tareas** | 2d? | 2016-07-15 A | 2016-07-19 |  | 13% | 14.4d |  |
| 26 |  | analisis tipo tareas - AFTA | 1d? | 2016-07-15 A | 2016-07-18 | 24 | 50% | 14.4d |  |
| 27 |  | analisis tipo tareas - CCP | 1d? | 2016-07-15 | 2016-07-18 | 24 |  | 14.4d |  |
| 28 |  | analisis tipo tareas - STGO | 1d? | 2016-07-15 | 2016-07-18 | 24 |  | 14.4d |  |
| 29 |  | Consolidacion listado Tipos de Tareas | 1d? | 2016-07-18 | 2016-07-19 | 28, 27, 26 |  | 14.4d |  |
| 30 | 5.3 | **Diseño Listado de Repuestos** | 20d | 2016-07-11 | 2016-08-05 |  |  | 0.4d |  |
| 31 |  | Listado Inicial de Repuestos - Reductores Paralelos | 17d | 2016-07-11 | 2016-08-02 | 13 |  | 0.4d |  |
| 32 |  | Listado Inicial de Repuestos - Reductores Planetarios | 17d | 2016-07-11 | 2016-08-02 | 13 |  | 0.4d |  |
| 33 |  | Listado Inicial de Repuestos - Transmisiones | 17d | 2016-07-11 | 2016-08-02 | 13 |  | 0.4d |  |
| 34 |  | Listado Inicial de Repuestos - Cilindros | 17d | 2016-07-11 | 2016-08-02 | 13 |  | 0.4d |  |
| 35 |  | Listado Inicial de Repuestos - Bombas | 17d | 2016-07-11 | 2016-08-02 | 13 |  | 0.4d |  |
| 36 |  | Listado Inicial de Repuestos - Compresores | 17d | 2016-07-11 | 2016-08-02 | 13 |  | 0.4d |  |
| 37 |  | Listado Inicial de Repuestos - Motores | 17d | 2016-07-11 | 2016-08-02 | 13 |  | 0.4d |  |
| 38 |  | Listado Inicial de Repuestos - Torno | 17d | 2016-07-11 | 2016-08-02 | 13 |  | 0.4d |  |
| 39 |  | Listado Inicial de Repuestos - Soldadura | 17d | 2016-07-11 | 2016-08-02 | 13 |  | 0.4d |  |
| 40 |  | Analisis y consolidacion tipos de Repuestos y Manuales de Parte | 3d | 2016-08-02 | 2016-08-05 | 31, 32, 33, 34, 35, 36, 37, 38, 39 |  | 0.4d |  |
| 41 |  | Diseño Tipos de Reparacion | 1d? | 2016-08-05 | 2016-08-08 | 40, 29 |  | 0.4d |  |
| 42 | 6 | **Centros De Trabajo** | 1d? | 2016-08-08 A | 2016-08-09 |  | 40% | 0.1d |  |
| 43 |  | Revision estructura Centros de Trabajo | 1d? | 2016-08-08 A | 2016-08-09 | 9, 41 | 40% | 0.1d |  |
| 44 |  | Revision y Re diseño Hojas de Ruta | 1d? | 2016-08-09 A | 2016-08-10 | 43 | 10% | 55d |  |
| 45 |  | Diseño Detalle de Evaluacion | 1d? | 2016-08-10 | 2016-08-11 | 44 |  | 55d |  |
| 46 |  | Revision y Rediseño Detalle de Reparacion | 1d? | 2016-08-11 | 2016-08-12 | 45 |  | 55d |  |
| 47 | 10 | **Recepcion de Componentes** | 32d? | 2016-07-07 | 2016-08-19 |  |  | 55d |  |
| 48 |  | Revision Tipos de Componente | 1d? | 2016-08-12 | 2016-08-16 | 46 |  | 55d |  |
| 49 |  | Diseño de Pre Recepcion | 1d? | 2016-08-16 | 2016-08-17 | 48 |  | 55d |  |
| 50 |  | Analisis de Agendamientos | 1d? | 2016-08-17 | 2016-08-18 | 49 |  | 55d |  |
| 51 |  | Revisiones Con Sucursales | 1d? | 2016-08-18 | 2016-08-19 | 50 |  | 55d |  |
| 52 | 10.5 | **Revision Y Modificacion Recepcion de Componentes** | 1d? | 2016-07-07 | 2016-07-07 |  |  | 86d |  |
| 53 |  | Revision Criterios de Recepcion | 1d? | 2016-07-07 | 2016-07-07 |  |  | 86d |  |
| 54 |  | Diseño de Checklist de Recepcion | 1d? | 2016-07-07 | 2016-07-07 |  |  | 86d |  |
| 55 |  | Analisis de pantalla de Recepcion | 1d? | 2016-07-07 | 2016-07-07 |  |  | 86d |  |
| 56 | 11 | **Revision Proceso de Compras** | 2d? | 2016-07-07 | 2016-07-08 |  |  | 85d |  |
| 57 |  | Levantamiento de Requerimientos Adquisiciones | 1d? | 2016-07-07 | 2016-07-07 |  |  | 85d |  |
| 58 |  | Levantamiento Requerimientos Stgo | 1d? | 2016-07-07 | 2016-07-07 |  |  | 85d |  |
| 59 |  | Levantamiento Requerimientos Afta | 1d? | 2016-07-07 | 2016-07-07 |  |  | 85d |  |
| 60 |  | Levantamiento Requerimientos CCP | 1d? | 2016-07-07 | 2016-07-07 |  |  | 85d |  |
| 61 |  | Definiciones linea critica | 1d? | 2016-07-07 | 2016-07-08 | 57, 58, 59, 60 |  | 85d |  |
| 62 |  | Analisis sistemas de planificacion otras Empresas | 1d? | 2016-07-29 | 2016-07-29 |  |  | 69d | start no earlier than 2016-07-29 |
| 63 | 13 | **Implementación Hojas de Ruta** | 10d | 2016-07-07 | 2016-07-20 |  |  | 77d |  |
| 64 | 13.1 | **implementacion Areas** | 10d | 2016-07-07 | 2016-07-20 |  |  | 77d |  |
| 65 |  | Transmisiones | 2w | 2016-07-07 | 2016-07-20 |  |  | 77d |  |
| 66 |  | Reductores | 2w | 2016-07-07 | 2016-07-20 |  |  | 77d |  |
| 67 |  | Compresores | 2w | 2016-07-07 | 2016-07-20 |  |  | 77d |  |
| 68 |  | Bombas | 2w | 2016-07-07 | 2016-07-20 |  |  | 77d |  |
| 69 |  | Equipos y Agmin | 2w | 2016-07-07 | 2016-07-20 |  |  | 77d |  |
| 70 |  | Cilindros | 2w | 2016-07-07 | 2016-07-20 |  |  | 77d |  |

| ID | WBS | Task | Duration | Start | Finish | Predecessors | Complete | Total float | Constraint |
| --- | --- | --- | --- | --- | --- | --- | --- | --- | --- |
| 71 |  | Fabricacion y Recuperacion | 2w | 2016-07-07 | 2016-07-20 |  |  | 77d |  |
| 72 |  | motores | 2w | 2016-07-07 | 2016-07-20 |  |  | 77d |  |
| 73 | 14 | **requerimiento de especificaciones Tecnicas** | 17.38d | 2016-07-29 A | 2016-08-23 |  | 3% | 52.62d |  |
| 74 |  | Catastro funcional SISCOM según etapas | 2w | 2016-08-04 | 2016-08-18 |  |  | 52.62d | start no earlier than 2016-08-04 |
| 75 |  | Análisis e Informe del catastro | 2w | 2016-08-04 A | 2016-08-18 |  | 10% | 52.62d | start no earlier than 2016-08-04 |
| 76 | 14.3 | **Analisis software externos** | 13d | 2016-07-29 | 2016-08-17 |  |  | 53.88d |  |
| 77 |  | Revision proveedores | 4d | 2016-07-29 | 2016-08-03 |  |  | 53.88d | start no earlier than 2016-07-29 |
| 78 |  | envío de requerimientos | 1d | 2016-08-03 | 2016-08-04 | 77 |  | 53.88d |  |
| 79 |  | recepcion de propuestas | 5d | 2016-08-04 | 2016-08-11 | 78 |  | 53.88d |  |
| 80 |  | analisis de propuestas | 3d | 2016-08-11 | 2016-08-17 | 79 |  | 53.88d |  |
| 81 |  | Analisis de alternativas | 3d | 2016-08-18 | 2016-08-23 | 74, 75, 80 |  | 52.62d |  |
| 82 |  | presentacion de alternativas | 1h | 2016-08-23 | 2016-08-23 | 81 |  | 52.62d |  |
| 83 | 15 | **Informe de Requerimiento y Propuesta de Solucion** | 87d | 2016-07-07 | 2016-11-04 |  |  | 0d |  |
| 84 | 15.1 | **Recepcion de componentes** | 3d | 2016-07-07 | 2016-07-11 |  |  |  |  |
| 85 |  | Toma de requerimientos | 1d? | 2016-07-07 | 2016-07-07 |  |  | 59d |  |
| 86 |  | Informe del requerimiento | 1d? | 2016-07-07 | 2016-07-07 |  |  | 59d |  |
| 87 |  | Desarrollo del modulo | 1d? | 2016-07-07 | 2016-07-07 |  |  | 59d |  |
| 88 |  | Testing (Certificación) | 1d? | 2016-07-07 | 2016-07-07 |  |  | 59d |  |
| 89 |  | Capacitaciones | 1d? | 2016-07-07 | 2016-07-07 |  |  | 59d |  |
| 90 |  | Paso a producción | 1d? | 2016-07-07 | 2016-07-07 |  |  | 59d |  |
| 91 | 15.2 | **Evaluar trabajo** | 1mo | 2016-07-11 | 2016-08-05 | 84 |  |  |  |
| 92 |  | Toma de requerimientos | 1d? | 2016-07-11 | 2016-07-12 |  |  | 57d |  |
| 93 |  | Informe del requerimiento | 1d? | 2016-07-11 | 2016-07-12 |  |  | 57d |  |
| 94 |  | Desarrollo del modulo | 1d? | 2016-07-11 | 2016-07-12 |  |  | 57d |  |
| 95 |  | Testing (Certificación) | 1d? | 2016-07-11 | 2016-07-12 |  |  | 57d |  |
| 96 |  | Capacitaciones | 1d? | 2016-07-11 | 2016-07-12 |  |  | 57d |  |
| 97 |  | Paso a producción | 1d? | 2016-07-11 | 2016-07-12 |  |  | 57d |  |
| 98 | 15.3 | **Cotizar trabajo** | 4d | 2016-08-05 | 2016-08-11 | 91 |  |  |  |
| 99 |  | Toma de requerimientos | 1d? | 2016-08-05 | 2016-08-08 |  |  | 38d |  |
| 100 |  | Informe del requerimiento | 1d? | 2016-08-05 | 2016-08-08 |  |  | 38d |  |
| 101 |  | Desarrollo del modulo | 1d? | 2016-08-05 | 2016-08-08 |  |  | 38d |  |
| 102 |  | Testing (Certificación) | 1d? | 2016-08-05 | 2016-08-08 |  |  | 38d |  |
| 103 |  | Capacitaciones | 1d? | 2016-08-05 | 2016-08-08 |  |  | 38d |  |
| 104 |  | Paso a producción | 1d? | 2016-08-05 | 2016-08-08 |  |  | 38d |  |
| 105 | 15.4 | **Aprobar cotización** | 5d | 2016-08-11 | 2016-08-19 | 98 |  |  |  |
| 106 |  | Toma de requerimientos | 1d? | 2016-08-11 | 2016-08-12 |  |  | 35d |  |
| 107 |  | Informe del requerimiento | 1d? | 2016-08-11 | 2016-08-12 |  |  | 35d |  |
| 108 |  | Desarrollo del modulo | 1d? | 2016-08-11 | 2016-08-12 |  |  | 35d |  |
| 109 |  | Testing (Certificación) | 1d? | 2016-08-11 | 2016-08-12 |  |  | 35d |  |
| 110 |  | Capacitaciones | 1d? | 2016-08-11 | 2016-08-12 |  |  | 35d |  |
| 111 |  | Paso a producción | 1d? | 2016-08-11 | 2016-08-12 |  |  | 35d |  |
| 112 | 15.5 | **Proceso Compras** | 2w | 2016-08-19 | 2016-09-01 | 105 |  |  |  |
| 113 |  | Toma de requerimientos | 1d? | 2016-08-19 | 2016-08-22 |  |  | 31d |  |
| 114 |  | Informe del requerimiento | 1d? | 2016-08-19 | 2016-08-22 |  |  | 31d |  |
| 115 |  | Desarrollo del modulo | 1d? | 2016-08-19 | 2016-08-22 |  |  | 31d |  |
| 116 |  | Testing (Certificación) | 1d? | 2016-08-19 | 2016-08-22 |  |  | 31d |  |
| 117 |  | Capacitaciones | 1d? | 2016-08-19 | 2016-08-22 |  |  | 31d |  |
| 118 |  | Paso a producción | 1d? | 2016-08-19 | 2016-08-22 |  |  | 31d |  |
| 119 | 15.6 | **Reparacion** | 1mo | 2016-09-01 | 2016-09-29 | 112 |  |  |  |
| 120 |  | Toma de requerimientos | 1d? | 2016-09-01 | 2016-09-02 |  |  | 22d |  |
| 121 |  | Informe del requerimiento | 1d? | 2016-09-01 | 2016-09-02 |  |  | 22d |  |
| 122 |  | Desarrollo del modulo | 1d? | 2016-09-01 | 2016-09-02 |  |  | 22d |  |
| 123 |  | Testing (Certificación) | 1d? | 2016-09-01 | 2016-09-02 |  |  | 22d |  |
| 124 |  | Capacitaciones | 1d? | 2016-09-01 | 2016-09-02 |  |  | 22d |  |
| 125 |  | Paso a producción | 1d? | 2016-09-01 | 2016-09-02 |  |  | 22d |  |
| 126 | 15.7 | **Liberación de componente** | 3d | 2016-09-29 | 2016-10-04 | 119 |  |  |  |
| 127 |  | Toma de requerimientos | 1d? | 2016-09-29 | 2016-09-30 |  |  | 3d |  |
| 128 |  | Informe del requerimiento | 1d? | 2016-09-29 | 2016-09-30 |  |  | 3d |  |
| 129 |  | Desarrollo del modulo | 1d? | 2016-09-29 | 2016-09-30 |  |  | 3d |  |
| 130 |  | Testing (Certificación) | 1d? | 2016-09-29 | 2016-09-30 |  |  | 3d |  |
| 131 |  | Capacitaciones | 1d? | 2016-09-29 | 2016-09-30 |  |  | 3d |  |
| 132 |  | Paso a producción | 1d? | 2016-09-29 | 2016-09-30 |  |  | 3d |  |
| 133 | 15.8 | **Despacho** | 2d | 2016-10-04 | 2016-10-06 | 126 |  |  |  |
| 134 |  | Toma de requerimientos | 1d? | 2016-10-04 | 2016-10-05 |  |  | 1d |  |
| 135 |  | Informe del requerimiento | 1d? | 2016-10-04 | 2016-10-05 |  |  | 1d |  |
| 136 |  | Desarrollo del modulo | 1d? | 2016-10-04 | 2016-10-05 |  |  | 1d |  |
| 137 |  | Testing (Certificación) | 1d? | 2016-10-04 | 2016-10-05 |  |  | 1d |  |
| 138 |  | Capacitaciones | 1d? | 2016-10-04 | 2016-10-05 |  |  | 1d |  |
| 139 |  | Paso a producción | 1d? | 2016-10-04 | 2016-10-05 |  |  | 1d |  |
| 140 |  | Simulaciones | 1mo | 2016-10-06 | 2016-11-04 | 133 |  | 0d |  |

## Version 2 (saved 2016-08-11)

Note of the change: V1.3

Last finish 2016-11-04 → 2019-08-27 (+1026d).

Added:

| ID | Task | Duration | Start | Finish | Predecessors |
| --- | --- | --- | --- | --- | --- |
| 61 | Levantamiento externo | 1mo | 2016-08-19 | 2016-09-15 |  |
| 72 | revision interna | 1d | 2016-08-24 | 2016-08-24 | 70 |
| 73 | revision usuario | 1d | 2016-08-24 | 2016-08-25 | 72 |
| 74 | pruebas abiertas | 3d | 2016-08-25 | 2016-08-30 | 73 |
| 80 | Modelamiento de Datos | 1w | 2016-10-19 | 2016-10-26 | 79 |
| 81 | Ordenamiento de datos | 2w | 2016-10-26 | 2016-11-10 | 80 |
| 84 | revision interna | 2w | 2017-04-06 | 2017-04-19 | 82 |
| 86 | pruebas abiertas | 2w | 2017-04-26 | 2017-05-10 | 85 |
| 88 | Paso a producción y Puesta en marcha | 3w | 2017-05-24 | 2017-06-13 | 87 |
| 94 | revision interna | 2w | 2017-10-23 | 2017-11-08 | 92 |
| 95 | revision usuario | 2w | 2017-11-08 | 2017-11-21 | 94 |
| 96 | pruebas abiertas | 3w | 2017-11-21 | 2017-12-12 | 95 |
| 104 | revision interna | 3d | 2018-02-13 | 2018-02-15 |  |
| 105 | revision usuario | 3d | 2018-02-15 | 2018-02-20 | 104 |
| 106 | pruebas abiertas | 1w | 2018-02-20 | 2018-02-27 | 105 |
| 110 | Toma de requerimientos | 3w | 2018-03-12 | 2018-03-30 | 108 |
| 111 | Informe del requerimiento | 2w | 2018-03-30 | 2018-04-13 | 110 |
| 112 | Modelamiento de Datos | 1mo | 2018-04-13 | 2018-05-11 | 111 |
| 113 | Ordenamiento de datos | 2w | 2018-05-11 | 2018-05-25 | 112 |
| 114 | Desarrollo del modulo | 6mo | 2018-05-11 | 2018-10-26 | 112 |
| 115 | **Testing (Certificación)** | 30d | 2018-10-26 | 2018-12-07 |  |
| 116 | revision interna | 1mo | 2018-10-26 | 2018-11-23 | 114 |
| 117 | revision usuario | 1w | 2018-11-23 | 2018-11-30 | 116 |
| 118 | pruebas abiertas | 1w | 2018-11-30 | 2018-12-07 | 117 |
| 119 | Capacitaciones | 2w | 2018-12-07 | 2018-12-20 | 118 |
| 120 | Paso a producción y Puesta en marcha | 1mo | 2018-12-20 | 2019-01-18 | 119 |

Removed: 44 Revision y Re diseño Hojas de Ruta; 45 Diseño Detalle de Evaluacion; 46 Revision y Rediseño Detalle de Reparacion; 47 Recepcion de Componentes; 48 Revision Tipos de Componente; 49 Diseño de Pre Recepcion; 50 Analisis de Agendamientos; 51 Revisiones Con Sucursales; 52 Revision Y Modificacion Recepcion de Componentes; 53 Revision Criterios de Recepcion; 54 Diseño de Checklist de Recepcion; 55 Analisis de pantalla de Recepcion; 56 Revision Proceso de Compras; 57 Levantamiento de Requerimientos Adquisiciones; 58 Levantamiento Requerimientos Stgo; 59 Levantamiento Requerimientos Afta; 60 Levantamiento Requerimientos CCP; 61 Definiciones linea critica

Changed:

| ID | Task | Start | Finish | Duration | Complete | Total float | Predecessors | Other |
| --- | --- | --- | --- | --- | --- | --- | --- | --- |
| 4 | **Definicion Capacidades de Recursos** |  | 2016-07-20 → 2016-07-25 (+5d) | 8.16d? → 11.53d | 86% → 71% | 14.11d → 10.74d |  |  |
| 8 | Analisis de Capacidades Trabajadores |  | 2016-07-19 → 2016-07-21 (+2d) | 2.63d? → 4d | 70% → 46% | 14.11d → 10.74d |  |  |
| 9 | Pre definicion de Centros de Trabajo | 2016-07-19 → 2016-07-21 (+2d) | 2016-07-20 → 2016-07-25 (+5d) | 1d? → 3d |  | 14.11d → 10.74d |  |  |
| 10 | **Definicion de Maestros de Reparacion** |  | 2016-08-08 → 2016-09-28 (+51d) | 24d? → 61d? | 3% → 2% | 63d → 773.06d |  |  |
| 11 | **Definicion y Ordenamiento de Modelos de Componente** |  | 2016-07-11 → 2016-08-30 (+50d) | 3d? → 40d | 27% → 0% | 0.4d → -20d |  |  |
| 12 | Estadistica Rotacion de Componentes |  | 2016-07-08 → 2016-08-02 (+25d) | 2d? → 1mo | 40% → 0% | 0.4d → -36.6d |  |  |
| 13 | Definicion de componentes Muestra Por Area | 2016-07-08 → 2016-08-02 (+25d) | 2016-07-11 → 2016-08-30 (+50d) | 1d? → 1mo |  | 0.4d → -36.6d |  |  |
| 14 | **Diseño Listado de Tareas** |  | 2016-07-19 → 2016-09-13 (+56d) | 6d? → 47d? | 35% → 20% | 78d → 784.06d |  |  |
| 15 | Listado Inicial de Tareas - Reductores Paralelos |  | 2016-07-12 → 2016-08-31 (+50d) |  |  | 83d → 793.46d |  |  |
| 18 | Listado Inicial de Tareas - Cilindros |  | 2016-07-12 → 2016-08-31 (+50d) |  |  | 2.5d → -26d |  |  |
| 19 | Listado Inicial de Tareas - Bombas |  | 2016-07-12 → 2016-08-31 (+50d) |  |  | 2.5d → -26.2d |  |  |
| 21 | Listado Inicial de Tareas - Motores | 2016-07-11 → 2016-08-30 (+50d) | 2016-07-12 → 2016-08-31 (+50d) |  |  | 2.5d → -26.6d |  |  |
| 22 | Listado Inicial de Tareas - Torno | 2016-07-11 → 2016-08-30 (+50d) | 2016-07-12 → 2016-08-31 (+50d) |  |  | 2.5d → -26.6d |  |  |
| 23 | Listado Inicial de Tareas - Soldadura | 2016-07-11 → 2016-08-30 (+50d) | 2016-07-12 → 2016-08-31 (+50d) |  |  | 2.5d → -26.6d |  |  |
| 24 | Analisis y consolidacion tipos de Tareas | 2016-07-14 → 2016-08-31 (+48d) | 2016-07-15 → 2016-09-07 (+54d) | 1d? → 1w |  | 0.5d → -26.6d |  |  |
| 25 | **Definicion Tipos de Tareas** |  | 2016-07-19 → 2016-09-13 (+56d) | 2d? → 43d? | 13% → 5% | 14.4d → -26.6d |  |  |
| 26 | analisis tipo tareas - AFTA |  | 2016-07-18 → 2016-09-09 (+53d) | 1d? → 3d | 50% → 17% | 14.4d → -26.1d |  |  |
| 27 | analisis tipo tareas - CCP | 2016-07-15 → 2016-09-07 (+54d) | 2016-07-18 → 2016-09-12 (+56d) | 1d? → 3d |  | 14.4d → -26.6d |  |  |
| 28 | analisis tipo tareas - STGO | 2016-07-15 → 2016-09-07 (+54d) | 2016-07-18 → 2016-09-12 (+56d) | 1d? → 3d |  | 14.4d → -26.6d |  |  |
| 29 | Consolidacion listado Tipos de Tareas | 2016-07-18 → 2016-09-12 (+56d) | 2016-07-19 → 2016-09-13 (+56d) |  |  | 14.4d → -26.6d |  |  |
| 30 | **Diseño Listado de Repuestos** | 2016-07-11 → 2016-08-30 (+50d) | 2016-08-05 → 2016-09-27 (+53d) |  |  | 0.4d → -36.6d |  |  |
| 31 | Listado Inicial de Repuestos - Reductores Paralelos | 2016-07-11 → 2016-08-30 (+50d) | 2016-08-02 → 2016-09-22 (+51d) |  |  | 0.4d → -36.6d |  |  |
| 32 | Listado Inicial de Repuestos - Reductores Planetarios | 2016-07-11 → 2016-08-30 (+50d) | 2016-08-02 → 2016-09-22 (+51d) |  |  | 0.4d → -36.6d |  |  |
| 33 | Listado Inicial de Repuestos - Transmisiones | 2016-07-11 → 2016-08-30 (+50d) | 2016-08-02 → 2016-09-22 (+51d) |  |  | 0.4d → -36.6d |  |  |
| 34 | Listado Inicial de Repuestos - Cilindros | 2016-07-11 → 2016-08-30 (+50d) | 2016-08-02 → 2016-09-22 (+51d) |  |  | 0.4d → -36.6d |  |  |
| 35 | Listado Inicial de Repuestos - Bombas | 2016-07-11 → 2016-08-30 (+50d) | 2016-08-02 → 2016-09-22 (+51d) |  |  | 0.4d → -36.6d |  |  |
| 36 | Listado Inicial de Repuestos - Compresores | 2016-07-11 → 2016-08-30 (+50d) | 2016-08-02 → 2016-09-22 (+51d) |  |  | 0.4d → -36.6d |  |  |
| 37 | Listado Inicial de Repuestos - Motores | 2016-07-11 → 2016-08-30 (+50d) | 2016-08-02 → 2016-09-22 (+51d) |  |  | 0.4d → -36.6d |  |  |
| 38 | Listado Inicial de Repuestos - Torno | 2016-07-11 → 2016-08-30 (+50d) | 2016-08-02 → 2016-09-22 (+51d) |  |  | 0.4d → -36.6d |  |  |
| 39 | Listado Inicial de Repuestos - Soldadura | 2016-07-11 → 2016-08-30 (+50d) | 2016-08-02 → 2016-09-22 (+51d) |  |  | 0.4d → -36.6d |  |  |
| 40 | Analisis y consolidacion tipos de Repuestos y Manuales de Parte | 2016-08-02 → 2016-09-22 (+51d) | 2016-08-05 → 2016-09-27 (+53d) |  |  | 0.4d → -36.6d |  |  |
| 41 | Diseño Tipos de Reparacion | 2016-08-05 → 2016-09-27 (+53d) | 2016-08-08 → 2016-09-28 (+51d) |  |  | 0.4d → -36.6d |  |  |
| 42 | **Centros De Trabajo** |  | 2016-08-09 → 2016-09-28 (+50d) | 1d? → 37.6d? |  | 0.1d → 771.46d |  |  |
| 43 | Revision estructura Centros de Trabajo |  | 2016-08-09 → 2016-09-28 (+50d) |  |  | 0.1d → 771.46d |  |  |
| 44 | Analisis sistemas de planificacion otras Empresas | 2016-07-29 → 2016-09-28 (+61d) | 2016-07-29 → 2016-09-29 (+62d) |  |  | 69d → 771.46d | none → 43 |  |
| 55 | **requerimiento de especificaciones Tecnicas** | 2016-07-29 A → 2016-08-04 A (+6d) | 2016-08-23 → 2016-09-30 (+38d) | 17.38d → 42.25d | 3% → 2% | 52.62d → 770.56d |  |  |
| 58 | **Analisis software externos** | 2016-07-29 → 2016-08-16 (+18d) | 2016-08-17 → 2016-09-27 (+41d) | 13d → 31.69d |  | 53.88d → 773.69d |  |  |
| 59 | Revision proveedores | 2016-07-29 → 2016-08-16 (+18d) | 2016-08-03 → 2016-08-19 (+16d) |  |  | 53.88d → 781.38d |  | constraint start no earlier than 2016-07-29 → start no earlier than 2016-08-16 |
| 60 | **Envío de alcances** | 2016-08-03 → 2016-08-19 (+16d) | 2016-08-04 → 2016-09-27 (+54d) | 1d → 27.69d |  | 53.88d → 773.69d |  | was named envío de requerimientos |
| 62 | Recepcion de propuestas | 2016-08-04 → 2016-09-15 (+42d) | 2016-08-11 → 2016-09-22 (+42d) |  |  | 53.88d → 770.56d | 60 → none | was named recepcion de propuestas; constraint none → finish no earlier than 2016-09-22 |
| 63 | Análisis de propuestas | 2016-08-11 → 2016-09-23 (+43d) | 2016-08-17 → 2016-09-27 (+41d) |  |  | 53.88d → 770.56d |  | was named analisis de propuestas |
| 64 | Análisis de alternativas | 2016-08-18 → 2016-09-27 (+40d) | 2016-08-23 → 2016-09-30 (+38d) |  |  | 52.62d → 770.56d |  | was named Analisis de alternativas |
| 65 | Presentación de alternativas | 2016-08-23 → 2016-09-30 (+38d) | 2016-08-23 → 2016-09-30 (+38d) |  |  | 52.62d → 770.56d |  | was named presentacion de alternativas |
| 66 | **Informe de Requerimiento y Propuesta de Solucion** | 2016-07-07 → 2016-08-11 (+35d) | 2016-11-04 → 2019-08-27 (+1026d) | 87d → 807.5d |  |  |  |  |
| 67 | **Recepcion de componentes** | 2016-07-07 → 2016-08-11 (+35d) | 2016-07-11 → 2016-09-07 (+58d) | 3d → 19.5d |  | none → 0d |  |  |
| 68 | Toma de requerimientos | 2016-07-07 → 2016-08-11 (+35d) | 2016-07-07 → 2016-08-11 (+35d) | 1d? → 4h |  | 59d → 0d |  | constraint none → start no earlier than 2016-08-11 |
| 69 | Informe del requerimiento | 2016-07-07 → 2016-08-11 (+35d) | 2016-07-07 → 2016-08-17 (+41d) | 1d? → 3d |  | 59d → 0d | none → 68 |  |
| 70 | Desarrollo del modulo | 2016-07-07 → 2016-08-17 (+41d) | 2016-07-07 → 2016-08-23 (+47d) | 1d? → 1w |  | 59d → 0d | none → 69 |  |
| 71 | **Testing (Certificación)** | 2016-07-07 → 2016-08-24 (+48d) | 2016-07-07 → 2016-08-30 (+54d) | 1d? → 5d |  | 59d → 0d |  |  |
| 75 | Capacitaciones | 2016-07-07 → 2016-08-30 (+54d) | 2016-07-07 → 2016-08-31 (+55d) | 1d? → 1d |  | 59d → 0d | none → 74 |  |
| 76 | Paso a producción y Puesta en marcha | 2016-07-07 → 2016-08-31 (+55d) | 2016-07-07 → 2016-09-07 (+62d) | 1d? → 1w |  | 59d → 0d | none → 75 | was named Paso a producción |
| 77 | **Evaluar trabajo** | 2016-07-11 → 2016-09-07 (+58d) | 2016-08-05 → 2017-06-13 (+312d) | 1mo → 205d |  | none → 0d | 67 → none |  |
| 78 | Toma de requerimientos | 2016-07-11 → 2016-09-07 (+58d) | 2016-07-12 → 2016-10-05 (+85d) | 1d? → 1mo |  | 57d → 0d | none → 76 |  |
| 79 | Informe del requerimiento | 2016-07-11 → 2016-10-05 (+86d) | 2016-07-12 → 2016-10-19 (+99d) | 1d? → 2w |  | 57d → 0d | none → 78 |  |
| 82 | Desarrollo del modulo | 2016-07-11 → 2016-10-26 (+107d) | 2016-07-12 → 2017-04-06 (+268d) | 1d? → 6mo |  | 57d → 0d | none → 80 |  |
| 83 | **Testing (Certificación)** | 2016-07-11 → 2017-04-06 (+269d) | 2016-07-12 → 2017-05-10 (+302d) | 1d? → 25d |  | 57d → 0d |  |  |
| 85 | revision usuario | 2016-07-11 → 2017-04-19 (+282d) | 2016-07-12 → 2017-04-26 (+288d) | 1d? → 1w |  | 57d → 0d | none → 84 | was named Paso a producción |
| 87 | Capacitaciones | 2016-07-11 → 2017-05-10 (+303d) | 2016-07-12 → 2017-05-24 (+316d) | 1d? → 2w |  | 57d → 0d | none → 86 |  |
| 89 | **Reparacion** | 2016-09-01 → 2017-06-13 (+285d) | 2016-09-29 → 2018-01-17 (+475d) | 1mo → 155d |  | none → 0d | 99 → none |  |
| 90 | Toma de requerimientos | 2016-09-01 → 2017-06-13 (+285d) | 2016-09-02 → 2017-06-26 (+297d) | 1d? → 2w |  | 22d → 0d | none → 88 |  |
| 91 | Informe del requerimiento | 2016-09-01 → 2017-06-26 (+298d) | 2016-09-02 → 2017-07-04 (+305d) | 1d? → 1w |  | 22d → 0d | none → 90 |  |
| 92 | Desarrollo del modulo | 2016-09-01 → 2017-07-04 (+306d) | 2016-09-02 → 2017-10-23 (+416d) | 1d? → 4mo |  | 22d → 0d | none → 91 |  |
| 93 | **Testing (Certificación)** | 2016-09-01 → 2017-10-23 (+417d) | 2016-09-02 → 2017-12-12 (+466d) | 1d? → 35d |  | 22d → 0d |  |  |
| 97 | Capacitaciones | 2016-09-01 → 2017-12-12 (+467d) | 2016-09-02 → 2017-12-27 (+481d) | 1d? → 2w |  | 22d → 0d | none → 96 |  |
| 98 | Paso a producción y Puesta en marcha | 2016-09-01 → 2017-12-27 (+482d) | 2016-09-02 → 2018-01-17 (+502d) | 1d? → 3w |  | 22d → 0d | none → 97 | was named Paso a producción |
| 99 | **Proceso Compras** | 2016-08-19 → 2018-01-17 (+516d) | 2016-09-01 → 2018-03-12 (+557d) | 2w → 41d |  | none → 0d | 142 → none |  |
| 100 | Toma de requerimientos | 2016-08-19 → 2018-01-17 (+516d) | 2016-08-22 → 2018-01-23 (+519d) | 1d? → 1w |  | 31d → 0d | none → 98 |  |
| 101 | Informe del requerimiento | 2016-08-19 → 2018-01-23 (+522d) | 2016-08-22 → 2018-01-30 (+526d) | 1d? → 1w |  | 31d → 0d | none → 100 |  |
| 102 | Desarrollo del modulo | 2016-08-19 → 2018-01-30 (+529d) | 2016-08-22 → 2018-02-12 (+539d) | 1d? → 2w |  | 31d → 0d | none → 101 |  |
| 103 | **Testing (Certificación)** | 2016-08-19 → 2018-02-13 (+543d) | 2016-08-22 → 2018-02-27 (+554d) | 1d? → 11d |  | 31d → 0d | none → 102 |  |

| ID | Task | Start | Finish | Duration | Total float | Predecessors | Other |
| --- | --- | --- | --- | --- | --- | --- | --- |
| 107 | Capacitaciones | 2016-08-19 → 2018-02-27 (+557d) | 2016-08-22 → 2018-03-06 (+561d) | 1d? → 1w | 31d → 0d | none → 103 |  |
| 108 | Paso a producción y Puesta en Marcha | 2016-08-19 → 2018-03-06 (+564d) | 2016-08-22 → 2018-03-12 (+567d) | 1d? → 1w | 31d → 0d | none → 107 | was named Paso a producción |
| 109 | **Simulaciones** | 2016-10-06 → 2018-03-12 (+522d) | 2016-11-04 → 2019-01-18 (+805d) | 1mo → 225d |  | 121 → none |  |
| 121 | **Despacho** | 2016-10-04 → 2019-01-18 (+836d) | 2016-10-06 → 2019-03-15 (+890d) | 2d → 43d | none → 0d | 128 → none |  |
| 122 | Toma de requerimientos | 2016-10-04 → 2019-01-18 (+836d) | 2016-10-05 → 2019-01-25 (+842d) | 1d? → 1w | 1d → 0d | none → 120 |  |
| 123 | Informe del requerimiento | 2016-10-04 → 2019-01-25 (+843d) | 2016-10-05 → 2019-01-30 (+847d) | 1d? → 3d | 1d → 0d | none → 122 |  |
| 124 | Desarrollo del modulo | 2016-10-04 → 2019-01-30 (+848d) | 2016-10-05 → 2019-02-25 (+873d) | 1d? → 1mo | 1d → 0d | none → 123 |  |
| 125 | Testing (Certificación) | 2016-10-04 → 2019-02-25 (+874d) | 2016-10-05 → 2019-03-04 (+880d) | 1d? → 1w | 1d → 0d | none → 124 |  |
| 126 | Capacitaciones | 2016-10-04 → 2019-03-04 (+881d) | 2016-10-05 → 2019-03-11 (+887d) | 1d? → 1w | 1d → 0d | none → 125 |  |
| 127 | Paso a producción y Puesta en Marcha | 2016-10-04 → 2019-03-11 (+888d) | 2016-10-05 → 2019-03-15 (+891d) | 1d? → 1w | 1d → 0d | none → 126 | was named Paso a producción |
| 128 | **Liberación de componente** | 2016-09-29 → 2019-03-18 (+900d) | 2016-10-04 → 2019-04-30 (+938d) | 3d → 33d | none → 0d | 89 → none |  |
| 129 | Toma de requerimientos | 2016-09-29 → 2019-03-18 (+900d) | 2016-09-30 → 2019-03-22 (+903d) | 1d? → 1w | 3d → 0d | none → 127 |  |
| 130 | Informe del requerimiento | 2016-09-29 → 2019-03-22 (+904d) | 2016-09-30 → 2019-03-27 (+908d) | 1d? → 3d | 3d → 0d | none → 129 |  |
| 131 | Desarrollo del modulo | 2016-09-29 → 2019-03-27 (+909d) | 2016-09-30 → 2019-04-09 (+921d) | 1d? → 2w | 3d → 0d | none → 130 |  |
| 132 | Testing (Certificación) | 2016-09-29 → 2019-04-09 (+922d) | 2016-09-30 → 2019-04-16 (+928d) | 1d? → 1w | 3d → 0d | none → 131 |  |
| 133 | Capacitaciones | 2016-09-29 → 2019-04-16 (+929d) | 2016-09-30 → 2019-04-23 (+935d) | 1d? → 1w | 3d → 0d | none → 132 |  |
| 134 | Paso a producción | 2016-09-29 → 2019-04-23 (+936d) | 2016-09-30 → 2019-04-30 (+942d) | 1d? → 1w | 3d → 0d | none → 133 |  |
| 135 | **Cotizar trabajo** | 2016-08-05 → 2019-04-30 (+998d) | 2016-08-11 → 2019-07-11 (+1064d) | 4d → 53d | none → 0d | 77 → none |  |
| 136 | Toma de requerimientos | 2016-08-05 → 2019-04-30 (+998d) | 2016-08-08 → 2019-05-14 (+1009d) | 1d? → 2w | 38d → 0d | none → 134 |  |
| 137 | Informe del requerimiento | 2016-08-05 → 2019-05-14 (+1012d) | 2016-08-08 → 2019-05-17 (+1012d) | 1d? → 3d | 38d → 0d | none → 136 |  |
| 138 | Desarrollo del modulo | 2016-08-05 → 2019-05-17 (+1015d) | 2016-08-08 → 2019-06-14 (+1040d) | 1d? → 1mo | 38d → 0d | none → 137 |  |
| 139 | Testing (Certificación) | 2016-08-05 → 2019-06-14 (+1043d) | 2016-08-08 → 2019-06-28 (+1054d) | 1d? → 2w | 38d → 0d | none → 138 |  |
| 140 | Capacitaciones | 2016-08-05 → 2019-06-28 (+1057d) | 2016-08-08 → 2019-07-05 (+1061d) | 1d? → 1w | 38d → 0d | none → 139 |  |
| 141 | Paso a producción | 2016-08-05 → 2019-07-05 (+1064d) | 2016-08-08 → 2019-07-11 (+1067d) | 1d? → 1w | 38d → 0d | none → 140 |  |
| 142 | **Aprobar cotización** | 2016-08-11 → 2019-07-11 (+1064d) | 2016-08-19 → 2019-08-27 (+1103d) | 5d → 33d | none → 0d | 135 → none |  |
| 143 | Toma de requerimientos | 2016-08-11 → 2019-07-11 (+1064d) | 2016-08-12 → 2019-07-19 (+1071d) | 1d? → 1w | 35d → 0d | none → 141 |  |
| 144 | Informe del requerimiento | 2016-08-11 → 2019-07-19 (+1072d) | 2016-08-12 → 2019-07-24 (+1076d) | 1d? → 3d | 35d → 0d | none → 143 |  |
| 145 | Desarrollo del modulo | 2016-08-11 → 2019-07-24 (+1077d) | 2016-08-12 → 2019-08-06 (+1089d) | 1d? → 2w | 35d → 0d | none → 144 |  |
| 146 | Testing (Certificación) | 2016-08-11 → 2019-08-06 (+1090d) | 2016-08-12 → 2019-08-13 (+1096d) | 1d? → 1w | 35d → 0d | none → 145 |  |
| 147 | Capacitaciones | 2016-08-11 → 2019-08-13 (+1097d) | 2016-08-12 → 2019-08-21 (+1104d) | 1d? → 1w | 35d → 0d | none → 146 |  |
| 148 | Paso a producción | 2016-08-11 → 2019-08-21 (+1105d) | 2016-08-12 → 2019-08-27 (+1110d) | 1d? → 1w | 35d → 0d | none → 147 |  |

## Version 3 (saved 2016-08-12)

Note of the change: actualizacion trabajos en paralelo

Last finish 2019-08-27 → 2018-09-12 (-349d). Complete tasks 7 → 8.

Changed:

| ID | Task | Start | Finish | Duration | Complete | Total float | Predecessors |
| --- | --- | --- | --- | --- | --- | --- | --- |
| 3 | Definiciones Alcances y Compromisos |  | 2016-07-07 A |  | 90% → 100% | 833.06d → none |  |
| 66 | **Informe de Requerimiento y Propuesta de Solucion** |  | 2019-08-27 → 2018-09-12 (-349d) | 807.5d → 555.5d |  |  |  |
| 77 | **Evaluar trabajo** | 2016-09-07 → 2016-08-24 (-14d) | 2017-06-13 → 2017-05-29 (-15d) |  |  |  |  |
| 78 | Toma de requerimientos | 2016-09-07 → 2016-08-24 (-14d) | 2016-10-05 → 2016-09-20 (-15d) |  |  |  | 76 → 70 |
| 79 | Informe del requerimiento | 2016-10-05 → 2016-09-20 (-15d) | 2016-10-19 → 2016-10-04 (-15d) |  |  |  |  |
| 80 | Modelamiento de Datos | 2016-10-19 → 2016-10-04 (-15d) | 2016-10-26 → 2016-10-10 (-16d) |  |  |  |  |
| 81 | Ordenamiento de datos | 2016-10-26 → 2016-10-10 (-16d) | 2016-11-10 → 2016-10-25 (-16d) |  |  | 743d → 502d |  |
| 82 | Desarrollo del modulo | 2016-10-26 → 2016-10-10 (-16d) | 2017-04-06 → 2017-03-22 (-15d) |  |  |  |  |
| 83 | **Testing (Certificación)** | 2017-04-06 → 2017-03-22 (-15d) | 2017-05-10 → 2017-04-25 (-15d) |  |  | 0d → 342d |  |
| 84 | revision interna | 2017-04-06 → 2017-03-22 (-15d) | 2017-04-19 → 2017-04-05 (-14d) |  |  | 0d → 342d |  |
| 85 | revision usuario | 2017-04-19 → 2017-04-05 (-14d) | 2017-04-26 → 2017-04-11 (-15d) |  |  | 0d → 342d |  |
| 86 | pruebas abiertas | 2017-04-26 → 2017-04-12 (-14d) | 2017-05-10 → 2017-04-25 (-15d) |  |  | 0d → 342d |  |
| 87 | Capacitaciones | 2017-05-10 → 2017-04-25 (-15d) | 2017-05-24 → 2017-05-09 (-15d) |  |  | 0d → 342d |  |
| 88 | Paso a producción y Puesta en marcha | 2017-05-24 → 2017-05-09 (-15d) | 2017-06-13 → 2017-05-29 (-15d) |  |  | 0d → 342d |  |
| 89 | **Reparacion** | 2017-06-13 → 2017-03-22 (-83d) | 2018-01-17 → 2017-10-20 (-89d) |  |  |  |  |
| 90 | Toma de requerimientos | 2017-06-13 → 2017-03-22 (-83d) | 2017-06-26 → 2017-04-05 (-82d) |  |  |  | 88 → 82 |
| 91 | Informe del requerimiento | 2017-06-26 → 2017-04-05 (-82d) | 2017-07-04 → 2017-04-11 (-84d) |  |  |  |  |
| 92 | Desarrollo del modulo | 2017-07-04 → 2017-04-12 (-83d) | 2017-10-23 → 2017-07-28 (-87d) |  |  |  |  |
| 93 | **Testing (Certificación)** | 2017-10-23 → 2017-07-28 (-87d) | 2017-12-12 → 2017-09-14 (-89d) |  |  | 0d → 237d |  |
| 94 | revision interna | 2017-10-23 → 2017-07-28 (-87d) | 2017-11-08 → 2017-08-10 (-90d) |  |  | 0d → 237d |  |
| 95 | revision usuario | 2017-11-08 → 2017-08-10 (-90d) | 2017-11-21 → 2017-08-25 (-88d) |  |  | 0d → 237d |  |
| 96 | pruebas abiertas | 2017-11-21 → 2017-08-25 (-88d) | 2017-12-12 → 2017-09-14 (-89d) |  |  | 0d → 237d |  |
| 97 | Capacitaciones | 2017-12-12 → 2017-09-14 (-89d) | 2017-12-27 → 2017-09-29 (-89d) |  |  | 0d → 237d |  |
| 98 | Paso a producción y Puesta en marcha | 2017-12-27 → 2017-09-29 (-89d) | 2018-01-17 → 2017-10-20 (-89d) |  |  | 0d → 237d |  |
| 99 | **Proceso Compras** | 2018-01-17 → 2017-07-28 (-173d) | 2018-03-12 → 2017-09-25 (-168d) |  |  |  |  |
| 100 | Toma de requerimientos | 2018-01-17 → 2017-07-28 (-173d) | 2018-01-23 → 2017-08-03 (-173d) |  |  |  | 98 → 92 |
| 101 | Informe del requerimiento | 2018-01-23 → 2017-08-04 (-172d) | 2018-01-30 → 2017-08-10 (-173d) |  |  |  |  |
| 102 | Desarrollo del modulo | 2018-01-30 → 2017-08-10 (-173d) | 2018-02-12 → 2017-08-25 (-171d) |  |  |  |  |
| 103 | **Testing (Certificación)** | 2018-02-13 → 2017-08-25 (-172d) | 2018-02-27 → 2017-09-08 (-172d) |  |  | 0d → 256d |  |
| 104 | revision interna | 2018-02-13 → 2017-08-25 (-172d) | 2018-02-15 → 2017-08-29 (-170d) |  |  | 0d → 256d |  |
| 105 | revision usuario | 2018-02-15 → 2017-08-29 (-170d) | 2018-02-20 → 2017-09-01 (-172d) |  |  | 0d → 256d |  |
| 106 | pruebas abiertas | 2018-02-20 → 2017-09-01 (-172d) | 2018-02-27 → 2017-09-08 (-172d) |  |  | 0d → 256d |  |
| 107 | Capacitaciones | 2018-02-27 → 2017-09-08 (-172d) | 2018-03-06 → 2017-09-15 (-172d) |  |  | 0d → 256d |  |
| 108 | Paso a producción y Puesta en Marcha | 2018-03-06 → 2017-09-15 (-172d) | 2018-03-12 → 2017-09-25 (-168d) |  |  | 0d → 256d |  |
| 109 | **Simulaciones** | 2018-03-12 → 2017-08-25 (-199d) | 2019-01-18 → 2018-07-03 (-199d) |  |  |  |  |
| 110 | Toma de requerimientos | 2018-03-12 → 2017-08-25 (-199d) | 2018-03-30 → 2017-09-14 (-197d) |  |  |  | 108 → 102 |
| 111 | Informe del requerimiento | 2018-03-30 → 2017-09-14 (-197d) | 2018-04-13 → 2017-09-29 (-196d) |  |  |  |  |
| 112 | Modelamiento de Datos | 2018-04-13 → 2017-09-29 (-196d) | 2018-05-11 → 2017-10-27 (-196d) |  |  |  |  |
| 113 | Ordenamiento de datos | 2018-05-11 → 2017-10-27 (-196d) | 2018-05-25 → 2017-11-13 (-193d) |  |  | 332d → 222d |  |
| 114 | Desarrollo del modulo | 2018-05-11 → 2017-10-27 (-196d) | 2018-10-26 → 2018-04-11 (-198d) |  |  |  |  |
| 115 | **Testing (Certificación)** | 2018-10-26 → 2018-04-11 (-198d) | 2018-12-07 → 2018-05-23 (-198d) |  |  | 0d → 52d |  |
| 116 | revision interna | 2018-10-26 → 2018-04-11 (-198d) | 2018-11-23 → 2018-05-09 (-198d) |  |  | 0d → 52d |  |
| 117 | revision usuario | 2018-11-23 → 2018-05-09 (-198d) | 2018-11-30 → 2018-05-15 (-199d) |  |  | 0d → 52d |  |
| 118 | pruebas abiertas | 2018-11-30 → 2018-05-15 (-199d) | 2018-12-07 → 2018-05-23 (-198d) |  |  | 0d → 52d |  |
| 119 | Capacitaciones | 2018-12-07 → 2018-05-23 (-198d) | 2018-12-20 → 2018-06-06 (-197d) |  |  | 0d → 52d |  |
| 120 | Paso a producción y Puesta en marcha | 2018-12-20 → 2018-06-06 (-197d) | 2019-01-18 → 2018-07-03 (-199d) |  |  | 0d → 52d |  |
| 121 | **Despacho** | 2019-01-18 → 2018-04-11 (-282d) | 2019-03-15 → 2018-06-08 (-280d) |  |  |  |  |
| 122 | Toma de requerimientos | 2019-01-18 → 2018-04-11 (-282d) | 2019-01-25 → 2018-04-18 (-282d) |  |  |  | 120 → 114 |
| 123 | Informe del requerimiento | 2019-01-25 → 2018-04-18 (-282d) | 2019-01-30 → 2018-04-20 (-285d) |  |  |  |  |
| 124 | Desarrollo del modulo | 2019-01-30 → 2018-04-20 (-285d) | 2019-02-25 → 2018-05-18 (-283d) |  |  |  |  |
| 125 | Testing (Certificación) | 2019-02-25 → 2018-05-18 (-283d) | 2019-03-04 → 2018-05-28 (-280d) |  |  | 0d → 69d |  |
| 126 | Capacitaciones | 2019-03-04 → 2018-05-28 (-280d) | 2019-03-11 → 2018-06-04 (-280d) |  |  | 0d → 69d |  |
| 127 | Paso a producción y Puesta en Marcha | 2019-03-11 → 2018-06-04 (-280d) | 2019-03-15 → 2018-06-08 (-280d) |  |  | 0d → 69d |  |
| 128 | **Liberación de componente** | 2019-03-18 → 2018-05-18 (-304d) | 2019-04-30 → 2018-07-04 (-300d) |  |  |  |  |
| 129 | Toma de requerimientos | 2019-03-18 → 2018-05-18 (-304d) | 2019-03-22 → 2018-05-28 (-298d) |  |  |  | 127 → 124, 127 |
| 130 | Informe del requerimiento | 2019-03-22 → 2018-05-28 (-298d) | 2019-03-27 → 2018-05-31 (-300d) |  |  |  |  |
| 131 | Desarrollo del modulo | 2019-03-27 → 2018-05-31 (-300d) | 2019-04-09 → 2018-06-13 (-300d) |  |  |  |  |
| 132 | Testing (Certificación) | 2019-04-09 → 2018-06-13 (-300d) | 2019-04-16 → 2018-06-20 (-300d) |  |  | 0d → 51d |  |
| 133 | Capacitaciones | 2019-04-16 → 2018-06-20 (-300d) | 2019-04-23 → 2018-06-28 (-299d) |  |  | 0d → 51d |  |
| 134 | Paso a producción | 2019-04-23 → 2018-06-28 (-299d) | 2019-04-30 → 2018-07-04 (-300d) |  |  | 0d → 51d |  |
| 135 | **Cotizar trabajo** | 2019-04-30 → 2018-06-13 (-321d) | 2019-07-11 → 2018-08-27 (-318d) |  |  |  |  |
| 136 | Toma de requerimientos | 2019-04-30 → 2018-06-13 (-321d) | 2019-05-14 → 2018-06-28 (-320d) |  |  |  | 134 → 131, 134 |
| 137 | Informe del requerimiento | 2019-05-14 → 2018-06-28 (-320d) | 2019-05-17 → 2018-07-02 (-319d) |  |  |  |  |
| 138 | Desarrollo del modulo | 2019-05-17 → 2018-07-02 (-319d) | 2019-06-14 → 2018-07-30 (-319d) |  |  |  |  |
| 139 | Testing (Certificación) | 2019-06-14 → 2018-07-30 (-319d) | 2019-06-28 → 2018-08-13 (-319d) |  |  | 0d → 13d |  |
| 140 | Capacitaciones | 2019-06-28 → 2018-08-13 (-319d) | 2019-07-05 → 2018-08-20 (-319d) |  |  | 0d → 13d |  |
| 141 | Paso a producción | 2019-07-05 → 2018-08-20 (-319d) | 2019-07-11 → 2018-08-27 (-318d) |  |  | 0d → 13d |  |
| 142 | **Aprobar cotización** | 2019-07-11 → 2018-07-30 (-346d) | 2019-08-27 → 2018-09-12 (-349d) |  |  |  |  |
| 143 | Toma de requerimientos | 2019-07-11 → 2018-07-30 (-346d) | 2019-07-19 → 2018-08-06 (-347d) |  |  |  | 141 → 138, 141 |
| 144 | Informe del requerimiento | 2019-07-19 → 2018-08-06 (-347d) | 2019-07-24 → 2018-08-09 (-349d) |  |  |  |  |

| ID | Task | Start | Finish |
| --- | --- | --- | --- |
| 145 | Desarrollo del modulo | 2019-07-24 → 2018-08-09 (-349d) | 2019-08-06 → 2018-08-23 (-348d) |
| 146 | Testing (Certificación) | 2019-08-06 → 2018-08-23 (-348d) | 2019-08-13 → 2018-08-30 (-348d) |
| 147 | Capacitaciones | 2019-08-13 → 2018-08-30 (-348d) | 2019-08-21 → 2018-09-06 (-349d) |
| 148 | Paso a producción | 2019-08-21 → 2018-09-06 (-349d) | 2019-08-27 → 2018-09-12 (-349d) |

## Version 4 (saved 2016-08-12)

Note of the change: actualizacion trabajos en paralelo

Last finish 2018-09-12 → 2019-04-18 (+218d).

Changed:

| ID | Task | Start | Finish | Duration | Total float | Predecessors |
| --- | --- | --- | --- | --- | --- | --- |
| 66 | **Informe de Requerimiento y Propuesta de Solucion** |  | 2018-09-12 → 2019-04-18 (+218d) | 555.5d → 713.5d |  |  |
| 89 | **Reparacion** |  | 2017-10-20 → 2017-12-11 (+52d) | 155d → 190d |  |  |
| 92 | Desarrollo del modulo | 2017-04-12 → 2017-05-29 (+47d) | 2017-07-28 → 2017-09-14 (+48d) |  |  | 91 → 91, 88 |
| 93 | **Testing (Certificación)** | 2017-07-28 → 2017-09-14 (+48d) | 2017-09-14 → 2017-11-07 (+54d) |  | 237d → 0d |  |
| 94 | revision interna | 2017-07-28 → 2017-09-14 (+48d) | 2017-08-10 → 2017-09-29 (+50d) |  | 237d → 0d |  |
| 95 | revision usuario | 2017-08-10 → 2017-09-29 (+50d) | 2017-08-25 → 2017-10-16 (+52d) |  | 237d → 0d |  |
| 96 | pruebas abiertas | 2017-08-25 → 2017-10-16 (+52d) | 2017-09-14 → 2017-11-07 (+54d) |  | 237d → 0d |  |
| 97 | Capacitaciones | 2017-09-14 → 2017-11-07 (+54d) | 2017-09-29 → 2017-11-20 (+52d) |  | 237d → 0d |  |
| 98 | Paso a producción y Puesta en marcha | 2017-09-29 → 2017-11-20 (+52d) | 2017-10-20 → 2017-12-11 (+52d) |  | 237d → 0d |  |
| 99 | **Proceso Compras** | 2017-07-28 → 2017-09-14 (+48d) | 2017-09-25 → 2018-01-23 (+120d) | 41d → 91d | 0d → 4d |  |
| 100 | Toma de requerimientos | 2017-07-28 → 2017-09-14 (+48d) | 2017-08-03 → 2017-09-22 (+50d) |  | 0d → 50d |  |
| 101 | Informe del requerimiento | 2017-08-04 → 2017-09-22 (+49d) | 2017-08-10 → 2017-09-29 (+50d) |  | 0d → 50d |  |
| 102 | Desarrollo del modulo | 2017-08-10 → 2017-12-11 (+123d) | 2017-08-25 → 2017-12-26 (+123d) |  |  | 101 → 101, 98 |
| 103 | **Testing (Certificación)** | 2017-08-25 → 2017-12-26 (+123d) | 2017-09-08 → 2018-01-10 (+124d) |  | 256d → 4d |  |
| 104 | revision interna | 2017-08-25 → 2017-12-26 (+123d) | 2017-08-29 → 2017-12-28 (+121d) |  | 256d → 4d |  |
| 105 | revision usuario | 2017-08-29 → 2017-12-28 (+121d) | 2017-09-01 → 2018-01-03 (+124d) |  | 256d → 4d |  |
| 106 | pruebas abiertas | 2017-09-01 → 2018-01-03 (+124d) | 2017-09-08 → 2018-01-10 (+124d) |  | 256d → 4d |  |
| 107 | Capacitaciones | 2017-09-08 → 2018-01-10 (+124d) | 2017-09-15 → 2018-01-17 (+124d) |  | 256d → 4d |  |
| 108 | Paso a producción y Puesta en Marcha | 2017-09-15 → 2018-01-17 (+124d) | 2017-09-25 → 2018-01-23 (+120d) |  | 256d → 4d |  |
| 109 | **Simulaciones** | 2017-08-25 → 2017-12-26 (+123d) | 2018-07-03 → 2018-10-30 (+119d) |  |  |  |
| 110 | Toma de requerimientos | 2017-08-25 → 2017-12-26 (+123d) | 2017-09-14 → 2018-01-16 (+124d) |  |  |  |
| 111 | Informe del requerimiento | 2017-09-14 → 2018-01-16 (+124d) | 2017-09-29 → 2018-01-29 (+122d) |  |  |  |
| 112 | Modelamiento de Datos | 2017-09-29 → 2018-01-29 (+122d) | 2017-10-27 → 2018-02-23 (+119d) |  |  | 111 → 111, 108 |
| 113 | Ordenamiento de datos | 2017-10-27 → 2018-02-23 (+119d) | 2017-11-13 → 2018-03-08 (+115d) |  | 222d → 295d |  |
| 114 | Desarrollo del modulo | 2017-10-27 → 2018-02-23 (+119d) | 2018-04-11 → 2018-08-07 (+118d) |  |  |  |
| 115 | **Testing (Certificación)** | 2018-04-11 → 2018-08-07 (+118d) | 2018-05-23 → 2018-09-17 (+117d) |  | 52d → 0d |  |
| 116 | revision interna | 2018-04-11 → 2018-08-07 (+118d) | 2018-05-09 → 2018-09-04 (+118d) |  | 52d → 0d |  |
| 117 | revision usuario | 2018-05-09 → 2018-09-04 (+118d) | 2018-05-15 → 2018-09-10 (+118d) |  | 52d → 0d |  |
| 118 | pruebas abiertas | 2018-05-15 → 2018-09-10 (+118d) | 2018-05-23 → 2018-09-17 (+117d) |  | 52d → 0d |  |
| 119 | Capacitaciones | 2018-05-23 → 2018-09-17 (+117d) | 2018-06-06 → 2018-10-03 (+119d) |  | 52d → 0d |  |
| 120 | Paso a producción y Puesta en marcha | 2018-06-06 → 2018-10-03 (+119d) | 2018-07-03 → 2018-10-30 (+119d) |  | 52d → 0d |  |
| 121 | **Despacho** | 2018-04-11 → 2018-08-07 (+118d) | 2018-06-08 → 2018-12-18 (+193d) | 43d → 95d |  |  |
| 122 | Toma de requerimientos | 2018-04-11 → 2018-08-07 (+118d) | 2018-04-18 → 2018-08-14 (+118d) |  | 0d → 52d |  |
| 123 | Informe del requerimiento | 2018-04-18 → 2018-08-14 (+118d) | 2018-04-20 → 2018-08-17 (+119d) |  | 0d → 52d |  |
| 124 | Desarrollo del modulo | 2018-04-20 → 2018-10-30 (+193d) | 2018-05-18 → 2018-11-28 (+194d) |  |  | 123 → 123, 120 |
| 125 | Testing (Certificación) | 2018-05-18 → 2018-11-28 (+194d) | 2018-05-28 → 2018-12-05 (+191d) |  | 69d → 0d |  |
| 126 | Capacitaciones | 2018-05-28 → 2018-12-05 (+191d) | 2018-06-04 → 2018-12-12 (+191d) |  | 69d → 0d |  |
| 127 | Paso a producción y Puesta en Marcha | 2018-06-04 → 2018-12-12 (+191d) | 2018-06-08 → 2018-12-18 (+193d) |  | 69d → 0d |  |
| 128 | **Liberación de componente** | 2018-05-18 → 2018-11-28 (+194d) | 2018-07-04 → 2019-01-23 (+203d) | 33d → 40d |  |  |
| 129 | Toma de requerimientos | 2018-05-18 → 2018-11-28 (+194d) | 2018-05-28 → 2018-12-05 (+191d) |  | 0d → 7d |  |
| 130 | Informe del requerimiento | 2018-05-28 → 2018-12-05 (+191d) | 2018-05-31 → 2018-12-10 (+193d) |  | 0d → 7d |  |
| 131 | Desarrollo del modulo | 2018-05-31 → 2018-12-18 (+201d) | 2018-06-13 → 2019-01-03 (+204d) |  |  | 130 → 130, 127 |
| 132 | Testing (Certificación) | 2018-06-13 → 2019-01-03 (+204d) | 2018-06-20 → 2019-01-09 (+203d) |  | 51d → 0d |  |
| 133 | Capacitaciones | 2018-06-20 → 2019-01-09 (+203d) | 2018-06-28 → 2019-01-16 (+202d) |  | 51d → 0d |  |
| 134 | Paso a producción | 2018-06-28 → 2019-01-16 (+202d) | 2018-07-04 → 2019-01-23 (+203d) |  | 51d → 0d |  |
| 135 | **Cotizar trabajo** | 2018-06-13 → 2019-01-03 (+204d) | 2018-08-27 → 2019-03-15 (+200d) | 53d → 55d |  |  |
| 136 | Toma de requerimientos | 2018-06-13 → 2019-01-03 (+204d) | 2018-06-28 → 2019-01-16 (+202d) |  | 0d → 2d |  |
| 137 | Informe del requerimiento | 2018-06-28 → 2019-01-16 (+202d) | 2018-07-02 → 2019-01-21 (+203d) |  | 0d → 2d |  |
| 138 | Desarrollo del modulo | 2018-07-02 → 2019-01-23 (+205d) | 2018-07-30 → 2019-02-19 (+204d) |  |  | 137 → 137, 134 |
| 139 | Testing (Certificación) | 2018-07-30 → 2019-02-19 (+204d) | 2018-08-13 → 2019-03-04 (+203d) |  | 13d → 0d |  |
| 140 | Capacitaciones | 2018-08-13 → 2019-03-04 (+203d) | 2018-08-20 → 2019-03-11 (+203d) |  | 13d → 0d |  |
| 141 | Paso a producción | 2018-08-20 → 2019-03-11 (+203d) | 2018-08-27 → 2019-03-15 (+200d) |  | 13d → 0d |  |
| 142 | **Aprobar cotización** | 2018-07-30 → 2019-02-19 (+204d) | 2018-09-12 → 2019-04-18 (+218d) | 33d → 45d |  |  |
| 143 | Toma de requerimientos | 2018-07-30 → 2019-02-19 (+204d) | 2018-08-06 → 2019-02-25 (+203d) |  | 0d → 12d |  |
| 144 | Informe del requerimiento | 2018-08-06 → 2019-02-25 (+203d) | 2018-08-09 → 2019-02-28 (+203d) |  | 0d → 12d |  |
| 145 | Desarrollo del modulo | 2018-08-09 → 2019-03-18 (+221d) | 2018-08-23 → 2019-03-29 (+218d) |  |  | 144 → 144, 141 |
| 146 | Testing (Certificación) | 2018-08-23 → 2019-03-29 (+218d) | 2018-08-30 → 2019-04-05 (+218d) |  |  |  |
| 147 | Capacitaciones | 2018-08-30 → 2019-04-05 (+218d) | 2018-09-06 → 2019-04-11 (+217d) |  |  |  |
| 148 | Paso a producción | 2018-09-06 → 2019-04-11 (+217d) | 2018-09-12 → 2019-04-18 (+218d) |  |  |  |
