# Gantt Proyecto de Planificacion v2.1

How a schedule from MS Project changed from version to version. A marks actual dates.

## Version 1 (data date 2016-11-28, saved 2016-12-06, file Gantt Proyecto de Planificacion v2.1.mpp)

Note of the change: Actualizacion gantt del proyecto y resumen transmisiones

| ID | WBS | Task | Duration | Start | Finish | Predecessors | Complete | Total float | Constraint |
| --- | --- | --- | --- | --- | --- | --- | --- | --- | --- |
| 1 | 1 | **Implementación Hojas de Ruta** | 47d | 2016-11-02 A | 2017-01-04 |  | 22% | 233.94d |  |
| 2 |  | Tareas por areas (Evaluacion y Reparacion) | 2w | 2016-11-02 A | 2016-11-15 A |  | 100% |  | start no earlier than 2016-11-02 |
| 3 |  | Control Horas ( Aprobación) | 2w | 2016-11-22 A | 2016-12-05 | 2 | 53% | 256.06d | start no earlier than 2016-11-22 |
| 4 |  | Gestion Hojas de Ruta | 2w | 2016-11-22 A | 2016-12-05 | 3SS | 53% | 256.06d | start no earlier than 2016-11-22 |
| 5 | 1.4 | **implementacion Areas** | 47d | 2016-11-02 A | 2017-01-04 |  | 9% | 193.94d |  |
| 6 |  | Transmisiones | 2w | 2016-11-02 A | 2016-11-15 A |  | 100% |  | start no earlier than 2016-11-02 |
| 7 |  | Reductores | 2w | 2016-12-01 | 2016-12-15 | 6FS+10d |  | 0.62d | start no earlier than 2016-12-01 |
| 8 |  | Compresores | 2w | 2016-12-01 | 2016-12-15 | 7SS |  | 0.62d | start no earlier than 2016-12-01 |
| 9 |  | Bombas | 5.31w | 2016-11-10 | 2016-12-15 | 8FF |  | 0d | finish no earlier than 2016-12-15 |
| 10 |  | Equipos | 2w | 2016-12-12 | 2016-12-23 | 9FS-7d |  | 196.25d | start no earlier than 2016-12-12 |
| 11 |  | Cilindros | 2w | 2016-12-12 | 2016-12-23 | 10SS |  | 196.25d | start no earlier than 2016-12-12 |
| 12 |  | Motores | 2w | 2016-12-19 | 2016-12-30 | 11FS-7d |  | 193.94d | start no earlier than 2016-12-19 |
| 13 |  | Torno y Fresa | 2w | 2016-12-19 | 2016-12-30 | 12SS |  | 193.94d | start no earlier than 2016-12-19 |
| 14 |  | Soldadura y Barrenado | 2w | 2016-12-21 | 2017-01-04 | 13FS-7d |  | 193.94d |  |
| 15 |  | Reporte Traspaso desde Hojas de Ruta A Cargos Ot | 0d | 2017-01-04 | 2017-01-04 | 5 |  | 233.94d |  |
| 16 | 3 | **Temparios** | 144d | 2016-12-16 | 2017-06-26 |  |  | 0d |  |
| 17 | 3.1 | **Definicion estructuras** | 92d | 2016-12-16 | 2017-04-17 |  |  | 0d |  |
| 18 | 3.1.1 | **Tipo Componente / Marcas / Modelos** | 24d | 2016-12-16 | 2017-01-17 |  |  | 0d |  |
| 19 |  | Transmisiones y Ejes | 2w | 2016-12-16 | 2016-12-29 | 9 |  | 0d |  |
| 20 |  | Reductores Planetarios | 2w | 2016-12-16 | 2016-12-29 | 19SS |  | 0d |  |
| 21 |  | Reductores Paralelos | 2w | 2016-12-16 | 2016-12-29 | 20SS |  | 0d |  |
| 22 |  | Cilindros | 2w | 2016-12-26 | 2017-01-06 | 21SS+7d |  | 0d |  |
| 23 |  | Compresores | 2w | 2016-12-26 | 2017-01-06 | 22SS |  | 0d |  |
| 24 |  | Bombas | 2w | 2017-01-04 | 2017-01-17 | 23SS+7d |  | 0d |  |
| 25 |  | Motores | 2w | 2017-01-04 | 2017-01-17 | 24SS |  | 0d |  |
| 26 |  | Maestranza | 2w | 2017-01-04 | 2017-01-17 | 25SS |  | 0d |  |
| 27 |  | Listado de Productos por Marca y Modelo | 0d | 2017-01-17 | 2017-01-17 | 18 |  | 224d |  |
| 28 | 3.1.3 | **Desarrollo Sistema de Apoyo** | 24d | 2016-12-21 | 2017-01-23 |  |  | 20d |  |
| 29 |  | Analisis Opciones de Sistema | 2w | 2016-12-21 | 2017-01-04 | 26FS-20d |  | 20d |  |
| 30 |  | Actualizacion de Opciones | 14d | 2017-01-04 | 2017-01-23 | 29 |  | 20d |  |
| 31 | 3.1.4 | **Revision Tareas (nivel detalle, estandarizacion)** | 24d | 2017-01-17 | 2017-02-17 |  |  | 0d |  |
| 32 |  | Transmisones | 2w | 2017-01-17 | 2017-01-30 | 26 |  | 0d |  |
| 33 |  | Reductores | 2w | 2017-01-17 | 2017-01-30 | 32SS |  | 0d |  |
| 34 |  | Bombas | 2w | 2017-01-26 | 2017-02-08 | 33SS+7d |  | 0d |  |
| 35 |  | Cilindros | 2w | 2017-01-26 | 2017-02-08 | 34SS |  | 0d |  |
| 36 |  | Maestranza | 2w | 2017-02-03 | 2017-02-17 | 35SS+7d |  | 0d |  |
| 37 |  | Horas Cronologicas / H.H. | 2w | 2017-02-17 | 2017-03-02 | 36, 30 |  | 0d |  |
| 38 |  | Listado de Tareas Estándar | 0d | 2017-02-17 | 2017-02-17 | 31 |  | 200d |  |
| 39 | 3.1.7 | **Desarrollo de Temparios** | 34d | 2017-03-02 | 2017-04-17 |  |  | 0d |  |
| 40 |  | Transmisones | 1mo | 2017-03-02 | 2017-03-29 | 37 |  | 0d |  |
| 41 |  | Reductores | 1mo | 2017-03-02 | 2017-03-29 | 40SS |  | 156d |  |
| 42 |  | Bombas | 1mo | 2017-03-13 | 2017-04-06 | 41SS+7d |  | 156d |  |
| 43 |  | Cilindros | 1mo | 2017-03-13 | 2017-04-06 | 42SS |  | 156d |  |
| 44 |  | Maestranza | 1mo | 2017-03-21 | 2017-04-17 | 43SS+7d |  | 156d |  |
| 45 |  | Listado de Temparios | 0d | 2017-04-17 | 2017-04-17 | 39 |  | 156d |  |
| 46 |  | Desarrollo sistema de Apoyo | 30d | 2017-03-02 | 2017-04-11 | 40SS |  | 0d | start no earlier than 2017-02-20 |
| 47 |  | Rediseño E Integracion H. Ruta con Temparios | 15d | 2017-04-12 | 2017-05-03 | 46FS+1d |  | 104d |  |
| 48 |  | Implementacion Produccion | 2mo | 2017-05-03 | 2017-06-26 | 47, 14 |  | 104d |  |
| 49 |  | Reporte GenecionReporte Generacion Hojas de Ruta con Remparios | 0d | 2017-06-26 | 2017-06-26 | 16 |  | 104d |  |
| 50 | 5 | **Detalle de reparación** | 35d | 2017-04-11 | 2017-05-29 |  |  | 0d |  |
| 51 |  | Controles Seguimientos repuestos/materiales | 2w | 2017-04-11 | 2017-04-25 | 46 |  | 0d |  |
| 52 |  | Incorporar Temparios a Detalle de Reparacion | 2w | 2017-04-25 | 2017-05-09 | 51 |  | 0d |  |
| 53 |  | Generacion Hr desde Detalle de Reparacion | 2w | 2017-05-09 | 2017-05-23 | 52 |  | 0d |  |
| 54 |  | Desarrollo Sistema de Apoyo | 7w | 2017-04-11 | 2017-05-29 | 51SS |  | 125d |  |
| 55 |  | Reporte Modificaciones Detalle de Reparacion | 0d | 2017-06-26 | 2017-06-26 | 49 |  | 104d |  |
| 56 | 7 | **Programacion de Trabajos** | 50d | 2017-05-23 | 2017-07-28 |  |  | 0d |  |
| 57 | 7.1 | **Generacion Centros de Trabajo** | 10d | 2017-05-23 | 2017-06-05 |  |  | 0d |  |
| 58 |  | Revision Capacidades y Tipo de recursos | 2w | 2017-05-23 | 2017-06-05 | 53 |  | 0d |  |
| 59 |  | Desarrollo sistema de Apoyo | 2w | 2017-06-05 | 2017-06-16 | 58 |  | 0d |  |
| 60 |  | implementacion Areas | 1.5mo | 2017-06-16 | 2017-07-28 | 59 |  | 0d |  |
| 61 |  | Reporte programación Semanal de Trabajos | 0d | 2017-07-28 | 2017-07-28 | 56 |  | 80d |  |
| 62 | 9 | **Planificacion** | 80d | 2017-07-28 | 2017-11-20 |  |  | 0d |  |
| 63 |  | Simulaciones | 2mo | 2017-07-28 | 2017-09-22 | 60 |  | 0d |  |
| 64 |  | Reporte Criterios Simulacion y Muestra Simulaciones | 0d | 2017-09-22 | 2017-09-22 | 63 |  | 40d |  |
| 65 |  | Plan Maestro de Produccion | 2mo | 2017-09-22 | 2017-11-20 | 63 |  | 0d |  |
| 66 |  | Reporte Escenario de Taller y reportes asociados | 0d | 2017-11-20 | 2017-11-20 | 65 |  | 0d |  |
| 67 |  | Resumen Final de Proyecto | 0d | 2017-11-20 | 2017-11-20 | 62 |  | 0d |  |

## Version 2 (data date 2016-12-12, saved 2016-12-12, file Gantt Proyecto de Planificacion v2.2.mpp)

Note of the change: Actualizacion gantt del proyecto y resumen transmisiones

Last finish 2017-11-20 → 2017-12-22 (+32d). Complete tasks 2 → 4.

Added:

| ID | Task | Duration | Start | Finish | Predecessors | Resources |
| --- | --- | --- | --- | --- | --- | --- |
| 31 | Aplicación con opciones actualizadas, Según analisis | 0d | 2017-01-24 | 2017-01-24 | 28 |  |
| 41 | Definicion Centros de Trabajo | 34d | 2017-03-06 | 2017-04-18 | 42SS | Planificación |
| 47 | Motores | 1mo | 2017-03-23 | 2017-04-18 | 46SS | Adrian Toro; Cesar Toro [50%] |
| 50 | Aplicación para Administracion de Temparios | 0d | 2017-04-18 | 2017-04-18 | 49 |  |
| 52 | Aplicación HR incorporando Temparios | 0d | 2017-05-09 | 2017-05-09 | 51 |  |
| 60 | Aplicacion administracion DR incorporando Temparios | 0d | 2017-06-26 | 2017-06-26 | 59 |  |
| 66 | Aplicación Administracion Centros de Trabajo | 0d | 2017-07-20 | 2017-07-20 | 65 |  |
| 74 | Aplicación Admnistracion plan de produccion | 0d | 2017-12-22 | 2017-12-22 | 70, 72 |  |

Changed:

| ID | Task | Start | Finish | Duration | Complete | Total float | Predecessors | Other |
| --- | --- | --- | --- | --- | --- | --- | --- | --- |
| 1 | **Implementación Hojas de Ruta** |  |  |  | 22% → 57% | 233.94d → 258.44d |  | baseline start none → 2016-11-02; baseline finish none → 2017-01-04 |
| 2 | Tareas por areas (Evaluacion y Reparacion) |  |  |  |  |  |  | baseline start none → 2016-11-02; baseline finish none → 2016-11-15 |
| 3 | Control Horas ( Aprobación) |  | 2016-12-05 A |  | 53% → 100% | 256.06d → none |  | baseline start none → 2016-11-22; baseline finish none → 2016-12-05 |
| 4 | Gestion Hojas de Ruta |  | 2016-12-05 → 2016-12-09 A (+4d) | 2w → 2.76w | 53% → 100% | 256.06d → none |  | constraint start no earlier than 2016-11-22 → finish no earlier than 2016-12-09; baseline start none → 2016-11-22; baseline finish none → 2016-12-05 |
| 5 | **implementacion Areas** |  |  |  | 9% → 44% | 193.94d → 258.44d |  | baseline start none → 2016-11-02; baseline finish none → 2017-01-04 |
| 6 | Transmisiones |  |  |  |  |  |  | baseline start none → 2016-11-02; baseline finish none → 2016-11-15 |
| 7 | Reductores | 2016-12-01 A |  |  | 0% → 74% | 0.62d → 273.12d |  | baseline start none → 2016-12-01; baseline finish none → 2016-12-15 |
| 8 | Compresores | 2016-12-01 → 2016-12-05 A (+4d) | 2016-12-15 → 2016-12-19 (+4d) |  | 0% → 53% | 0.62d → 0d |  | constraint start no earlier than 2016-12-01 → start no earlier than 2016-12-05; baseline start none → 2016-12-01; baseline finish none → 2016-12-15 |
| 9 | Bombas | 2016-11-10 → 2016-11-11 A (+1d) | 2016-12-15 → 2016-12-19 (+4d) |  | 0% → 82% |  |  | baseline start none → 2016-11-10; baseline finish none → 2016-12-15 |
| 10 | Equipos | 2016-12-12 A |  |  | 0% → 11% | 196.25d → 266.75d |  | resources Eduado Pino [20%]; Luis Godoy [50%] → Eduado Pino [10%]; Luis Godoy [50%]; baseline start none → 2016-12-12; baseline finish none → 2016-12-23 |
| 11 | Cilindros | 2016-12-12 A |  |  | 0% → 11% | 196.25d → 220.75d |  | resources Carlos Belmar; Eduado Pino [40%] → Carlos Belmar; Eduado Pino [30%]; baseline start none → 2016-12-12; baseline finish none → 2016-12-23 |
| 12 | Motores |  |  |  |  | 193.94d → 218.44d |  | baseline start none → 2016-12-19; baseline finish none → 2016-12-30 |
| 13 | Torno y Fresa |  |  |  |  | 193.94d → 218.44d |  | resources Eduado Pino [40%]; Juan Carlos Toro → Eduado Pino [30%]; Juan Carlos Toro; baseline start none → 2016-12-19; baseline finish none → 2016-12-30 |
| 14 | Soldadura y Barrenado |  |  |  |  | 193.94d → 218.44d |  | resources Eduado Pino [50%]; Francisco Gomez → Eduado Pino [30%]; Francisco Gomez; baseline start none → 2016-12-21; baseline finish none → 2017-01-04 |
| 15 | Reporte Traspaso desde Hojas de Ruta A Cargos Ot |  |  |  |  | 233.94d → 258.44d |  | baseline start none → 2017-01-04; baseline finish none → 2017-01-04 |
| 16 | **Temparios** | 2016-12-16 → 2016-12-19 (+3d) | 2017-06-26 → 2017-06-30 (+4d) | 144d → 146d |  |  |  | baseline start none → 2016-12-16; baseline finish none → 2017-06-29 |
| 17 | **Definicion estructuras** | 2016-12-16 → 2016-12-19 (+3d) | 2017-04-17 → 2017-04-18 (+1d) |  |  |  |  | baseline start none → 2016-12-16; baseline finish none → 2017-04-17 |
| 18 | **Tipo Componente / Marcas / Modelos** | 2016-12-16 → 2016-12-19 (+3d) | 2017-01-17 → 2017-01-18 (+1d) |  |  |  |  | baseline start none → 2016-12-16; baseline finish none → 2017-01-17 |
| 19 | Transmisiones y Ejes | 2016-12-16 → 2016-12-19 (+3d) | 2016-12-29 → 2016-12-30 (+1d) |  |  |  |  | baseline start none → 2016-12-16; baseline finish none → 2016-12-29 |
| 20 | Reductores Planetarios | 2016-12-16 → 2016-12-19 (+3d) | 2016-12-29 → 2016-12-30 (+1d) |  |  |  |  | baseline start none → 2016-12-16; baseline finish none → 2016-12-29 |
| 21 | Reductores Paralelos | 2016-12-16 → 2016-12-19 (+3d) | 2016-12-29 → 2016-12-30 (+1d) |  |  |  |  | baseline start none → 2016-12-16; baseline finish none → 2016-12-29 |
| 22 | Cilindros | 2016-12-26 → 2016-12-28 (+2d) | 2017-01-06 → 2017-01-10 (+4d) |  |  |  |  | baseline start none → 2016-12-26; baseline finish none → 2017-01-06 |
| 23 | Compresores | 2016-12-26 → 2016-12-28 (+2d) | 2017-01-06 → 2017-01-10 (+4d) |  |  |  |  | baseline start none → 2016-12-26; baseline finish none → 2017-01-06 |
| 24 | Bombas | 2017-01-04 → 2017-01-05 (+1d) | 2017-01-17 → 2017-01-18 (+1d) |  |  |  |  | baseline start none → 2017-01-04; baseline finish none → 2017-01-17 |
| 25 | Motores | 2017-01-04 → 2017-01-05 (+1d) | 2017-01-17 → 2017-01-18 (+1d) |  |  |  |  | baseline start none → 2017-01-04; baseline finish none → 2017-01-17 |
| 26 | Maestranza | 2017-01-04 → 2017-01-05 (+1d) | 2017-01-17 → 2017-01-18 (+1d) |  |  |  |  | baseline start none → 2017-01-04; baseline finish none → 2017-01-17 |
| 27 | Listado de Productos por Marca y Modelo | 2017-01-17 → 2017-01-18 (+1d) | 2017-01-17 → 2017-01-18 (+1d) |  |  | 224d → 247d |  | baseline start none → 2017-01-17; baseline finish none → 2017-01-17 |
| 28 | **Desarrollo Sistema de Apoyo** | 2016-12-21 → 2016-12-23 (+2d) | 2017-01-23 → 2017-01-24 (+1d) |  |  |  |  | baseline start none → 2016-12-21; baseline finish none → 2017-01-23 |
| 29 | Analisis Opciones de Sistema | 2016-12-21 → 2016-12-23 (+2d) | 2017-01-04 → 2017-01-05 (+1d) |  |  |  |  | baseline start none → 2016-12-21; baseline finish none → 2017-01-04 |
| 30 | Actualizacion de Opciones | 2017-01-04 → 2017-01-05 (+1d) | 2017-01-23 → 2017-01-24 (+1d) |  |  |  |  | baseline start none → 2017-01-04; baseline finish none → 2017-01-23 |
| 32 | **Revision Tareas (nivel detalle, estandarizacion)** | 2017-01-17 → 2017-01-19 (+2d) | 2017-02-17 → 2017-02-20 (+3d) |  |  |  |  | baseline start none → 2017-01-17; baseline finish none → 2017-02-17 |
| 33 | Transmisones | 2017-01-17 → 2017-01-19 (+2d) | 2017-01-30 → 2017-02-01 (+2d) |  |  |  |  | baseline start none → 2017-01-17; baseline finish none → 2017-01-30 |
| 34 | Reductores | 2017-01-17 → 2017-01-19 (+2d) | 2017-01-30 → 2017-02-01 (+2d) |  |  |  |  | baseline start none → 2017-01-17; baseline finish none → 2017-01-30 |
| 35 | Bombas | 2017-01-26 → 2017-01-27 (+1d) | 2017-02-08 → 2017-02-09 (+1d) |  |  |  |  | baseline start none → 2017-01-26; baseline finish none → 2017-02-08 |
| 36 | Cilindros | 2017-01-26 → 2017-01-27 (+1d) | 2017-02-08 → 2017-02-09 (+1d) |  |  |  |  | baseline start none → 2017-01-26; baseline finish none → 2017-02-08 |
| 37 | Maestranza | 2017-02-03 → 2017-02-07 (+4d) | 2017-02-17 → 2017-02-20 (+3d) |  |  |  |  | baseline start none → 2017-02-03; baseline finish none → 2017-02-17 |
| 38 | Horas Cronologicas / H.H. | 2017-02-17 → 2017-02-20 (+3d) | 2017-03-02 → 2017-03-03 (+1d) |  |  |  |  | baseline start none → 2017-02-17; baseline finish none → 2017-03-02 |
| 39 | Listado de Tareas Estándar | 2017-02-17 → 2017-02-20 (+3d) | 2017-02-17 → 2017-02-20 (+3d) |  |  | 200d → 223d |  | baseline start none → 2017-02-17; baseline finish none → 2017-02-17 |
| 40 | **Desarrollo de Temparios** | 2017-03-02 → 2017-03-06 (+4d) | 2017-04-17 → 2017-04-18 (+1d) |  |  |  |  | baseline start none → 2017-03-02; baseline finish none → 2017-04-17 |
| 42 | Transmisones | 2017-03-02 → 2017-03-06 (+4d) | 2017-03-29 → 2017-03-30 (+1d) |  |  |  |  | resources Jaime Burdiles → Jaime Burdiles; Cesar Toro [50%]; baseline start none → 2017-03-02; baseline finish none → 2017-03-29 |
| 43 | Reductores | 2017-03-02 → 2017-03-06 (+4d) | 2017-03-29 → 2017-03-30 (+1d) |  |  | 156d → 179d |  | resources Aldo Recabal → Aldo Recabal; Francisco Vargas; baseline start none → 2017-03-02; baseline finish none → 2017-03-29 |
| 44 | Bombas | 2017-03-13 → 2017-03-14 (+1d) | 2017-04-06 → 2017-04-10 (+4d) |  |  | 156d → 179d |  | resources Daniel Gutierrez → Daniel Gutierrez; Luis Godoy [50%]; baseline start none → 2017-03-13; baseline finish none → 2017-04-06 |
| 45 | Cilindros | 2017-03-13 → 2017-03-14 (+1d) | 2017-04-06 → 2017-04-10 (+4d) |  |  | 156d → 179d |  | resources Reinaldo Salinas → Reinaldo Salinas; Carlos Belmar; baseline start none → 2017-03-13; baseline finish none → 2017-04-06 |
| 46 | Maestranza | 2017-03-21 → 2017-03-23 (+2d) | 2017-04-17 → 2017-04-18 (+1d) |  |  | 156d → 179d |  | resources Danilo San martin → Danilo San martin; Jc toro; Francisco Gomez; Luis Godoy [50%]; baseline start none → 2017-03-21; baseline finish none → 2017-04-17 |
| 48 | Listado de Temparios | 2017-04-17 → 2017-04-18 (+1d) | 2017-04-17 → 2017-04-18 (+1d) |  |  | 156d → 179d |  | baseline start none → 2017-04-17; baseline finish none → 2017-04-17 |
| 49 | Desarrollo sistema de Apoyo | 2017-03-02 → 2017-03-06 (+4d) | 2017-04-11 → 2017-04-18 (+7d) | 30d → 33d |  |  |  | baseline start none → 2017-03-02; baseline finish none → 2017-04-14 |
| 51 | Rediseño E Integracion H. Ruta con Temparios | 2017-04-12 → 2017-04-19 (+7d) | 2017-05-03 → 2017-05-09 (+6d) | 15d → 14d |  | 104d → 0d |  | baseline start none → 2017-04-17; baseline finish none → 2017-05-05 |
| 53 | Implementacion Produccion | 2017-05-03 → 2017-05-09 (+6d) | 2017-06-26 → 2017-06-30 (+4d) |  |  | 104d → 125d |  | baseline start none → 2017-05-05; baseline finish none → 2017-06-29 |
| 54 | Reporte Generacion Hojas de Ruta con Temparios | 2017-06-26 → 2017-06-30 (+4d) | 2017-06-26 → 2017-06-30 (+4d) |  |  | 104d → 125d |  | was named Reporte GenecionReporte Generacion Hojas de Ruta con Remparios; baseline start none → 2017-06-29; baseline finish none → 2017-06-29 |
| 55 | **Detalle de reparación** | 2017-04-11 → 2017-05-09 (+28d) | 2017-05-29 → 2017-06-26 (+28d) | 35d → 36d |  |  |  | baseline start none → 2017-05-05; baseline finish none → 2017-06-22 |
| 56 | Controles Seguimientos repuestos/materiales | 2017-04-11 → 2017-05-09 (+28d) | 2017-04-25 → 2017-05-22 (+27d) |  |  |  | 49 → 49, 51 | baseline start none → 2017-05-05; baseline finish none → 2017-05-19 |
| 57 | Incorporar Temparios a Detalle de Reparacion | 2017-04-25 → 2017-05-22 (+27d) | 2017-05-09 → 2017-06-02 (+24d) |  |  |  |  | baseline start none → 2017-05-19; baseline finish none → 2017-06-01 |
| 58 | Generacion HR desde Detalle de Reparacion | 2017-05-09 → 2017-06-05 (+27d) | 2017-05-23 → 2017-06-16 (+24d) |  |  |  |  | was named Generacion Hr desde Detalle de Reparacion; baseline start none → 2017-06-01; baseline finish none → 2017-06-14 |
| 59 | Desarrollo Sistema de Apoyo | 2017-04-11 → 2017-05-10 (+29d) | 2017-05-29 → 2017-06-26 (+28d) |  |  | 125d → 129d | 56SS → 56SS+1d | baseline start none → 2017-05-08; baseline finish none → 2017-06-22 |
| 61 | Reporte Modificaciones Detalle de Reparacion | 2017-06-26 → 2017-06-30 (+4d) | 2017-06-26 → 2017-06-30 (+4d) |  |  | 104d → 125d |  | baseline start none → 2017-06-29; baseline finish none → 2017-06-29 |
| 62 | **Programacion de Trabajos** | 2017-05-23 → 2017-06-16 (+24d) | 2017-07-28 → 2017-08-31 (+34d) | 50d → 55d |  |  |  | baseline start none → 2017-06-15; baseline finish none → 2017-08-29 |
| 63 | **Generacion Centros de Trabajo** | 2017-05-23 → 2017-06-16 (+24d) | 2017-06-05 → 2017-06-30 (+25d) |  |  |  |  | baseline start none → 2017-06-15; baseline finish none → 2017-06-29 |
| 64 | Revision Capacidades y Tipo de recursos | 2017-05-23 → 2017-06-16 (+24d) | 2017-06-05 → 2017-06-30 (+25d) |  |  |  |  | baseline start none → 2017-06-15; baseline finish none → 2017-06-29 |
| 65 | Desarrollo sistema de Apoyo | 2017-06-05 → 2017-06-30 (+25d) | 2017-06-16 → 2017-07-20 (+34d) | 2w → 3w |  |  |  | baseline start none → 2017-06-29; baseline finish none → 2017-07-19 |
| 67 | implementacion Areas | 2017-06-16 → 2017-07-20 (+34d) | 2017-07-28 → 2017-08-31 (+34d) |  |  |  |  | baseline start none → 2017-07-19; baseline finish none → 2017-08-29 |
| 68 | Reporte programación Semanal de Trabajos | 2017-07-28 → 2017-08-31 (+34d) | 2017-07-28 → 2017-08-31 (+34d) |  |  |  |  | baseline start none → 2017-08-29; baseline finish none → 2017-08-29 |
| 69 | **Planificacion** | 2017-07-28 → 2017-08-31 (+34d) | 2017-11-20 → 2017-12-22 (+32d) |  |  |  |  | baseline start none → 2017-08-29; baseline finish none → 2017-12-21 |
| 70 | Simulaciones | 2017-07-28 → 2017-08-31 (+34d) | 2017-09-22 → 2017-10-26 (+34d) |  |  |  |  | baseline start none → 2017-08-29; baseline finish none → 2017-10-25 |
| 71 | Reporte Criterios Simulacion y Muestra Simulaciones | 2017-09-22 → 2017-10-26 (+34d) | 2017-09-22 → 2017-10-26 (+34d) |  |  |  |  | baseline start none → 2017-10-25; baseline finish none → 2017-10-25 |
| 72 | Plan Maestro de Produccion | 2017-09-22 → 2017-10-26 (+34d) | 2017-11-20 → 2017-12-22 (+32d) |  |  |  |  | baseline start none → 2017-10-25; baseline finish none → 2017-12-21 |
| 73 | Reporte Escenario de Taller y reportes asociados | 2017-11-20 → 2017-12-22 (+32d) | 2017-11-20 → 2017-12-22 (+32d) |  |  |  |  | baseline start none → 2017-12-21; baseline finish none → 2017-12-21 |
| 75 | Resumen Final de Proyecto | 2017-11-20 → 2017-12-22 (+32d) | 2017-11-20 → 2017-12-22 (+32d) |  |  |  |  | baseline start none → 2017-12-21; baseline finish none → 2017-12-21 |
