# ARMADO COMPRESOR ES-8

How a schedule from MS Project changed from version to version. A marks actual dates.

## Version 1 (saved 2016-07-28)

Note of the change: Actualizacion reparacion R18000

| ID | WBS | Task | Duration | Start | Finish | Predecessors | Total float | Constraint |
| --- | --- | --- | --- | --- | --- | --- | --- | --- |
| 1 | 1 | **Activar Subcontratos y compras** | 10d | 2016-07-28 07:45 | 2016-08-10 11:15 |  | 0d |  |
| 2 |  | Preparar subcontrato | 1d | 2016-07-28 07:45 | 2016-07-28 16:30 |  | 16.69d | start no earlier than 2016-07-28 07:45 |
| 3 |  | Comprar repuestos | 10d | 2016-07-28 07:45 | 2016-08-10 11:15 |  | 0d |  |
| 4 | 2 | **Limpieza y mantenimiento** | 3.38d | 2016-08-10 11:15 | 2016-08-16 13:30 |  | 0d |  |
| 5 |  | LIMPIEZA A EQUIPO COMPRESOR | 1h | 2016-08-10 11:15 | 2016-08-10 12:15 | 3 | 0d |  |
| 6 |  | LIMPIEZA A ENFRIADORES CON DESMONTAJE | 3h | 2016-08-10 12:15 | 2016-08-10 16:00 | 5 | 0d |  |
| 7 |  | MANTENIMIENTO A VALVULA DE ADMISION CON CAMBIO DE KIT | 1h | 2016-08-10 16:00 | 2016-08-10 17:00 | 6 | 0d |  |
| 8 |  | MANTENIMIENTO A VALVULA DE MINIMA PRESION CON CAMBIO DE KIT | 1h | 2016-08-11 07:45 | 2016-08-11 08:45 | 7 | 0d |  |
| 9 |  | MANTENIMIENTO A VALVULA TERMOSTATICA CON CAMBIO DE KIT | 1h | 2016-08-11 08:45 | 2016-08-11 09:45 | 8 | 0d |  |
| 10 |  | MANTENIMIENTO A VALVULA REGULADORA DE PRESION CON CAMBIO DE KIT | 1h | 2016-08-11 09:45 | 2016-08-11 10:45 | 9 | 0d |  |
| 11 |  | MANTENIMIENTO A SISTEMA DE ACOPLAMIENTO CON CAMBIO DE ELASTOMERO | 2h | 2016-08-11 10:45 | 2016-08-11 13:30 | 10 | 0d |  |
| 12 |  | MANTENIMIENTO A TABLERO DE CONTROL | 1h | 2016-08-11 13:30 | 2016-08-11 14:30 | 11 | 0d |  |
| 13 |  | MANTENIMIENTO A CONTACTORES | 2h | 2016-08-11 14:30 | 2016-08-11 16:30 | 12 | 0d |  |
| 14 |  | MANTENIMIENTO A VALVULAS SOLENOIDES CON CAMBIO DE KIT | 2h | 2016-08-11 16:30 | 2016-08-12 09:15 | 13 | 0d |  |
| 15 |  | MANTENIMIENTO A MOTOR CON CAMBIO DE RODAMIENTOS Y REFORZAMIENTO DE BOBINADO | 12h | 2016-08-12 09:15 | 2016-08-16 13:30 | 14 | 0d |  |
| 16 | 3 | **Armado** | 1.97d | 2016-08-16 13:30 | 2016-08-18 11:30 |  | 0d |  |
| 17 |  | MONTAJE DE MOTOR | 2h | 2016-08-16 13:30 | 2016-08-16 15:30 | 15 | 0d |  |
| 18 |  | REEMPLAZO DE FILTRO DE AIRE | 0.25h | 2016-08-16 15:30 | 2016-08-16 15:45 | 17 | 0d |  |
| 19 |  | REEMPLAZO DE FILTRO DE ACEITE | 0.25h | 2016-08-16 15:45 | 2016-08-16 16:00 | 18 | 0d |  |
| 20 |  | REEMPLAZO DE ELEMENTO SEPARADOR Y MANTENIMIENTO LINEA DE BARRIDO | 1h | 2016-08-16 16:00 | 2016-08-16 17:00 | 19 | 0d |  |
| 21 |  | REEMPLAZO DE ACEITE | 1h | 2016-08-17 07:45 | 2016-08-17 08:45 | 20 | 0d |  |
| 22 |  | REEMPLAZO DE CONTACTORES | 0.5h | 2016-08-17 08:45 | 2016-08-17 09:15 | 21 | 0d |  |
| 23 |  | REEMPLAZO DE RELE DE PROTECCION | 0.25h | 2016-08-17 09:15 | 2016-08-17 09:30 | 22 | 0d |  |
| 24 |  | REEMPLAZO DE MONITOR DE FASE CON BASE | 0.5h | 2016-08-17 09:30 | 2016-08-17 10:00 | 23 | 0d |  |
| 25 |  | REEMPLAZO DE DUCTOS SEÑAL NEUMATICA | 2h | 2016-08-17 10:00 | 2016-08-17 12:00 | 24 | 0d |  |
| 26 |  | REEMPLAZO DE VALVULAS SOLENOIDES | 1h | 2016-08-17 12:00 | 2016-08-17 13:45 | 25 | 0d |  |
| 27 |  | REEMPLAZO DE UNIDAD COMPRESORA | 4h | 2016-08-17 13:45 | 2016-08-18 08:30 | 26 | 0d |  |
| 28 |  | REEMPLAZO DE CONTROLADOR | 1h | 2016-08-18 08:30 | 2016-08-18 09:30 | 27 | 0d |  |
| 29 |  | REEMPLAZO DE TARJETA I/O | 2h | 2016-08-18 09:30 | 2016-08-18 11:30 | 28 | 0d |  |
| 30 | 4 | **Prueba** | 0.58d | 2016-08-18 11:30 | 2016-08-18 16:55 |  | 0d |  |
| 31 |  | Conectar Equipo compresor | 20min | 2016-08-18 11:30 | 2016-08-18 11:50 | 29 | 0d |  |
| 32 |  | Prueba de funcionamiento | 4h | 2016-08-18 11:50 | 2016-08-18 16:35 | 31 | 0d |  |
| 33 |  | Desconectar Compresor y Retirar Sensores | 20min | 2016-08-18 16:35 | 2016-08-18 16:55 | 32 | 0d |  |
| 34 | 5 | **Informe** | 0.25d | 2016-08-18 11:30 | 2016-08-18 14:15 |  | 0.33d |  |
| 35 |  | Emitir informe final | 2h | 2016-08-18 11:30 | 2016-08-18 14:15 | 29 | 0.33d |  |
| 36 | 6 | **Pintado y embalaje** | 1.44d | 2016-07-28 07:45 | 2016-07-29 10:45 |  | 14.49d |  |
| 37 |  | Pintado equipo y Secado | 8h | 2016-07-28 07:45 | 2016-07-28 16:30 |  | 16.49d |  |
| 38 |  | Pintar atril | 1h | 2016-07-28 16:30 | 2016-07-29 08:15 | 37 | 16.49d |  |
| 39 |  | Montar equipo en atril | 1h | 2016-07-29 08:15 | 2016-07-29 09:15 | 38 | 16.49d |  |
| 40 |  | Plastificar | 1h | 2016-07-29 09:15 | 2016-07-29 10:15 | 39 | 16.49d |  |
| 41 |  | Sacar fotografias de despacho | 0.5h | 2016-07-29 10:15 | 2016-07-29 10:45 | 40 | 16.49d |  |

## Version 2 (saved 2016-07-28)

Note of the change: actualización es-8

Last finish 2016-08-18 → 2016-08-04 (-14d).

Changed:

| ID | Task | Start | Finish | Duration |
| --- | --- | --- | --- | --- |
| 1 | **Activar Subcontratos y compras** |  | 2016-08-10 11:15 → 2016-07-28 16:30 (-13d) | 10d → 1d |
| 3 | Comprar repuestos |  | 2016-08-10 11:15 → 2016-07-28 07:45 (-13d) | 10d → 0d |
| 4 | **Limpieza y mantenimiento** | 2016-08-10 11:15 → 2016-07-28 07:45 (-13d) | 2016-08-16 13:30 → 2016-08-01 15:30 (-15d) | 3.38d → 3d |
| 5 | LIMPIEZA A EQUIPO COMPRESOR | 2016-08-10 11:15 → 2016-07-28 07:45 (-13d) | 2016-08-10 12:15 → 2016-07-28 08:45 (-13d) |  |
| 6 | LIMPIEZA A ENFRIADORES CON DESMONTAJE | 2016-08-10 12:15 → 2016-07-28 08:45 (-13d) | 2016-08-10 16:00 → 2016-07-28 10:15 (-13d) | 3h → 1.5h |
| 7 | MANTENIMIENTO A VALVULA DE ADMISION CON CAMBIO DE KIT | 2016-08-10 16:00 → 2016-07-28 10:15 (-13d) | 2016-08-10 17:00 → 2016-07-28 11:15 (-13d) |  |
| 8 | MANTENIMIENTO A VALVULA DE MINIMA PRESION CON CAMBIO DE KIT | 2016-08-11 07:45 → 2016-07-28 11:15 (-14d) | 2016-08-11 08:45 → 2016-07-28 12:15 (-14d) |  |
| 9 | MANTENIMIENTO A VALVULA TERMOSTATICA CON CAMBIO DE KIT | 2016-08-11 08:45 → 2016-07-28 12:15 (-14d) | 2016-08-11 09:45 → 2016-07-28 14:00 (-14d) |  |
| 10 | MANTENIMIENTO A VALVULA REGULADORA DE PRESION CON CAMBIO DE KIT | 2016-08-11 09:45 → 2016-07-28 14:00 (-14d) | 2016-08-11 10:45 → 2016-07-28 15:00 (-14d) |  |
| 11 | MANTENIMIENTO A SISTEMA DE ACOPLAMIENTO CON CAMBIO DE ELASTOMERO | 2016-08-11 10:45 → 2016-07-28 15:00 (-14d) | 2016-08-11 13:30 → 2016-07-28 16:30 (-14d) | 2h → 1.5h |
| 12 | MANTENIMIENTO A TABLERO DE CONTROL | 2016-08-11 13:30 → 2016-07-28 16:30 (-14d) | 2016-08-11 14:30 → 2016-07-29 08:15 (-13d) |  |
| 13 | MANTENIMIENTO A CONTACTORES | 2016-08-11 14:30 → 2016-07-29 08:15 (-13d) | 2016-08-11 16:30 → 2016-07-29 09:15 (-13d) | 2h → 1h |
| 14 | MANTENIMIENTO A VALVULAS SOLENOIDES CON CAMBIO DE KIT | 2016-08-11 16:30 → 2016-07-29 09:15 (-13d) | 2016-08-12 09:15 → 2016-07-29 11:15 (-14d) |  |
| 15 | MANTENIMIENTO A MOTOR CON CAMBIO DE RODAMIENTOS Y REFORZAMIENTO DE BOBINADO | 2016-08-12 09:15 → 2016-07-29 11:15 (-14d) | 2016-08-16 13:30 → 2016-08-01 15:30 (-15d) |  |
| 16 | **Armado** | 2016-08-16 13:30 → 2016-08-01 15:30 (-15d) | 2016-08-18 11:30 → 2016-08-03 14:15 (-15d) |  |
| 17 | MONTAJE DE MOTOR | 2016-08-16 13:30 → 2016-08-01 15:30 (-15d) | 2016-08-16 15:30 → 2016-08-02 08:15 (-14d) |  |
| 18 | REEMPLAZO DE FILTRO DE AIRE | 2016-08-16 15:30 → 2016-08-02 08:15 (-14d) | 2016-08-16 15:45 → 2016-08-02 08:30 (-14d) |  |
| 19 | REEMPLAZO DE FILTRO DE ACEITE | 2016-08-16 15:45 → 2016-08-02 08:30 (-14d) | 2016-08-16 16:00 → 2016-08-02 08:45 (-14d) |  |
| 20 | REEMPLAZO DE ELEMENTO SEPARADOR Y MANTENIMIENTO LINEA DE BARRIDO | 2016-08-16 16:00 → 2016-08-02 08:45 (-14d) | 2016-08-16 17:00 → 2016-08-02 09:45 (-14d) |  |
| 21 | REEMPLAZO DE ACEITE | 2016-08-17 07:45 → 2016-08-02 09:45 (-15d) | 2016-08-17 08:45 → 2016-08-02 10:45 (-15d) |  |
| 22 | REEMPLAZO DE CONTACTORES | 2016-08-17 08:45 → 2016-08-02 10:45 (-15d) | 2016-08-17 09:15 → 2016-08-02 11:15 (-15d) |  |
| 23 | REEMPLAZO DE RELE DE PROTECCION | 2016-08-17 09:15 → 2016-08-02 11:15 (-15d) | 2016-08-17 09:30 → 2016-08-02 11:30 (-15d) |  |
| 24 | REEMPLAZO DE MONITOR DE FASE CON BASE | 2016-08-17 09:30 → 2016-08-02 11:30 (-15d) | 2016-08-17 10:00 → 2016-08-02 12:00 (-15d) |  |
| 25 | REEMPLAZO DE DUCTOS SEÑAL NEUMATICA | 2016-08-17 10:00 → 2016-08-02 12:00 (-15d) | 2016-08-17 12:00 → 2016-08-02 14:45 (-15d) |  |
| 26 | REEMPLAZO DE VALVULAS SOLENOIDES | 2016-08-17 12:00 → 2016-08-02 14:45 (-15d) | 2016-08-17 13:45 → 2016-08-02 15:45 (-15d) |  |
| 27 | REEMPLAZO DE UNIDAD COMPRESORA | 2016-08-17 13:45 → 2016-08-02 15:45 (-15d) | 2016-08-18 08:30 → 2016-08-03 10:30 (-15d) |  |
| 28 | REEMPLAZO DE CONTROLADOR | 2016-08-18 08:30 → 2016-08-03 10:30 (-15d) | 2016-08-18 09:30 → 2016-08-03 11:30 (-15d) |  |
| 29 | REEMPLAZO DE TARJETA I/O | 2016-08-18 09:30 → 2016-08-03 11:30 (-15d) | 2016-08-18 11:30 → 2016-08-03 14:15 (-15d) |  |
| 30 | **Prueba** | 2016-08-18 11:30 → 2016-08-03 14:15 (-15d) | 2016-08-18 16:55 → 2016-08-04 09:40 (-14d) |  |
| 31 | Conectar Equipo compresor | 2016-08-18 11:30 → 2016-08-03 14:15 (-15d) | 2016-08-18 11:50 → 2016-08-03 14:35 (-15d) |  |
| 32 | Prueba de funcionamiento | 2016-08-18 11:50 → 2016-08-03 14:35 (-15d) | 2016-08-18 16:35 → 2016-08-04 09:20 (-14d) |  |
| 33 | Desconectar Compresor y Retirar Sensores | 2016-08-18 16:35 → 2016-08-04 09:20 (-14d) | 2016-08-18 16:55 → 2016-08-04 09:40 (-14d) |  |
| 34 | **Informe** | 2016-08-18 11:30 → 2016-08-03 14:15 (-15d) | 2016-08-18 14:15 → 2016-08-03 16:15 (-15d) |  |
| 35 | Emitir informe final | 2016-08-18 11:30 → 2016-08-03 14:15 (-15d) | 2016-08-18 14:15 → 2016-08-03 16:15 (-15d) |  |
