# GFT 110 Armado

How a schedule from MS Project changed from version to version. A marks actual dates.

## Version 1 (saved 2016-08-26)

Note of the change: gANTT GFT 110 T3 ARMADO

| ID | WBS | Task | Duration | Start | Finish | Predecessors | Total float |
| --- | --- | --- | --- | --- | --- | --- | --- |
| 1 |  | lavar ,controlar componentes | 1d? | 2016-08-10 | 2016-08-10 |  | 0d |
| 2 | 2 | **Etapa planetaria de primera reducción** | 3d? | 2016-08-10 | 2016-08-16 |  | 0d |
| 3 |  | Montar rodamientos en piñones | 1d? | 2016-08-10 | 2016-08-11 | 1 | 0d |
| 4 |  | montar y fijar piñones en porta satélite | 1d? | 2016-08-11 | 2016-08-12 | 3 | 0d |
| 5 |  | montar eje solar | 1d? | 2016-08-12 | 2016-08-16 | 4 | 0d |
| 6 | 3 | **Etapa planetaria de segunda reducción** | 3d? | 2016-08-16 | 2016-08-19 |  | 0d |
| 7 |  | Montar rodamientos en piñones | 1d? | 2016-08-16 | 2016-08-17 | 5 | 0d |
| 8 |  | montar y fijar piñones en porta satélite | 1d? | 2016-08-17 | 2016-08-18 | 7 | 0d |
| 9 |  | montar eje solar | 1d? | 2016-08-18 | 2016-08-19 | 8 | 0d |
| 10 | 4 | **Etapa planetaria de salida** | 2d? | 2016-08-19 | 2016-08-23 |  | 0d |
| 11 |  | Montar rodamientos en piñones | 1d? | 2016-08-19 | 2016-08-22 | 9 | 0d |
| 12 |  | montar y fijar piñones en porta satélite | 1d? | 2016-08-22 | 2016-08-23 | 11 | 0d |
| 13 | 5 | **eje central** | 3d? | 2016-08-23 | 2016-08-26 |  | 0d |
| 14 |  | montar sellos | 1d? | 2016-08-23 | 2016-08-24 | 12 | 0d |
| 15 |  | montar rodamientos cónicos | 1d? | 2016-08-24 | 2016-08-25 | 14 | 0d |
| 16 |  | montar y torquear tuerca axial | 1d? | 2016-08-25 | 2016-08-26 | 15 | 0d |
| 17 | 6 | **Conjunto** | 4d? | 2016-08-26 | 2016-09-01 |  | 0d |
| 18 |  | montar cuerpo dentado | 1d? | 2016-08-26 | 2016-08-29 | 16 | 0d |
| 19 |  | ensamblar líneas planetarias | 1d? | 2016-08-29 | 2016-08-30 | 18 | 0d |
| 20 |  | montar tapa frontal | 1d? | 2016-08-30 | 2016-08-31 | 19 | 0d |
| 21 |  | torquear pernos de amarre | 1d? | 2016-08-31 | 2016-09-01 | 20 | 0d |
| 22 | 7 | **Sistema de frenos** | 6d? | 2016-09-01 | 2016-09-08 |  | 0d |
| 23 |  | montar discos de freno | 1d? | 2016-09-01 | 2016-09-01 | 21 | 0d |
| 24 |  | montar pistón | 1d? | 2016-09-02 | 2016-09-02 | 23 | 0d |
| 25 |  | Montar resortes | 1d? | 2016-09-02 | 2016-09-05 | 24 | 0d |
| 26 |  | montar sellos | 1d? | 2016-09-05 | 2016-09-06 | 25 | 0d |
| 27 |  | montar sistema de freno en reductor | 1d? | 2016-09-06 | 2016-09-07 | 26 | 0d |
| 28 |  | realizar prueba de presión al sistema de frenos | 1d? | 2016-09-07 | 2016-09-08 | 27 | 0d |
| 29 | 8 | **Etapa de prueba** | 7d? | 2016-09-08 | 2016-09-20 |  | 0d |
| 30 |  | Posicionar el componente | 1d? | 2016-09-08 | 2016-09-09 | 28 | 0d |
| 31 |  | Preparar dispositivos de prueba | 1d? | 2016-09-09 | 2016-09-12 | 30 | 0d |
| 32 |  | Montar elementos de prueba | 1d? | 2016-09-12 | 2016-09-13 | 31 | 0d |
| 33 |  | Aporta lubricante | 1d? | 2016-09-13 | 2016-09-14 | 32 | 0d |
| 34 |  | Realizar prueba | 1d? | 2016-09-14 | 2016-09-15 | 33 | 0d |
| 35 |  | Drenar lubricante de prueba | 1d? | 2016-09-15 | 2016-09-16 | 34 | 0d |
| 36 |  | Desmontar elementos de prueba | 1d? | 2016-09-16 | 2016-09-20 | 35 | 0d |
| 37 | 9 | **Despacho** | 1d? | 2016-09-20 | 2016-09-21 |  | 0d |
| 38 |  | Pintar ,embalar componente para despacho | 1d? | 2016-09-20 | 2016-09-21 | 36 | 0d |

## Version 2 (saved 2016-08-29)

Note of the change: gantt gft 110 y 1127138

Last finish 2016-09-21 → 2016-08-25 (-27d).

Changed:

| ID | Task | Start | Finish | Duration | Total float | Other |
| --- | --- | --- | --- | --- | --- | --- |
| 1 | lavar ,controlar componentes | 2016-08-10 → 2016-08-08 07:45 (-2d) | 2016-08-10 → 2016-08-09 16:00 (-1d) | 1d? → 2d | 0d → 1.31d | constraint none → start no earlier than 2016-08-08 07:45 |
| 2 | **Etapa planetaria de primera reducción** | 2016-08-10 → 2016-08-10 07:45 | 2016-08-16 → 2016-08-10 16:30 (-6d) | 3d? → 1d | 0d → 1.19d |  |
| 3 | Montar rodamientos en piñones | 2016-08-10 → 2016-08-10 07:45 | 2016-08-11 → 2016-08-10 09:45 (-1d) | 1d? → 2h | 0d → 1.19d | constraint none → start no earlier than 2016-08-10 07:45 |
| 4 | montar y fijar piñones en porta satélite | 2016-08-11 → 2016-08-10 09:45 (-1d) | 2016-08-12 → 2016-08-10 14:30 (-2d) | 1d? → 4h | 0d → 1.19d |  |
| 5 | montar eje solar | 2016-08-12 → 2016-08-10 14:30 (-2d) | 2016-08-16 → 2016-08-10 16:30 (-6d) | 1d? → 2h | 0d → 1.19d |  |
| 6 | **Etapa planetaria de segunda reducción** | 2016-08-16 → 2016-08-10 16:30 (-6d) | 2016-08-19 → 2016-08-12 10:45 (-7d) | 3d? → 1.5d | 0d → 1.19d |  |
| 7 | Montar rodamientos en piñones | 2016-08-16 → 2016-08-10 16:30 (-6d) | 2016-08-17 → 2016-08-11 14:00 (-6d) | 1d? → 6h | 0d → 1.19d |  |
| 8 | montar y fijar piñones en porta satélite | 2016-08-17 → 2016-08-11 14:00 (-6d) | 2016-08-18 → 2016-08-12 08:45 (-6d) | 1d? → 4h | 0d → 1.19d |  |
| 9 | montar eje solar | 2016-08-18 → 2016-08-12 08:45 (-6d) | 2016-08-19 → 2016-08-12 10:45 (-7d) | 1d? → 2h | 0d → 1.19d |  |
| 10 | **Etapa planetaria de salida** | 2016-08-19 → 2016-08-12 10:45 (-7d) | 2016-08-23 → 2016-08-16 12:15 (-7d) | 2d? → 1.25d | 0d → 1.19d |  |
| 11 | Montar rodamientos en piñones | 2016-08-19 → 2016-08-12 10:45 (-7d) | 2016-08-22 → 2016-08-16 08:15 (-6d) | 1d? → 6h | 0d → 1.19d |  |
| 12 | montar y fijar piñones en porta satélite | 2016-08-22 → 2016-08-16 08:15 (-6d) | 2016-08-23 → 2016-08-16 12:15 (-7d) | 1d? → 4h | 0d → 1.19d |  |
| 13 | **eje central** | 2016-08-23 → 2016-08-16 12:15 (-7d) | 2016-08-26 → 2016-08-17 11:45 (-9d) | 3d? → 1d | 0d → 1.19d |  |
| 14 | montar sellos | 2016-08-23 → 2016-08-16 12:15 (-7d) | 2016-08-24 → 2016-08-16 15:00 (-8d) | 1d? → 2h | 0d → 1.19d |  |
| 15 | montar rodamientos cónicos | 2016-08-24 → 2016-08-16 15:00 (-8d) | 2016-08-25 → 2016-08-17 09:45 (-8d) | 1d? → 4h | 0d → 1.19d |  |
| 16 | montar y torquear tuerca axial | 2016-08-25 → 2016-08-17 09:45 (-8d) | 2016-08-26 → 2016-08-17 11:45 (-9d) | 1d? → 2h | 0d → 1.19d |  |
| 17 | **Conjunto** | 2016-08-26 → 2016-08-17 11:45 (-9d) | 2016-09-01 → 2016-08-19 10:45 (-13d) | 4d? → 2d | 0d → 1.19d |  |
| 18 | montar cuerpo dentado | 2016-08-26 → 2016-08-17 11:45 (-9d) | 2016-08-29 → 2016-08-17 14:30 (-12d) | 1d? → 2h | 0d → 1.19d |  |
| 19 | ensamblar líneas planetarias | 2016-08-29 → 2016-08-17 14:30 (-12d) | 2016-08-30 → 2016-08-18 11:15 (-12d) | 1d? → 6h | 0d → 1.19d |  |
| 20 | montar tapa frontal | 2016-08-30 → 2016-08-18 11:15 (-12d) | 2016-08-31 → 2016-08-18 16:00 (-13d) | 1d? → 4h | 0d → 1.19d |  |
| 21 | torquear pernos de amarre | 2016-08-31 → 2016-08-18 16:00 (-13d) | 2016-09-01 → 2016-08-19 10:45 (-13d) | 1d? → 4h | 0d → 1.19d |  |
| 22 | **Sistema de frenos** | 2016-09-01 → 2016-08-19 10:45 (-13d) | 2016-09-08 → 2016-08-22 16:00 (-17d) | 6d? → 1.62d | 0d → 1.19d |  |
| 23 | montar discos de freno | 2016-09-01 → 2016-08-19 10:45 (-13d) | 2016-09-01 → 2016-08-19 13:30 (-13d) | 1d? → 2h | 0d → 1.19d |  |
| 24 | montar pistón | 2016-09-02 → 2016-08-19 13:30 (-14d) | 2016-09-02 → 2016-08-19 14:30 (-14d) | 1d? → 1h | 0d → 1.19d |  |
| 25 | Montar resortes | 2016-09-02 → 2016-08-19 14:30 (-14d) | 2016-09-05 → 2016-08-19 16:30 (-17d) | 1d? → 2h | 0d → 1.19d |  |
| 26 | montar sellos | 2016-09-05 → 2016-08-19 16:30 (-17d) | 2016-09-06 → 2016-08-22 11:15 (-15d) | 1d? → 4h | 0d → 1.19d |  |
| 27 | montar sistema de freno en reductor | 2016-09-06 → 2016-08-22 11:15 (-15d) | 2016-09-07 → 2016-08-22 14:00 (-16d) | 1d? → 2h | 0d → 1.19d |  |
| 28 | realizar prueba de presión al sistema de frenos | 2016-09-07 → 2016-08-22 14:00 (-16d) | 2016-09-08 → 2016-08-22 16:00 (-17d) | 1d? → 2h | 0d → 1.19d |  |
| 29 | **Etapa de prueba** | 2016-09-08 → 2016-08-24 07:45 (-15d) | 2016-09-20 → 2016-08-25 15:00 (-26d) | 7d? → 1.88d |  |  |
| 30 | Posicionar el componente | 2016-09-08 → 2016-08-24 07:45 (-15d) | 2016-09-09 → 2016-08-24 10:45 (-16d) | 1d? → 3h |  | constraint none → start no earlier than 2016-08-24 07:45 |
| 31 | Preparar dispositivos de prueba | 2016-09-09 → 2016-08-24 10:45 (-16d) | 2016-09-12 → 2016-08-24 13:30 (-19d) | 1d? → 2h |  |  |
| 32 | Montar elementos de prueba | 2016-09-12 → 2016-08-24 13:30 (-19d) | 2016-09-13 → 2016-08-24 15:30 (-20d) | 1d? → 2h |  |  |
| 33 | Aporta lubricante | 2016-09-13 → 2016-08-24 15:30 (-20d) | 2016-09-14 → 2016-08-24 16:30 (-21d) | 1d? → 1h |  |  |
| 34 | Realizar prueba | 2016-09-14 → 2016-08-24 16:30 (-21d) | 2016-09-15 → 2016-08-25 11:15 (-21d) | 1d? → 4h |  |  |
| 35 | Drenar lubricante de prueba | 2016-09-15 → 2016-08-25 11:15 (-21d) | 2016-09-16 → 2016-08-25 12:15 (-22d) | 1d? → 1h |  |  |
| 36 | Desmontar elementos de prueba | 2016-09-16 → 2016-08-25 12:15 (-22d) | 2016-09-20 → 2016-08-25 15:00 (-26d) | 1d? → 2h |  |  |
| 37 | **Despacho** | 2016-09-20 → 2016-08-25 15:00 (-26d) | 2016-09-21 → 2016-08-25 17:00 (-27d) | 1d? → 0.25d |  |  |
| 38 | Pintar ,embalar componente para despacho | 2016-09-20 → 2016-08-25 15:00 (-26d) | 2016-09-21 → 2016-08-25 17:00 (-27d) | 1d? → 2h |  |  |

## Version 3 (saved 2016-09-07)

Note of the change: Agrega gantt eje 19D

Last finish 2016-08-25 → 2016-09-09 (+15d).

Changed:

| ID | Task | Start | Finish | Duration | Total float | Other |
| --- | --- | --- | --- | --- | --- | --- |
| 1 | lavar ,controlar componentes | 2016-08-08 07:45 → 2016-08-29 07:45 (+21d) | 2016-08-09 16:00 → 2016-08-29 16:30 (+20d) | 2d → 1d | 1.31d → 0d | constraint start no earlier than 2016-08-08 07:45 → start no earlier than 2016-08-29 07:45 |
| 2 | **Etapa planetaria de primera reducción** | 2016-08-10 07:45 → 2016-08-29 16:30 (+19d) | 2016-08-10 16:30 → 2016-08-30 16:00 (+20d) |  | 1.19d → 0d |  |
| 3 | Montar rodamientos en piñones | 2016-08-10 07:45 → 2016-08-29 16:30 (+19d) | 2016-08-10 09:45 → 2016-08-30 09:15 (+20d) |  | 1.19d → 0d |  |
| 4 | montar y fijar piñones en porta satélite | 2016-08-10 09:45 → 2016-08-30 09:15 (+20d) | 2016-08-10 14:30 → 2016-08-30 14:00 (+20d) |  | 1.19d → 0d |  |
| 5 | montar eje solar | 2016-08-10 14:30 → 2016-08-30 14:00 (+20d) | 2016-08-10 16:30 → 2016-08-30 16:00 (+20d) |  | 1.19d → 0d |  |
| 6 | **Etapa planetaria de segunda reducción** | 2016-08-10 16:30 → 2016-08-30 16:00 (+20d) | 2016-08-12 10:45 → 2016-08-31 16:30 (+19d) | 1.5d → 1.12d | 1.19d → 0d |  |
| 7 | Montar rodamientos en piñones | 2016-08-10 16:30 → 2016-08-30 16:00 (+20d) | 2016-08-11 14:00 → 2016-08-31 10:45 (+20d) | 6h → 4h | 1.19d → 0d |  |
| 8 | montar y fijar piñones en porta satélite | 2016-08-11 14:00 → 2016-08-31 10:45 (+20d) | 2016-08-12 08:45 → 2016-08-31 15:30 (+19d) |  | 1.19d → 0d |  |
| 9 | montar eje solar | 2016-08-12 08:45 → 2016-08-31 15:30 (+19d) | 2016-08-12 10:45 → 2016-08-31 16:30 (+19d) | 2h → 1h | 1.19d → 0d |  |
| 10 | **Etapa planetaria de salida** | 2016-08-12 10:45 → 2016-08-31 16:30 (+19d) | 2016-08-16 12:15 → 2016-09-01 16:00 (+16d) | 1.25d → 1d | 1.19d → 0d |  |
| 11 | Montar rodamientos en piñones | 2016-08-12 10:45 → 2016-08-31 16:30 (+19d) | 2016-08-16 08:15 → 2016-09-01 11:15 (+16d) | 6h → 4h | 1.19d → 0d |  |
| 12 | montar y fijar piñones en porta satélite | 2016-08-16 08:15 → 2016-09-01 11:15 (+16d) | 2016-08-16 12:15 → 2016-09-01 16:00 (+16d) |  | 1.19d → 0d |  |
| 13 | **eje central** | 2016-08-16 12:15 → 2016-09-01 16:00 (+16d) | 2016-08-17 11:45 → 2016-09-02 14:30 (+16d) | 1d → 0.88d | 1.19d → 0d |  |
| 14 | montar sellos | 2016-08-16 12:15 → 2016-09-01 16:00 (+16d) | 2016-08-16 15:00 → 2016-09-02 08:45 (+17d) |  | 1.19d → 0d |  |
| 15 | montar rodamientos cónicos | 2016-08-16 15:00 → 2016-09-02 08:45 (+17d) | 2016-08-17 09:45 → 2016-09-02 11:45 (+16d) | 4h → 3h | 1.19d → 0d |  |
| 16 | montar y torquear tuerca axial | 2016-08-17 09:45 → 2016-09-02 11:45 (+16d) | 2016-08-17 11:45 → 2016-09-02 14:30 (+16d) |  | 1.19d → 0d |  |
| 17 | **Conjunto** | 2016-08-17 11:45 → 2016-09-02 14:30 (+16d) | 2016-08-19 10:45 → 2016-09-06 10:45 (+18d) | 2d → 1.75d | 1.19d → 0d |  |
| 18 | montar cuerpo dentado | 2016-08-17 11:45 → 2016-09-02 14:30 (+16d) | 2016-08-17 14:30 → 2016-09-02 16:30 (+16d) |  | 1.19d → 0d |  |
| 19 | ensamblar líneas planetarias | 2016-08-17 14:30 → 2016-09-02 16:30 (+16d) | 2016-08-18 11:15 → 2016-09-05 14:00 (+18d) |  | 1.19d → 0d |  |
| 20 | montar tapa frontal | 2016-08-18 11:15 → 2016-09-05 14:00 (+18d) | 2016-08-18 16:00 → 2016-09-05 16:00 (+18d) | 4h → 2h | 1.19d → 0d |  |
| 21 | torquear pernos de amarre | 2016-08-18 16:00 → 2016-09-05 16:00 (+18d) | 2016-08-19 10:45 → 2016-09-06 10:45 (+18d) |  | 1.19d → 0d |  |
| 22 | **Sistema de frenos** | 2016-08-19 10:45 → 2016-09-06 10:45 (+18d) | 2016-08-22 16:00 → 2016-09-07 16:00 (+16d) |  | 1.19d → 0d |  |
| 23 | montar discos de freno | 2016-08-19 10:45 → 2016-09-06 10:45 (+18d) | 2016-08-19 13:30 → 2016-09-06 13:30 (+18d) |  | 1.19d → 0d |  |
| 24 | montar pistón | 2016-08-19 13:30 → 2016-09-06 13:30 (+18d) | 2016-08-19 14:30 → 2016-09-06 14:30 (+18d) |  | 1.19d → 0d |  |
| 25 | Montar resortes | 2016-08-19 14:30 → 2016-09-06 14:30 (+18d) | 2016-08-19 16:30 → 2016-09-06 16:30 (+18d) |  | 1.19d → 0d |  |
| 26 | montar sellos | 2016-08-19 16:30 → 2016-09-06 16:30 (+18d) | 2016-08-22 11:15 → 2016-09-07 11:15 (+16d) |  | 1.19d → 0d |  |
| 27 | montar sistema de freno en reductor | 2016-08-22 11:15 → 2016-09-07 11:15 (+16d) | 2016-08-22 14:00 → 2016-09-07 14:00 (+16d) |  | 1.19d → 0d |  |
| 28 | realizar prueba de presión al sistema de frenos | 2016-08-22 14:00 → 2016-09-07 14:00 (+16d) | 2016-08-22 16:00 → 2016-09-07 16:00 (+16d) |  | 1.19d → 0d |  |
| 29 | **Etapa de prueba** | 2016-08-24 07:45 → 2016-09-07 16:00 (+14d) | 2016-08-25 15:00 → 2016-09-09 11:15 (+15d) | 1.88d → 1.62d |  |  |
| 30 | Posicionar el componente | 2016-08-24 07:45 → 2016-09-07 16:00 (+14d) | 2016-08-24 10:45 → 2016-09-08 09:45 (+15d) |  |  |  |
| 31 | Preparar dispositivos de prueba | 2016-08-24 10:45 → 2016-09-08 09:45 (+15d) | 2016-08-24 13:30 → 2016-09-08 11:45 (+15d) |  |  |  |
| 32 | Montar elementos de prueba | 2016-08-24 13:30 → 2016-09-08 11:45 (+15d) | 2016-08-24 15:30 → 2016-09-08 14:30 (+15d) |  |  |  |
| 33 | Aporta lubricante | 2016-08-24 15:30 → 2016-09-08 14:30 (+15d) | 2016-08-24 16:30 → 2016-09-08 15:30 (+15d) |  |  |  |
| 34 | Realizar prueba | 2016-08-24 16:30 → 2016-09-08 15:30 (+15d) | 2016-08-25 11:15 → 2016-09-09 08:15 (+15d) | 4h → 2h |  |  |
| 35 | Drenar lubricante de prueba | 2016-08-25 11:15 → 2016-09-09 08:15 (+15d) | 2016-08-25 12:15 → 2016-09-09 09:15 (+15d) |  |  |  |
| 36 | Desmontar elementos de prueba | 2016-08-25 12:15 → 2016-09-09 09:15 (+15d) | 2016-08-25 15:00 → 2016-09-09 11:15 (+15d) |  |  |  |
| 37 | **Despacho** | 2016-08-25 15:00 → 2016-09-09 11:15 (+15d) | 2016-08-25 17:00 → 2016-09-09 14:00 (+15d) |  |  |  |
| 38 | Pintar ,embalar componente para despacho | 2016-08-25 15:00 → 2016-09-09 11:15 (+15d) | 2016-08-25 17:00 → 2016-09-09 14:00 (+15d) |  |  |  |
