# Acople FLEXIBLE BC 41-5-50N-1 PC 8000

How a schedule from MS Project changed from version to version. A marks actual dates.

## Version 1 (saved 2016-08-02)

Note of the change: agrega Gantt Acople 50N

| ID | WBS | Task | Duration | Start | Finish | Predecessors | Total float |
| --- | --- | --- | --- | --- | --- | --- | --- |
| 1 | 1 | **Armado** | 0.34d | 2016-08-02 07:45 | 2016-08-02 10:30 |  | 0d |
| 2 |  | Instalar O'rings en Flange | 15min | 2016-08-02 07:45 | 2016-08-02 08:00 |  | 0d |
| 3 |  | Instalar Kit de Tension en Flange | 30min | 2016-08-02 08:00 | 2016-08-02 08:30 | 2 | 0d |
| 4 |  | Side Plate, instalar O'ring, cerrar y torquear pernos | 45min | 2016-08-02 08:30 | 2016-08-02 09:15 | 3 | 0d |
| 5 |  | Inner Star: Instalar o'rings, pernos, montar e instalar Ring | 30min | 2016-08-02 09:15 | 2016-08-02 09:45 | 4 | 0d |
| 6 |  | instalar Supporting Ring en Inner Star | 15min | 2016-08-02 09:45 | 2016-08-02 10:00 | 5 | 0d |
| 7 |  | Instalar Seal Ring en conjunto | 15min | 2016-08-02 10:00 | 2016-08-02 10:15 | 6 | 0d |
| 8 |  | Instalar Tapa y Torquear | 15min | 2016-08-02 10:15 | 2016-08-02 10:30 | 7 | 0d |
| 9 | 2 | **Embalaje** | 0.21d | 2016-08-02 10:30 | 2016-08-02 12:15 |  | 0d |
| 10 |  | Lavado Exterior | 15min | 2016-08-02 10:30 | 2016-08-02 10:45 | 8 | 0d |
| 11 |  | Pintura y Secado | 1h | 2016-08-02 10:45 | 2016-08-02 11:45 | 10 | 0d |
| 12 |  | Aplicar Grasa Protectora | 15min | 2016-08-02 11:45 | 2016-08-02 12:00 | 11 | 0d |
| 13 |  | Fabricacion Cajon | 1h | 2016-08-02 10:30 | 2016-08-02 11:30 | 8 | 0.06d |
| 14 |  | Embalar | 15min | 2016-08-02 12:00 | 2016-08-02 12:15 | 12, 13 | 0d |

## Version 2 (saved 2016-10-25)

Last finish 2016-08-02 → 2016-11-03 (+93d).

Added:

| ID | Task | Duration | Start | Finish | Predecessors | Constraint |
| --- | --- | --- | --- | --- | --- | --- |
| 1 | **Evaluacion** | 1.61d | 2016-10-28 07:45 | 2016-11-02 12:24 |  |  |
| 2 | Desarme Acople Flexible | 1h | 2016-10-28 07:45 | 2016-10-28 08:45 |  | start no earlier than 2016-10-28 07:45 |
| 3 | Limpieza y evaluacion de partes y piezas | 1h | 2016-10-28 08:45 | 2016-10-28 09:45 | 2 |  |
| 4 | Embalaje de Partes | 1h | 2016-10-28 09:45 | 2016-10-28 10:45 | 3 |  |
| 5 | Informe Técnico | 3h | 2016-10-28 09:45 | 2016-10-28 13:30 | 3 |  |
| 6 | Presupuesto | 1d | 2016-10-28 13:30 | 2016-11-02 12:24 | 5 |  |
| 7 | Aceptación de trabajo | 0h | 2016-11-02 12:24 | 2016-11-02 12:24 | 6 |  |

Changed:

| ID | Task | Start | Finish | Predecessors |
| --- | --- | --- | --- | --- |
| 8 | **Armado** | 2016-08-02 07:45 → 2016-11-02 12:24 (+92d) | 2016-08-02 10:30 → 2016-11-02 15:54 (+92d) |  |
| 9 | Instalar O'rings en Flange | 2016-08-02 07:45 → 2016-11-02 12:24 (+92d) | 2016-08-02 08:00 → 2016-11-02 13:24 (+92d) | none → 7 |
| 10 | Instalar Kit de Tension en Flange | 2016-08-02 08:00 → 2016-11-02 13:24 (+92d) | 2016-08-02 08:30 → 2016-11-02 13:54 (+92d) |  |
| 11 | Side Plate, instalar O'ring, cerrar y torquear pernos | 2016-08-02 08:30 → 2016-11-02 13:54 (+92d) | 2016-08-02 09:15 → 2016-11-02 14:39 (+92d) |  |
| 12 | Inner Star: Instalar o'rings, pernos, montar e instalar Ring | 2016-08-02 09:15 → 2016-11-02 14:39 (+92d) | 2016-08-02 09:45 → 2016-11-02 15:09 (+92d) |  |
| 13 | instalar Supporting Ring en Inner Star | 2016-08-02 09:45 → 2016-11-02 15:09 (+92d) | 2016-08-02 10:00 → 2016-11-02 15:24 (+92d) |  |
| 14 | Instalar Seal Ring en conjunto | 2016-08-02 10:00 → 2016-11-02 15:24 (+92d) | 2016-08-02 10:15 → 2016-11-02 15:39 (+92d) |  |
| 15 | Instalar Tapa y Torquear | 2016-08-02 10:15 → 2016-11-02 15:39 (+92d) | 2016-08-02 10:30 → 2016-11-02 15:54 (+92d) |  |
| 16 | **Embalaje** | 2016-08-02 10:30 → 2016-11-02 15:54 (+92d) | 2016-08-02 12:15 → 2016-11-03 08:24 (+93d) |  |
| 17 | Lavado Exterior | 2016-08-02 10:30 → 2016-11-02 15:54 (+92d) | 2016-08-02 10:45 → 2016-11-02 16:09 (+92d) |  |
| 18 | Pintura y Secado | 2016-08-02 10:45 → 2016-11-02 16:09 (+92d) | 2016-08-02 11:45 → 2016-11-03 07:54 (+93d) |  |
| 19 | Aplicar Grasa Protectora | 2016-08-02 11:45 → 2016-11-03 07:54 (+93d) | 2016-08-02 12:00 → 2016-11-03 08:09 (+93d) |  |
| 20 | Fabricacion Cajon | 2016-08-02 10:30 → 2016-11-02 15:54 (+92d) | 2016-08-02 11:30 → 2016-11-02 16:54 (+92d) |  |
| 21 | Embalar | 2016-08-02 12:00 → 2016-11-03 08:09 (+93d) | 2016-08-02 12:15 → 2016-11-03 08:24 (+93d) |  |
