# Evaluacion y Armado C5000

How a schedule from MS Project changed from version to version. A marks actual dates.

## Version 1 (saved 2016-08-02)

Note of the change: Agrea gantt c5000 inicial

| ID | WBS | Task | Duration | Start | Finish | Predecessors | Total float |
| --- | --- | --- | --- | --- | --- | --- | --- |
| 1 |  | Limpieza exterior | 1h | 2016-07-27 07:45 | 2016-07-27 08:45 |  | 0d |
| 2 | 2 | **Evaluacion** | 1.66d | 2016-07-27 08:45 | 2016-07-28 14:15 |  | 0d |
| 3 |  | Drenaje Aceite | 15min | 2016-07-27 08:45 | 2016-07-27 09:00 | 1 | 0d |
| 4 |  | Desarme | 2h | 2016-07-27 09:00 | 2016-07-27 11:00 | 3 | 0d |
| 5 |  | limpieza partes | 3h | 2016-07-27 11:00 | 2016-07-27 14:45 | 4 | 0d |
| 6 |  | Evaluacion de partes | 4h | 2016-07-27 14:45 | 2016-07-28 09:30 | 5 | 0d |
| 7 |  | Informe Tecnico | 4h | 2016-07-28 09:30 | 2016-07-28 14:15 | 6 | 0d |
| 8 |  | fin evaluacion | 0d | 2016-07-28 14:15 | 2016-07-28 14:15 | 7 | 0d |
| 9 |  | almacenaje piezas | 1h | 2016-07-28 14:15 | 2016-07-28 15:15 | 8 | 0d |
| 10 |  | Aceptacion de trabajo | 0d | 2016-07-28 15:15 | 2016-07-28 15:15 | 9 | 0d |
| 11 |  | preparacion partes | 2h | 2016-07-28 15:15 | 2016-07-29 08:00 | 10 | 0d |
| 12 |  | revision repuestos | 1h | 2016-07-29 08:00 | 2016-07-29 09:00 | 11 | 0d |
| 13 | 7 | **Armado** | 5.34d | 2016-07-29 09:00 | 2016-08-05 09:15 |  | 0d |
| 14 |  | armado | 22h | 2016-07-29 09:00 | 2016-08-02 14:45 | 12 | 0d |
| 15 | 7.2 | **prueba** | 1.72d | 2016-08-02 14:45 | 2016-08-04 10:45 |  | 0d |
| 16 |  | montaje en banco | 1h | 2016-08-02 14:45 | 2016-08-02 15:45 | 14 | 0d |
| 17 |  | conexiónes hidraulicas | 0.5h | 2016-08-02 15:45 | 2016-08-02 16:15 | 16 | 0d |
| 18 |  | conexion de sensores | 0.5h | 2016-08-02 16:15 | 2016-08-02 16:45 | 17 | 0d |
| 19 |  | llenado de aceite | 1h | 2016-08-02 16:45 | 2016-08-03 08:30 | 18 | 0d |
| 20 |  | Prueba Funcionamiento | 4h | 2016-08-03 08:30 | 2016-08-03 12:30 | 19 | 0d |
| 21 |  | desconexion lineas | 0.5d | 2016-08-03 13:15 | 2016-08-04 08:00 | 20 | 0d |
| 22 |  | Drenaje Aceite | 0.75h | 2016-08-04 08:00 | 2016-08-04 08:45 | 21 | 0d |
| 23 |  | desmontar de banco | 1h | 2016-08-04 08:45 | 2016-08-04 09:45 | 22 | 0d |
| 24 |  | informe de prueba | 1h | 2016-08-04 09:45 | 2016-08-04 10:45 | 23 | 0d |
| 25 |  | fin prueba | 0d | 2016-08-04 10:45 | 2016-08-04 10:45 | 24 | 0d |
| 26 | 7.3 | **embalaje** | 1.72d | 2016-08-03 13:15 | 2016-08-05 09:15 |  | 0d |
| 27 |  | fabricación pallet | 2h | 2016-08-03 13:15 | 2016-08-03 15:15 | 20 | 1.34d |
| 28 |  | pintar transmision | 2h | 2016-08-04 10:45 | 2016-08-04 13:30 | 25 | 0d |
| 29 |  | secado de pintura | 4h | 2016-08-04 13:30 | 2016-08-05 08:15 | 28 | 0d |
| 30 |  | montar en pallet | 10min | 2016-08-05 08:15 | 2016-08-05 08:25 | 29, 27 | 0d |
| 31 |  | revisar tapones y tapas para despacho | 20min | 2016-08-05 08:25 | 2016-08-05 08:45 | 30 | 0d |
| 32 |  | instalar film de proteccion | 30min | 2016-08-05 08:45 | 2016-08-05 09:15 | 31 | 0d |
| 33 |  | fin embalaje | 0d | 2016-08-05 09:15 | 2016-08-05 09:15 | 32 | 0d |

## Version 2 (saved 2016-08-02)

Note of the change: Actualizacion Gantt c5000

Last finish stays 2016-08-05.

Changed:

| ID | Task | Start | Finish | Duration | Total float | Other |
| --- | --- | --- | --- | --- | --- | --- |
| 1 | Limpieza exterior | 2016-07-27 07:45 → 2016-08-02 07:45 (+6d) | 2016-07-27 08:45 → 2016-08-02 08:15 (+6d) | 1h → 30min | 0d → 0.06d | constraint none → start no earlier than 2016-08-02 07:45 |
| 2 | **Evaluacion** | 2016-07-27 08:45 → 2016-08-02 08:45 (+6d) | 2016-07-28 14:15 → 2016-08-03 12:30 (+6d) | 1.66d → 1.53d |  |  |
| 3 | Drenaje Aceite | 2016-07-27 08:45 → 2016-08-02 08:45 (+6d) | 2016-07-27 09:00 → 2016-08-02 09:00 (+6d) |  |  | constraint none → start no earlier than 2016-08-02 08:45 |
| 4 | Desarme | 2016-07-27 09:00 → 2016-08-02 09:00 (+6d) | 2016-07-27 11:00 → 2016-08-02 11:00 (+6d) |  |  |  |
| 5 | limpieza partes | 2016-07-27 11:00 → 2016-08-02 11:00 (+6d) | 2016-07-27 14:45 → 2016-08-02 14:45 (+6d) |  |  |  |
| 6 | Evaluacion de partes | 2016-07-27 14:45 → 2016-08-02 14:45 (+6d) | 2016-07-28 09:30 → 2016-08-03 08:30 (+6d) | 4h → 3h |  |  |
| 7 | Informe Tecnico | 2016-07-28 09:30 → 2016-08-03 08:30 (+6d) | 2016-07-28 14:15 → 2016-08-03 12:30 (+6d) |  |  |  |
| 8 | fin evaluacion | 2016-07-28 14:15 → 2016-08-03 12:30 (+6d) | 2016-07-28 14:15 → 2016-08-03 12:30 (+6d) |  |  |  |
| 9 | almacenaje piezas | 2016-07-28 14:15 → 2016-08-03 13:15 (+6d) | 2016-07-28 15:15 → 2016-08-03 14:15 (+6d) |  |  |  |
| 10 | Aceptacion de trabajo | 2016-07-28 15:15 → 2016-08-03 14:15 (+6d) | 2016-07-28 15:15 → 2016-08-03 14:15 (+6d) |  |  |  |
| 11 | preparacion partes | 2016-07-28 15:15 → 2016-08-03 14:15 (+6d) | 2016-07-29 08:00 → 2016-08-03 16:15 (+5d) |  |  |  |
| 12 | revision repuestos | 2016-07-29 08:00 → 2016-08-03 16:15 (+5d) | 2016-07-29 09:00 → 2016-08-04 08:00 (+6d) |  |  |  |
| 13 | **Armado** | 2016-07-29 09:00 → 2016-08-04 08:00 (+6d) | 2016-08-05 09:15 → 2016-08-05 16:00 | 5.34d → 1.97d |  |  |
| 14 | armado | 2016-07-29 09:00 → 2016-08-04 08:00 (+6d) | 2016-08-02 14:45 → 2016-08-04 14:45 (+2d) | 22h → 6h |  |  |
| 15 | **prueba** | 2016-08-02 14:45 → 2016-08-04 14:45 (+2d) | 2016-08-04 10:45 → 2016-08-05 11:40 (+1d) | 1.72d → 0.77d |  |  |
| 16 | montaje en banco | 2016-08-02 14:45 → 2016-08-04 14:45 (+2d) | 2016-08-02 15:45 → 2016-08-04 15:45 (+2d) |  |  |  |
| 17 | conexiónes hidraulicas | 2016-08-02 15:45 → 2016-08-04 15:45 (+2d) | 2016-08-02 16:15 → 2016-08-04 16:15 (+2d) |  |  |  |
| 18 | conexion de sensores | 2016-08-02 16:15 → 2016-08-04 16:15 (+2d) | 2016-08-02 16:45 → 2016-08-04 16:30 (+2d) | 0.5h → 15min |  |  |
| 19 | llenado de aceite | 2016-08-02 16:45 → 2016-08-04 16:30 (+2d) | 2016-08-03 08:30 → 2016-08-04 16:50 (+1d) | 1h → 20min |  |  |
| 20 | Prueba Funcionamiento | 2016-08-03 08:30 → 2016-08-04 16:50 (+1d) | 2016-08-03 12:30 → 2016-08-05 09:35 (+2d) | 4h → 2h |  |  |
| 21 | desconexion lineas | 2016-08-03 13:15 → 2016-08-05 09:35 (+2d) | 2016-08-04 08:00 → 2016-08-05 09:55 (+1d) | 0.5d → 20min |  |  |
| 22 | Drenaje Aceite | 2016-08-04 08:00 → 2016-08-05 09:55 (+1d) | 2016-08-04 08:45 → 2016-08-05 10:10 (+1d) | 0.75h → 15min |  |  |
| 23 | desmontar de banco | 2016-08-04 08:45 → 2016-08-05 10:10 (+1d) | 2016-08-04 09:45 → 2016-08-05 10:40 (+1d) | 1h → 30min |  |  |
| 24 | informe de prueba | 2016-08-04 09:45 → 2016-08-05 10:40 (+1d) | 2016-08-04 10:45 → 2016-08-05 11:40 (+1d) |  |  |  |
| 25 | fin prueba | 2016-08-04 10:45 → 2016-08-05 11:40 (+1d) | 2016-08-04 10:45 → 2016-08-05 11:40 (+1d) |  |  |  |
| 26 | **embalaje** | 2016-08-03 13:15 → 2016-08-05 09:35 (+2d) | 2016-08-05 09:15 → 2016-08-05 16:00 | 1.72d → 0.71d |  |  |
| 27 | fabricación pallet | 2016-08-03 13:15 → 2016-08-05 09:35 (+2d) | 2016-08-03 15:15 → 2016-08-05 10:35 (+2d) | 2h → 1h | 1.34d → 0.51d |  |
| 28 | pintar Convertidor | 2016-08-04 10:45 → 2016-08-05 11:40 (+1d) | 2016-08-04 13:30 → 2016-08-05 13:25 (+1d) | 2h → 1h |  | was named pintar transmision |
| 29 | secado de pintura | 2016-08-04 13:30 → 2016-08-05 13:25 (+1d) | 2016-08-05 08:15 → 2016-08-05 15:25 | 4h → 2h |  |  |
| 30 | montar en pallet | 2016-08-05 08:15 → 2016-08-05 15:25 | 2016-08-05 08:25 → 2016-08-05 15:35 |  |  |  |
| 31 | revisar tapones y tapas para despacho | 2016-08-05 08:25 → 2016-08-05 15:35 | 2016-08-05 08:45 → 2016-08-05 15:45 | 20min → 10min |  |  |
| 32 | instalar film de proteccion | 2016-08-05 08:45 → 2016-08-05 15:45 | 2016-08-05 09:15 → 2016-08-05 16:00 | 30min → 15min |  |  |
| 33 | fin embalaje | 2016-08-05 09:15 → 2016-08-05 16:00 | 2016-08-05 09:15 → 2016-08-05 16:00 |  |  |  |

## Version 3 (saved 2016-10-05)

Note of the change: cartas gantt nuevas

Last finish stays 2016-08-05.

Added:

| ID | Task | Duration | Start | Finish | Predecessors |
| --- | --- | --- | --- | --- | --- |
| 13 | **Recuperaciones** | 0.88d | 2016-08-03 14:15 | 2016-08-04 12:00 |  |
| 14 | **Cubo Convertidor** | 0.38d | 2016-08-03 14:15 | 2016-08-04 08:00 |  |
| 15 | **Pista de sello con desgaste** | 0.38d | 2016-08-03 14:15 | 2016-08-04 08:00 |  |
| 16 | Metalizado de alta adherencia | 2h | 2016-08-03 14:15 | 2016-08-03 16:15 | 10 |
| 17 | dar medida final 84.15+0.02 | 1h | 2016-08-03 16:15 | 2016-08-04 08:00 | 16 |
| 18 | **Manchon de entrada** | 0.38d | 2016-08-03 16:15 | 2016-08-04 10:00 |  |
| 19 | **Desgaste en pista de sello** | 0.38d | 2016-08-03 16:15 | 2016-08-04 10:00 |  |
| 20 | Metalizado de alta adherencia | 2h | 2016-08-03 16:15 | 2016-08-04 09:00 | 16 |
| 21 | rectificar medida final 60.35+0.02 | 1h | 2016-08-04 09:00 | 2016-08-04 10:00 | 20 |
| 22 | **eje estator** | 0.38d | 2016-08-04 09:00 | 2016-08-04 12:00 |  |
| 23 | **Desgaste en pista de sello** | 0.38d | 2016-08-04 09:00 | 2016-08-04 12:00 |  |
| 24 | Metalizado de alta adherencia | 2h | 2016-08-04 09:00 | 2016-08-04 11:00 | 20 |
| 25 | dar medida final 84.15+0.02 | 1h | 2016-08-04 11:00 | 2016-08-04 12:00 | 24 |

Removed: 17 conexiónes hidraulicas; 18 conexion de sensores; 21 desconexion lineas; 22 Drenaje Aceite

Changed:

| ID | Task | Start | Finish | Duration | Total float | Predecessors |
| --- | --- | --- | --- | --- | --- | --- |
| 26 | **Armado** |  | 2016-08-05 16:00 → 2016-08-05 13:40 | 1.97d → 1.68d |  |  |
| 28 | **prueba** |  | 2016-08-05 11:40 → 2016-08-05 09:20 | 0.77d → 0.48d |  |  |
| 29 | montaje en banco |  | 2016-08-04 15:45 → 2016-08-04 16:15 | 1h → 1.5h |  |  |
| 30 | llenado de aceite | 2016-08-04 16:30 → 2016-08-04 16:15 | 2016-08-04 16:50 → 2016-08-04 16:35 |  |  | conexion de sensores → 29 |
| 31 | Prueba Funcionamiento | 2016-08-04 16:50 → 2016-08-04 16:35 | 2016-08-05 09:35 → 2016-08-05 09:20 |  | 0d → 0.25d |  |
| 32 | desmontar de banco | 2016-08-05 10:10 → 2016-08-04 16:35 (-1d) | 2016-08-05 10:40 → 2016-08-05 08:20 | 30min → 1h |  | Drenaje Aceite → 30 |
| 33 | informe de prueba | 2016-08-05 10:40 → 2016-08-05 08:20 | 2016-08-05 11:40 → 2016-08-05 09:20 |  |  |  |
| 34 | fin prueba | 2016-08-05 11:40 → 2016-08-05 09:20 | 2016-08-05 11:40 → 2016-08-05 09:20 |  |  |  |
| 35 | **embalaje** | 2016-08-05 09:35 → 2016-08-05 09:20 | 2016-08-05 16:00 → 2016-08-05 13:40 | 0.71d → 0.45d |  |  |
| 36 | fabricación pallet | 2016-08-05 09:35 → 2016-08-05 09:20 | 2016-08-05 10:35 → 2016-08-05 10:20 |  | 0.51d → 0.25d |  |
| 37 | pintar Convertidor | 2016-08-05 11:40 → 2016-08-05 09:20 | 2016-08-05 13:25 → 2016-08-05 10:20 |  |  |  |
| 38 | secado de pintura | 2016-08-05 13:25 → 2016-08-05 10:20 | 2016-08-05 15:25 → 2016-08-05 12:20 |  |  |  |
| 39 | montar en pallet | 2016-08-05 15:25 → 2016-08-05 12:20 | 2016-08-05 15:35 → 2016-08-05 12:30 |  |  |  |
| 40 | revisar tapones y tapas para despacho | 2016-08-05 15:35 → 2016-08-05 13:15 | 2016-08-05 15:45 → 2016-08-05 13:25 |  |  |  |
| 41 | instalar film de proteccion | 2016-08-05 15:45 → 2016-08-05 13:25 | 2016-08-05 16:00 → 2016-08-05 13:40 |  |  |  |
| 42 | fin embalaje | 2016-08-05 16:00 → 2016-08-05 13:40 | 2016-08-05 16:00 → 2016-08-05 13:40 |  |  |  |
