# Evaluacion y Armado R18000

How a schedule from MS Project changed from version to version. A marks actual dates.

## Version 1 (saved 2016-07-27)

| ID | WBS | Task | Duration | Start | Finish | Predecessors | Total float |
| --- | --- | --- | --- | --- | --- | --- | --- |
| 1 | 1 | **Evaluacion** | 2.97d | 2016-07-27 07:45 | 2016-07-29 15:15 |  | 0d |
| 2 |  | Limpieza exterior | 1h | 2016-07-27 07:45 | 2016-07-27 08:45 |  | 0d |
| 3 |  | Drenaje Aceite | 0.75h | 2016-07-27 08:45 | 2016-07-27 09:30 | 2 | 0d |
| 4 |  | Desarme | 8h | 2016-07-27 09:30 | 2016-07-28 09:00 | 3 | 0d |
| 5 |  | limpieza partes | 5h | 2016-07-28 09:00 | 2016-07-28 14:45 | 4 | 0d |
| 6 |  | Evaluacion de partes | 4h | 2016-07-28 14:45 | 2016-07-29 09:30 | 5 | 0d |
| 7 |  | Informe Tecnico | 4h | 2016-07-29 09:30 | 2016-07-29 14:15 | 6 | 0d |
| 8 |  | almacenaje piezas | 1h | 2016-07-29 14:15 | 2016-07-29 15:15 | 7 | 0d |
| 9 |  | fin evaluacion | 0d | 2016-07-29 15:15 | 2016-07-29 15:15 | 8 | 0d |
| 10 | 2 | **Armado** | 5.72d | 2016-07-29 15:15 | 2016-08-08 09:15 |  | 0d |
| 11 |  | preparacion partes | 2h | 2016-07-29 15:15 | 2016-08-01 08:00 | 9 | 0d |
| 12 |  | revision repuestos | 1h | 2016-08-01 08:00 | 2016-08-01 09:00 | 11 | 0d |
| 13 |  | armado | 22h | 2016-08-01 09:00 | 2016-08-03 14:45 | 12 | 0d |
| 14 |  | fin armado | 0d | 2016-08-03 14:45 | 2016-08-03 14:45 | 13 | 0d |
| 15 | 2.5 | **prueba** | 1.72d | 2016-08-03 14:45 | 2016-08-05 10:45 |  | 0d |
| 16 |  | montaje en banco | 1h | 2016-08-03 14:45 | 2016-08-03 15:45 | 14 | 0d |
| 17 |  | conexiónes hidraulicas | 0.5h | 2016-08-03 15:45 | 2016-08-03 16:15 | 16 | 0d |
| 18 |  | conexion de sensores | 0.5h | 2016-08-03 16:15 | 2016-08-03 16:45 | 17 | 0d |
| 19 |  | llenado de aceite | 1h | 2016-08-03 16:45 | 2016-08-04 08:30 | 18 | 0d |
| 20 |  | Prueba Funcionamiento | 4h | 2016-08-04 08:30 | 2016-08-04 12:30 | 19 | 0d |
| 21 |  | desconexion lineas | 0.5d | 2016-08-04 13:15 | 2016-08-05 08:00 | 20 | 0d |
| 22 |  | Drenaje Aceite | 0.75h | 2016-08-05 08:00 | 2016-08-05 08:45 | 21 | 0d |
| 23 |  | desmontar de banco | 1h | 2016-08-05 08:45 | 2016-08-05 09:45 | 22 | 0d |
| 24 |  | informe de prueba | 1h | 2016-08-05 09:45 | 2016-08-05 10:45 | 23 | 0d |
| 25 |  | fin prueba | 0d | 2016-08-05 10:45 | 2016-08-05 10:45 | 24 | 0d |
| 26 | 2.6 | **embalaje** | 1.72d | 2016-08-04 13:15 | 2016-08-08 09:15 |  | 0d |
| 27 |  | fabricación pallet | 2h | 2016-08-04 13:15 | 2016-08-04 15:15 | 20 | 1.34d |
| 28 |  | pintar transmision | 2h | 2016-08-05 10:45 | 2016-08-05 13:30 | 25 | 0d |
| 29 |  | secado de pintura | 4h | 2016-08-05 13:30 | 2016-08-08 08:15 | 28 | 0d |
| 30 |  | montar en pallet | 10min | 2016-08-08 08:15 | 2016-08-08 08:25 | 29, 27 | 0d |
| 31 |  | revisar tapones y tapas para despacho | 20min | 2016-08-08 08:25 | 2016-08-08 08:45 | 30 | 0d |
| 32 |  | instalar film de proteccion | 30min | 2016-08-08 08:45 | 2016-08-08 09:15 | 31 | 0d |
| 33 |  | fin embalaje | 0d | 2016-08-08 09:15 | 2016-08-08 09:15 | 32 | 0d |

## Version 2 (saved 2016-07-28)

Note of the change: Actualizacion reparacion R18000

Last finish stays 2016-08-08.

Added:

| ID | Task | Duration | Start | Finish | Predecessors |
| --- | --- | --- | --- | --- | --- |
| 10 | Aceptacion de trabajo | 0d | 2016-08-01 09:00 | 2016-08-01 09:00 | 9 |

Removed: 14 fin armado

Changed:

| ID | Task | Start | Finish | Duration | Predecessors |
| --- | --- | --- | --- | --- | --- |
| 2 | **Evaluacion** | 2016-07-27 07:45 → 2016-07-27 08:45 | 2016-07-29 15:15 → 2016-08-01 08:00 (+3d) | 2.97d → 3.09d |  |
| 5 | limpieza partes |  | 2016-07-28 14:45 → 2016-07-29 08:30 (+1d) | 5h → 8h |  |
| 6 | Evaluacion de partes | 2016-07-28 14:45 → 2016-07-29 08:30 (+1d) | 2016-07-29 09:30 → 2016-07-29 12:30 |  |  |
| 7 | Informe Tecnico | 2016-07-29 09:30 → 2016-07-29 13:15 | 2016-07-29 14:15 → 2016-08-01 08:00 (+3d) |  |  |
| 8 | fin evaluacion | 2016-07-29 15:15 → 2016-08-01 08:00 (+3d) | 2016-07-29 15:15 → 2016-08-01 08:00 (+3d) |  | 9 → 7 |
| 9 | almacenaje piezas | 2016-07-29 14:15 → 2016-08-01 08:00 (+3d) | 2016-07-29 15:15 → 2016-08-01 09:00 (+3d) |  | 7 → 8 |
| 11 | preparacion partes | 2016-07-29 15:15 → 2016-08-01 09:00 (+3d) | 2016-08-01 08:00 → 2016-08-01 11:00 |  | 8 → 10 |
| 12 | revision repuestos | 2016-08-01 08:00 → 2016-08-01 11:00 | 2016-08-01 09:00 → 2016-08-01 12:00 |  |  |
| 13 | **Armado** | 2016-07-29 15:15 → 2016-08-01 12:00 (+3d) | 2016-08-08 09:15 → 2016-08-08 08:15 | 5.72d → 4.84d |  |
| 14 | armado | 2016-08-01 09:00 → 2016-08-01 12:00 | 2016-08-03 14:45 → 2016-08-03 13:45 | 22h → 18h |  |
| 15 | **prueba** | 2016-08-03 14:45 → 2016-08-03 13:45 | 2016-08-05 10:45 → 2016-08-05 09:45 |  |  |
| 16 | montaje en banco | 2016-08-03 14:45 → 2016-08-03 13:45 | 2016-08-03 15:45 → 2016-08-03 14:45 |  | fin armado → 14 |
| 17 | conexiónes hidraulicas | 2016-08-03 15:45 → 2016-08-03 14:45 | 2016-08-03 16:15 → 2016-08-03 15:15 |  |  |
| 18 | conexion de sensores | 2016-08-03 16:15 → 2016-08-03 15:15 | 2016-08-03 16:45 → 2016-08-03 15:45 |  |  |
| 19 | llenado de aceite | 2016-08-03 16:45 → 2016-08-03 15:45 | 2016-08-04 08:30 → 2016-08-03 16:45 (-1d) |  |  |
| 20 | Prueba Funcionamiento | 2016-08-04 08:30 → 2016-08-03 16:45 (-1d) | 2016-08-04 12:30 → 2016-08-04 11:30 |  |  |
| 21 | desconexion lineas | 2016-08-04 13:15 → 2016-08-04 11:30 | 2016-08-05 08:00 → 2016-08-04 16:15 (-1d) |  |  |
| 22 | Drenaje Aceite | 2016-08-05 08:00 → 2016-08-04 16:15 (-1d) | 2016-08-05 08:45 → 2016-08-04 17:00 (-1d) |  |  |
| 23 | desmontar de banco | 2016-08-05 08:45 → 2016-08-05 07:45 | 2016-08-05 09:45 → 2016-08-05 08:45 |  |  |
| 24 | informe de prueba | 2016-08-05 09:45 → 2016-08-05 08:45 | 2016-08-05 10:45 → 2016-08-05 09:45 |  |  |
| 25 | fin prueba | 2016-08-05 10:45 → 2016-08-05 09:45 | 2016-08-05 10:45 → 2016-08-05 09:45 |  |  |
| 26 | **embalaje** | 2016-08-04 13:15 → 2016-08-04 11:30 | 2016-08-08 09:15 → 2016-08-08 08:15 |  |  |
| 27 | fabricación pallet | 2016-08-04 13:15 → 2016-08-04 11:30 | 2016-08-04 15:15 → 2016-08-04 14:15 |  |  |
| 28 | pintar transmision | 2016-08-05 10:45 → 2016-08-05 09:45 | 2016-08-05 13:30 → 2016-08-05 11:45 |  |  |
| 29 | secado de pintura | 2016-08-05 13:30 → 2016-08-05 11:45 | 2016-08-08 08:15 → 2016-08-05 16:30 (-3d) |  |  |
| 30 | montar en pallet | 2016-08-08 08:15 → 2016-08-05 16:30 (-3d) | 2016-08-08 08:25 → 2016-08-05 16:40 (-3d) |  |  |
| 31 | revisar tapones y tapas para despacho | 2016-08-08 08:25 → 2016-08-05 16:40 (-3d) | 2016-08-08 08:45 → 2016-08-05 17:00 (-3d) |  |  |
| 32 | instalar film de proteccion | 2016-08-08 08:45 → 2016-08-08 07:45 | 2016-08-08 09:15 → 2016-08-08 08:15 |  |  |
| 33 | fin embalaje | 2016-08-08 09:15 → 2016-08-08 08:15 | 2016-08-08 09:15 → 2016-08-08 08:15 |  |  |
